# ODS02_IIWAKAI: CONSTRUCCIÓN DE PLATAFORMAS Y CIMENTACIONES DE AEROGENERADORES DEL PARQUE EÓLICO WINDPESHI.

How a schedule from MS Project changed from version to version. A marks actual dates.

## Version 1 (data date 2026-08-28, saved 2026-08-31, file PDT_ODS02_Informe_Semanal_N7_28-08-2026.mpp)

Note of the change: Initial commit: Visor geográfico de torres Windpeshi

| ID | WBS | Task | Duration | Start | Finish | Predecessors | Complete | Total float |
| --- | --- | --- | --- | --- | --- | --- | --- | --- |
| 1 |  | HITO 1: ACTA DE INICIO | 0d | 2026-07-15 A | 2026-07-15 A |  | 100% |  |
| 2 | 2 | **PRELIMINARES GENERALES** | 45d | 2026-07-15 A | 2026-09-03 |  | 85% | 0d |
| 3 |  | ENTREGA DE DOCUMENTOS HABILITADORES | 0d | 2026-07-15 A | 2026-07-15 A | 1 | 100% |  |
| 4 |  | ENTREGA DE DOCUMENTACIÓN DE EJECUCION DEL PROYECTO | 0d | 2026-07-15 A | 2026-07-15 A | 1 | 100% |  |
| 5 |  | REVISIÓN Y RECEPCIÓN DE INGENIERIA | 45d | 2026-07-15 A | 2026-09-03 |  | 85% | 0d |
| 6 | 3 | **SOCIALIZACIÓN CON COMUNIDADES** | 32.25d | 2026-07-15 A | 2026-08-21 |  |  | 238.75d |
| 7 |  | REUNIONES RIO PATAJATAMA | 0d | 2026-07-15 A | 2026-07-15 A | 3, 4 | 100% |  |
| 8 |  | REUNIONES RIO ROMANA | 0d | 2026-07-15 A | 2026-07-15 A | 3, 4 | 100% |  |
| 9 |  | REUNIONES RIO UTKAP | 0d | 2026-07-15 A | 2026-07-15 A | 3, 4 | 100% |  |
| 10 |  | REUNIONES RIO CALINCHON | 0d | 2026-07-15 A | 2026-07-15 A | 3, 4 | 100% |  |
| 11 |  | REUNIONES RIO CAÑAVERAL | 0d | 2026-07-15 A | 2026-07-15 A | 3, 4 | 100% |  |
| 12 |  | REUNIONES RIO KAMUSHIPA | 0d | 2026-07-15 A | 2026-07-15 A | 3, 4 | 100% |  |
| 13 |  | REUNIONES RIO FLOR DE LA FRONTERA | 0d | 2026-07-15 A | 2026-07-15 A | 3, 4 | 100% |  |
| 14 |  | REUNIONES RIO JAIKA KALINCHON | 0d | 2026-07-15 A | 2026-07-15 A | 3, 4 | 100% |  |
| 15 |  | REUNIONES RIO MASHUMANA | 0d | 2026-07-15 A | 2026-07-15 A | 3, 4 | 100% |  |
| 16 |  | REUNIONES RIO MASHUMANA WANE | 0d | 2026-07-15 A | 2026-07-15 A | 3, 4 | 100% |  |
| 17 |  | REUNIONES RIO MATAJUNAY | 0d | 2026-07-15 | 2026-07-15 | 3, 4 |  | 271d |
| 18 |  | REUNIONES RIO MANNAJUYAY | 0d | 2026-07-15 A | 2026-07-15 A | 3, 4 | 100% |  |
| 19 |  | REUNIONES RIO WINPESHI | 0d | 2026-08-21 A | 2026-08-21 A | 16FS+30d | 100% |  |
| 20 |  | REUNIONES RIO JAMUCHERRU | 0d | 2026-08-18 | 2026-08-18 | 16FS+30d |  | 241d |
| 21 |  | PUBLICACIÓN DE VACANTES/CONTRATACIÓN DE PERSONAL | 20d | 2026-07-15 A | 2026-08-05 A | 4 | 100% |  |
| 22 | 5 | **SUMINISTRO DE MATERIALES** | 38d | 2026-08-06 A | 2026-09-18 |  | 33% | 127d |
| 23 |  | SUMINISTRO DE MATERIALES CIVILES: ANCHOR CAGE (CLIENTE) | 28d | 2026-08-06 A | 2026-09-08 | 5SS+21d | 50% | 137d |
| 24 |  | SUMINISTRO DE MATERIALES CIVILES: ACEROS DE REFUERSO | 14d | 2026-09-03 | 2026-09-18 | 5SS+45d |  | 121d |
| 25 |  | HITO 2: INICIO DE ACTIVIDADES EN CAMPO | 0d | 2026-08-05 A | 2026-08-05 A | 21 | 100% |  |
| 26 | 7 | **PISCINA INDUSTRIAL** | 32d | 2026-09-03 | 2026-10-07 |  |  | 133d |
| 27 |  | MOVIMIENTO DE TIERRAS Y RECONFORMACION PISCINA INDUSTRIAL | 14d | 2026-09-03 | 2026-09-18 | 21, 5 |  | 133d |
| 28 |  | INSTALACION DE GEOMEMBRANA PISCINA INDUSTRIAL | 10d | 2026-09-18 | 2026-09-29 | 27 |  | 133d |
| 29 |  | CONSTRUCCION DE CERRAMIENTO EN ALAMBRE DE PUA PISCINA INDUSTRIAL | 14d | 2026-09-07 | 2026-09-21 | 27SS+3d, 25 |  | 305d |
| 30 |  | CONSTRUCCION CUNETA PERIMETRAL PISCINA INDUSTRIAL | 8d | 2026-09-29 | 2026-10-07 | 28 |  | 133d |
| 31 | 8 | **ZONAS DE CAMPAMENTOS - FAENAS** | 302d | 2026-08-15 A | 2027-07-17 |  | 4% | 37d |
| 32 |  | CONFORMACIÓN DEL AREA ZONAS DE CAMPAMENTOS - FAENAS | 25.4d | 2026-08-15 A | 2026-09-12 | 21FS+8d, 5 | 50% | 0d |
| 33 |  | INSTALACIÓN DE CONTENEDORES Y EQUIPOS ZONAS DE CAMPAMENTOS - FAENAS | 14d | 2026-08-24 A | 2026-09-08 | 32SS+7d | 10% | 37d |
| 34 |  | INSTALACIÓN DE LAS FACILIDADES ELECTRICAS E HIDRÚALICAS DE LOS CONTENEDORES ZONAS DE CAMPAMENTOS - FAENAS | 8d | 2026-09-08 | 2026-09-16 | 33 |  | 37d |
| 35 |  | ADMINISTRACIÓN Y MANTENIMIENTO DE CAMPAMENTOS | 280d | 2026-09-09 | 2027-07-17 | 34SS+1d, 33 |  | 37d |
| 36 | 9 | **EJECUCIÓN DE ACTIVIDADES DE CIMENTACIONES EXISTENTES** | 119.25d | 2026-07-25 | 2026-12-04 |  |  | 35.12d |
| 37 | 9.1 | **RECALCE 1 WP44** | 55d | 2026-09-03 | 2026-11-03 |  |  | 0d |
| 38 |  | LOCALIZACIÓN DEL ACERO WP44 | 2d | 2026-09-03 | 2026-09-05 | 103SS+7d, 7, 10, 25, 5 |  | 0d |
| 39 |  | PERFORACION, ESCARIFICADO Y LIMPIEZA DEL RECUBRIMIENTO WP44 | 5d | 2026-09-05 | 2026-09-10 | 38 |  | 128d |
| 40 |  | CORTE Y FIGURADO DE ACERO WP44 | 4d | 2026-09-18 | 2026-09-22 | 39, 24 |  | 121d |
| 41 |  | APLICACIÓN DE EPOXICO Y FIJACIÓN DEL ACERO WP44 | 4d | 2026-10-16 | 2026-10-21 | 40, 109 |  | 121d |
| 42 |  | ENCONFRADO WP44 | 1d | 2026-10-21 | 2026-10-22 | 41 |  | 121d |
| 43 |  | VACIADO DE CONCRETO (APLICACIÓN PUENTE DE ADHERENCIA) WP44 | 1d | 2026-10-22 | 2026-10-23 | 42, 112, 30 |  | 121d |
| 44 |  | ADECUACIONES E INSTALACIONES ELECTRICAS REQUERIDAS WP44 | 3d | 2026-10-23 | 2026-10-26 | 43 |  | 125d |
| 45 |  | INSTALACION DE GROUT Y MORTERO AUTOCOMPACTANTE DE ALTA RESISTENCIA WP44 | 2d | 2026-10-30 | 2026-11-03 | 43FS+7d, 44 |  | 121d |
| 46 | 9.2 | **RECALCE 2 WP45** | 61.75d | 2026-08-26 | 2026-10-31 |  |  | 50.75d |
| 47 |  | LOCALIZACIÓN DEL ACERO WP45 | 2d | 2026-08-26 | 2026-08-28 | 120SS+2d, 7, 10 |  | 50.75d |
| 48 |  | PERFORACION, ESCARIFICADO Y LIMPIEZA DEL RECUBRIMIENTO WP45 | 5d | 2026-08-28 | 2026-09-02 | 47 |  | 50.75d |
| 49 |  | CORTE Y FIGURADO DE ACERO WP45 | 4d | 2026-09-02 | 2026-09-07 | 48 |  | 50.75d |
| 50 |  | APLICACIÓN DE EPOXICO Y FIJACIÓN DEL ACERO WP45 | 4d | 2026-10-08 | 2026-10-14 | 49, 126 |  | 137.75d |
| 51 |  | ENCONFRADO WP45 | 1d | 2026-10-14 | 2026-10-15 | 50 |  | 137.75d |
| 52 |  | VACIADO DE CONCRETO (APLICACIÓN PUENTE DE ADHERENCIA) WP45 | 1d | 2026-10-15 | 2026-10-15 | 51, 129 |  | 137.75d |
| 53 |  | ADECUACIONES E INSTALACIONES ELECTRICAS REQUERIDAS WP45 | 3d | 2026-10-26 | 2026-10-29 | 52, 44 |  | 128d |
| 54 |  | INSTALACION DE GROUT Y MORTERO AUTOCOMPACTANTE DE ALTA RESISTENCIA WP45 | 2d | 2026-10-29 | 2026-10-31 | 52FS+7d, 53 |  | 132d |
| 55 | 9.3 | **RECALCE 3 WP46** | 57.75d | 2026-09-02 | 2026-11-04 |  |  | 59.75d |
| 56 |  | LOCALIZACIÓN DEL ACERO WP46 | 2d | 2026-09-02 | 2026-09-04 | 137SS+2d, 7, 10 |  | 59.75d |
| 57 |  | ESCARIFICADO Y LIMPIEZA DEL RECUBRIMIENTO WP46 | 5d | 2026-09-04 | 2026-09-10 | 56 |  | 59.75d |
| 58 |  | CORTE Y FIGURADO DE ACERO WP46 | 4d | 2026-09-10 | 2026-09-14 | 57 |  | 59.75d |
| 59 |  | APLICACIÓN DE EPOXICO Y FIJACIÓN DEL ACERO WP46 | 4d | 2026-10-16 | 2026-10-21 | 58, 143 |  | 132.75d |
| 60 |  | ENCONFRADO WP46 | 1d | 2026-10-21 | 2026-10-22 | 59 |  | 132.75d |
| 61 |  | VACIADO DE CONCRETO (APLICACIÓN PUENTE DE ADHERENCIA) WP46 | 1d | 2026-10-22 | 2026-10-23 | 60, 146 |  | 132.75d |
| 62 |  | ADECUACIONES E INSTALACIONES ELECTRICAS REQUERIDAS WP46 | 3d | 2026-10-29 | 2026-11-03 | 61, 53 |  | 128d |
| 63 |  | INSTALACION DE GROUT Y MORTERO AUTOCOMPACTANTE DE ALTA RESISTENCIA WP46 | 2d | 2026-11-03 | 2026-11-04 | 61FS+7d, 62 |  | 131d |
| 64 | 9.4 | **RECALCE 4 WP47** | 56d | 2026-09-10 | 2026-11-10 |  |  | 125.75d |
| 65 |  | LOCALIZACIÓN DEL ACERO WP47 | 2d | 2026-09-10 | 2026-09-11 | 154SS+2d, 8 |  | 133.75d |
| 66 |  | ESCARIFICADO Y LIMPIEZA DEL RECUBRIMIENTO WP47 | 5d | 2026-09-12 | 2026-09-17 | 65 |  | 133.75d |
| 67 |  | CORTE Y FIGURADO DE ACERO WP47 | 4d | 2026-09-17 | 2026-09-22 | 66 |  | 133.75d |
| 68 |  | APLICACIÓN DE EPOXICO Y FIJACIÓN DEL ACERO WP47 | 4d | 2026-10-24 | 2026-10-28 | 67, 160 |  | 125.75d |
| 69 |  | ENCONFRADO WP47 | 1d | 2026-10-28 | 2026-10-29 | 68 |  | 125.75d |
| 70 |  | VACIADO DE CONCRETO (APLICACIÓN PUENTE DE ADHERENCIA) WP47 | 1d | 2026-10-29 | 2026-10-30 | 69, 163 |  | 125.75d |

| ID | WBS | Task | Duration | Start | Finish | Predecessors | Complete | Total float |
| --- | --- | --- | --- | --- | --- | --- | --- | --- |
| 71 |  | ADECUACIONES E INSTALACIONES ELECTRICAS REQUERIDAS WP47 | 3d | 2026-11-03 | 2026-11-05 | 70, 62 |  | 128d |
| 72 |  | INSTALACION DE GROUT Y MORTERO AUTOCOMPACTANTE DE ALTA RESISTENCIA WP47 | 2d | 2026-11-07 | 2026-11-10 | 70FS+7d, 71 |  | 125.75d |
| 73 | 9.5 | **RECALCE 5 WP48** | 105d | 2026-07-25 | 2026-11-19 |  |  | 98.12d |
| 74 |  | LOCALIZACIÓN DEL ACERO WP48 | 2d | 2026-07-25 | 2026-07-28 | 171SS+2d, 7, 10 |  | 98.12d |
| 75 |  | ESCARIFICADO Y LIMPIEZA DEL RECUBRIMIENTO WP48 | 5d | 2026-07-28 | 2026-08-03 | 74 |  | 98.12d |
| 76 |  | CORTE Y FIGURADO DE ACERO WP48 | 4d | 2026-08-03 | 2026-08-06 | 75 |  | 98.12d |
| 77 |  | APLICACIÓN DE EPOXICO Y FIJACIÓN DEL ACERO WP48 | 4d | 2026-11-03 | 2026-11-06 | 76, 177 |  | 127.12d |
| 78 |  | ENCONFRADO WP48 | 1d | 2026-11-06 | 2026-11-07 | 77 |  | 127.12d |
| 79 |  | VACIADO DE CONCRETO (APLICACIÓN PUENTE DE ADHERENCIA) WP48 | 1d | 2026-11-07 | 2026-11-09 | 78, 180 |  | 127.12d |
| 80 |  | ADECUACIONES E INSTALACIONES ELECTRICAS REQUERIDAS WP48 | 3d | 2026-11-09 | 2026-11-12 | 79, 71 |  | 127.12d |
| 81 |  | INSTALACION DE GROUT Y MORTERO AUTOCOMPACTANTE DE ALTA RESISTENCIA WP48 | 2d | 2026-11-17 | 2026-11-19 | 79FS+7d, 80 |  | 128.12d |
| 82 | 9.6 | **RECALCE 6 WP49** | 112.38d | 2026-07-25 | 2026-11-27 |  |  | 116.12d |
| 83 |  | LOCALIZACIÓN DEL HACERO WP49 | 2d | 2026-07-25 | 2026-07-28 | 188SS+2d, 7, 10 |  | 116.12d |
| 84 |  | ESCARIFICADO Y LIMPIEZA DEL RECUBRIMIENTO WP49 | 5d | 2026-07-28 | 2026-08-03 | 83 |  | 116.12d |
| 85 |  | CORTE Y FIGURADO DE ACERO WP49 | 4d | 2026-08-03 | 2026-08-06 | 84 |  | 116.12d |
| 86 |  | APLICACIÓN DE EPOXICO Y FIJACIÓN DEL ACERO WP49 | 4d | 2026-11-10 | 2026-11-14 | 85, 194 |  | 122.75d |
| 87 |  | ENCONFRADO WP49 | 1d | 2026-11-14 | 2026-11-17 | 86 |  | 122.75d |
| 88 |  | VACIADO DE CONCRETO (APLICACIÓN PUENTE DE ADHERENCIA) WP49 | 1d | 2026-11-17 | 2026-11-18 | 87, 197 |  | 122.75d |
| 89 |  | ADECUACIONES E INSTALACIONES ELECTRICAS REQUERIDAS WP49 | 3d | 2026-11-18 | 2026-11-20 | 88, 80 |  | 122.75d |
| 90 |  | INSTALACION DE GROUT Y MORTERO AUTOCOMPACTANTE DE ALTA RESISTENCIA WP49 | 2d | 2026-11-25 | 2026-11-27 | 88FS+7d, 89 |  | 122.75d |
| 91 | 9.7 | **RECALCE 7 WP52** | 116d | 2026-07-29 | 2026-12-04 |  |  | 96.88d |
| 92 |  | LOCALIZACIÓN DEL ACERO WP52 | 2d | 2026-07-29 | 2026-07-31 | 205SS+2d, 7, 10 |  | 96.88d |
| 93 |  | ESCARIFICADO Y LIMPIEZA DEL RECUBRIMIENTO WP52 | 5d | 2026-07-31 | 2026-08-06 | 92 |  | 96.88d |
| 94 |  | CORTE Y FIGURADO DE ACERO WP52 | 4d | 2026-08-06 | 2026-08-11 | 93 |  | 96.88d |
| 95 |  | APLICACIÓN DE EPOXICO Y FIJACIÓN DEL ACERO WP52 | 4d | 2026-11-18 | 2026-11-23 | 94, 211 |  | 114.88d |
| 96 |  | ENCONFRADO WP52 | 1d | 2026-11-23 | 2026-11-24 | 95 |  | 114.88d |
| 97 |  | VACIADO DE CONCRETO (APLICACIÓN PUENTE DE ADHERENCIA) WP52 | 1d | 2026-11-24 | 2026-11-25 | 96, 34 |  | 114.88d |
| 98 |  | ADECUACIONES E INSTALACIONES ELECTRICAS REQUERIDAS WP52 | 3d | 2026-11-25 | 2026-11-27 | 97, 89 |  | 118.88d |
| 99 |  | INSTALACION DE GROUT Y MORTERO AUTOCOMPACTANTE DE ALTA RESISTENCIA WP52 | 2d | 2026-12-02 | 2026-12-04 | 97FS+7d, 98 |  | 114.88d |
| 100 |  | HITO 3: FIN DE ACTIVIDADES DE RECALCE | 0d | 2026-12-04 | 2026-12-04 | 99, 97 |  | 114.88d |
| 101 | 10 | **EJECUCIÓN DE ACTIVIDADES DE CIMENTACIONES NUEVAS** | 346.12d | 2026-07-17 A | 2027-08-07 |  | 7% | 18.62d |
| 102 | 10.1 | **CIMENTACION WP50** | 111.75d | 2026-07-17 A | 2026-11-18 |  | 5% | 253d |
| 103 |  | LOCALIZACION, REPLANTEO Y DESBROCE DE AREA DE ACOPIO DE TORRE Y DE PALAS WP50 | 25d | 2026-07-17 A | 2026-08-14 | 21, 7, 25, 5SS | 20% | 1.4d |
| 104 |  | EXCAVACIÓN DE CIMENTACION WP50 | 7d | 2026-08-14 | 2026-08-22 | 103 |  | 37.75d |
| 105 |  | BANCO DE DUCTO WP50 | 3d | 2026-08-22 | 2026-08-26 | 104 |  | 142.75d |
| 106 |  | COMPACTACION DE SELLO DE BASE WP50 | 4d | 2026-08-26 | 2026-08-31 | 104, 105 |  | 142.75d |
| 107 |  | SOLADO WP50 | 2d | 2026-09-22 | 2026-09-24 | 106, 40 |  | 121d |
| 108 |  | INSTALACIÓN DE PERNOS Y SOFT-SPOT WP50 | 5d | 2026-09-24 | 2026-09-30 | 107, 24, 40, 23 |  | 121d |
| 109 |  | INSTALACIÓN DE ACERO DE REFUERZO WP50 | 15d | 2026-09-30 | 2026-10-16 | 108, 24 |  | 121d |
| 110 |  | ENCOFRADO DE ZAPATA Y DE PEDESTAL WP50 | 3d | 2026-10-16 | 2026-10-20 | 109 |  | 122d |
| 111 |  | HITO: ALISTAMIENTO Y MOVILIZACIÓN DE PLANTA DE CONCRETO PARA WP50 | 0d | 2026-10-16 | 2026-10-16 | 109 |  | 125d |
| 112 |  | FUNDIDA WP50 | 1d | 2026-10-20 | 2026-10-21 | 110, 30, 111 |  | 122d |
| 113 |  | CURADO DEL CONCRETO WP50 | 7d | 2026-10-21 | 2026-10-28 | 112 |  | 122d |
| 114 |  | INSTALACIONES ELECTRICAS Y SISTEMA PUESTA TIERRA WP50 | 3d | 2026-10-28 | 2026-10-31 | 113 |  | 122d |
| 115 |  | INSTALACION DE GROUT Y MORTERO AUTOCOMPACTANTE DE ALTA RESISTENCIA WP50 | 2d | 2026-10-31 | 2026-11-04 | 114 |  | 122d |
| 116 |  | TAPADO AREA DE CIMENTACIÓN Y CONFORMACIÓN DE PLATAFORMA WP50 | 10d | 2026-11-03 | 2026-11-13 | 114, 45, 43 |  | 121d |
| 117 |  | ESTABILIZACIÓN DE TALUDES EN PLATAFORMA Y RECONFORMACION FINAL WP50 | 12d | 2026-11-05 | 2026-11-18 | 115SS+2d, 116SS+2d |  | 121d |
| 118 |  | HITO: FINALIZACION DE ACTIVIDADES EN CIMENTACION WP50 | 0d | 2026-11-18 | 2026-11-18 | 117 |  | 253d |
| 119 | 10.2 | **CIMENTACION WP53** | 78.75d | 2026-08-24 A | 2026-11-18 |  | 2% | 253d |
| 120 |  | LOCALIZACION, REPLANTEO Y DESBROCE DE AREA DE ACOPIO DE TORRE Y DE PALAS WP53 | 7d | 2026-08-24 A | 2026-09-01 | 103FS+8d, 7 | 20% | 0d |
| 121 |  | EXCAVACIÓN DE CIMENTACION WP53 | 7d | 2026-09-01 | 2026-09-08 | 120, 104 |  | 29.75d |
| 122 |  | BANCO DE DUCTO WP53 | 3d | 2026-09-08 | 2026-09-11 | 121 |  | 42.75d |
| 123 |  | COMPACTACION DE SELLO DE BASE WP53 | 4d | 2026-09-11 | 2026-09-15 | 122 |  | 42.75d |
| 124 |  | WP53 WP53 | 2d | 2026-09-15 | 2026-09-17 | 123, 49 |  | 42.75d |
| 125 |  | INSTALACIÓN DE PERNOS Y SOFT-SPOT WP53 | 5d | 2026-09-17 | 2026-09-23 | 124 |  | 42.75d |
| 126 |  | INSTALACIÓN DE ACERO DE REFUERZO WP53 | 15d | 2026-09-23 | 2026-10-08 | 125 |  | 42.75d |
| 127 |  | ENCOFRADO DE ZAPATA Y DE PEDESTAL WP53 | 3d | 2026-10-08 | 2026-10-13 | 126 |  | 138.75d |
| 128 |  | HITO: ALISTAMIENTO Y MOVILIZACIÓN DE PLANTA DE CONCRETO PARA WP53 | 0d | 2026-10-08 | 2026-10-08 | 126 |  | 141.75d |
| 129 |  | FUNDIDA WP53 | 1d | 2026-10-13 | 2026-10-14 | 127, 128 |  | 138.75d |
| 130 |  | CURADO DEL CONCRETO WP53 | 7d | 2026-10-14 | 2026-10-21 | 129 |  | 138.75d |
| 131 |  | INSTALACIONES ELECTRICAS Y SISTEMA PUESTA TIERRA WP53 | 3d | 2026-10-21 | 2026-10-24 | 130 |  | 138.75d |
| 132 |  | INSTALACION DE GROUT Y MORTERO AUTOCOMPACTANTE DE ALTA RESISTENCIA WP53 | 2d | 2026-10-24 | 2026-10-27 | 131 |  | 138.75d |
| 133 |  | TAPADO AREA DE CIMENTACIÓN Y CONFORMACIÓN DE PLATAFORMA WP53 | 10d | 2026-10-31 | 2026-11-12 | 131, 54, 52 |  | 132d |
| 134 |  | ESTABILIZACIÓN DE TALUDES EN PLATAFORMA Y RECONFORMACION FINAL WP53 | 12d | 2026-11-04 | 2026-11-17 | 132SS+2d, 133SS+2d |  | 132d |
| 135 |  | HITO: FINALIZACION DE ACTIVIDADES EN CIMENTACION WP53 | 0d | 2026-11-18 | 2026-11-18 | 118, 134 |  | 253d |
| 136 | 10.3 | **CIMENTACION WP15** | 73.75d | 2026-09-01 | 2026-11-20 |  |  | 0d |
| 137 |  | LOCALIZACION, REPLANTEO Y DESBROCE DE AREA DE ACOPIO DE TORRE Y DE PALAS WP15 | 7d | 2026-09-01 | 2026-09-08 | 120, 9 |  | 0d |
| 138 |  | EXCAVACIÓN DE CIMENTACION WP15 | 7d | 2026-09-08 | 2026-09-15 | 137, 121 |  | 29.75d |
| 139 |  | BANCO DE DUCTO WP15 | 3d | 2026-09-15 | 2026-09-18 | 138 |  | 51.75d |
| 140 |  | COMPACTACION DE SELLO DE BASE WP15 | 4d | 2026-09-18 | 2026-09-23 | 138, 139 |  | 51.75d |

| ID | WBS | Task | Duration | Start | Finish | Predecessors | Complete | Total float |
| --- | --- | --- | --- | --- | --- | --- | --- | --- |
| 141 |  | SOLADO WP15 | 2d | 2026-09-23 | 2026-09-24 | 140, 58 |  | 51.75d |
| 142 |  | INSTALACIÓN DE PERNOS Y SOFT-SPOT WP15 | 5d | 2026-09-24 | 2026-09-30 | 141, 125 |  | 51.75d |
| 143 |  | INSTALACIÓN DE ACERO DE REFUERZO WP15 | 15d | 2026-09-30 | 2026-10-16 | 142 |  | 51.75d |
| 144 |  | ENCOFRADO DE ZAPATA Y DE PEDESTAL WP15 | 3d | 2026-10-16 | 2026-10-20 | 143 |  | 133.75d |
| 145 |  | HITO: ALISTAMIENTO Y MOVILIZACIÓN DE PLANTA DE CONCRETO PARA WP15 | 0d | 2026-10-16 | 2026-10-16 | 143 |  | 136.75d |
| 146 |  | FUNDIDA WP15 | 1d | 2026-10-20 | 2026-10-21 | 144, 145 |  | 133.75d |
| 147 |  | CURADO DEL CONCRETO WP15 | 7d | 2026-10-21 | 2026-10-28 | 146 |  | 133.75d |
| 148 |  | INSTALACIONES ELECTRICAS Y SISTEMA PUESTA TIERRA WP15 | 3d | 2026-10-28 | 2026-10-31 | 147 |  | 133.75d |
| 149 |  | INSTALACION DE GROUT Y MORTERO AUTOCOMPACTANTE DE ALTA RESISTENCIA WP15 | 2d | 2026-10-31 | 2026-11-04 | 148 |  | 133.75d |
| 150 |  | TAPADO AREA DE CIMENTACIÓN Y CONFORMACIÓN DE PLATAFORMA WP15 | 10d | 2026-11-05 | 2026-11-14 | 148, 63, 61 |  | 131d |
| 151 |  | ESTABILIZACIÓN DE TALUDES EN PLATAFORMA Y RECONFORMACION FINAL WP15 | 12d | 2026-11-06 | 2026-11-20 | 149SS+2d, 150SS+2d |  | 131d |
| 152 |  | HITO: FINALIZACION DE ACTIVIDADES EN CIMENTACION WP15 | 0d | 2026-11-20 | 2026-11-20 | 135, 151 |  | 251d |
| 153 | 10.4 | **CIMENTACION WP14** | 76.75d | 2026-09-08 | 2026-12-01 |  |  | 0d |
| 154 |  | LOCALIZACION, REPLANTEO Y DESBROCE DE AREA DE ACOPIO DE TORRE Y DE PALAS WP14 | 7d | 2026-09-08 | 2026-09-15 | 137 |  | 0d |
| 155 |  | EXCAVACIÓN DE CIMENTACION WP14 | 7d | 2026-09-15 | 2026-09-23 | 154, 104, 138 |  | 29.75d |
| 156 |  | BANCO DE DUCTO WP14 | 3d | 2026-09-23 | 2026-09-25 | 155 |  | 125.75d |
| 157 |  | COMPACTACION DE SELLO DE BASE WP14 | 4d | 2026-09-25 | 2026-09-30 | 156 |  | 125.75d |
| 158 |  | SOLADO WP14 | 2d | 2026-09-30 | 2026-10-02 | 157, 67 |  | 125.75d |
| 159 |  | INSTALACIÓN DE PERNOS Y SOFT-SPOT WP14 | 5d | 2026-10-02 | 2026-10-07 | 158 |  | 125.75d |
| 160 |  | INSTALACIÓN DE ACERO DE REFUERZO WP14 | 15d | 2026-10-07 | 2026-10-24 | 159 |  | 125.75d |
| 161 |  | ENCOFRADO DE ZAPATA Y DE PEDESTAL WP14 | 3d | 2026-10-24 | 2026-10-27 | 160 |  | 126.75d |
| 162 |  | HITO: ALISTAMIENTO Y MOVILIZACIÓN DE PLANTA DE CONCRETO PARA WP14 | 0d | 2026-10-24 | 2026-10-24 | 160 |  | 129.75d |
| 163 |  | FUNDIDA WP14 | 1d | 2026-10-28 | 2026-10-28 | 161, 162 |  | 126.75d |
| 164 |  | CURADO DEL CONCRETO WP14 | 7d | 2026-10-28 | 2026-11-06 | 163 |  | 126.75d |
| 165 |  | INSTALACIONES ELECTRICAS Y SISTEMA PUESTA TIERRA WP14 | 3d | 2026-11-06 | 2026-11-09 | 164 |  | 126.75d |
| 166 |  | INSTALACION DE GROUT Y MORTERO AUTOCOMPACTANTE DE ALTA RESISTENCIA WP14 | 2d | 2026-11-09 | 2026-11-11 | 165 |  | 126.75d |
| 167 |  | TAPADO AREA DE CIMENTACIÓN Y CONFORMACIÓN DE PLATAFORMA WP14 | 10d | 2026-11-13 | 2026-11-25 | 165, 72, 115, 116, 70 |  | 123d |
| 168 |  | ESTABILIZACIÓN DE TALUDES EN PLATAFORMA Y RECONFORMACION FINAL WP14 | 12d | 2026-11-18 | 2026-12-01 | 166SS+2d, 117, 167SS+2d |  | 121d |
| 169 |  | HITO: FINALIZACION DE ACTIVIDADES EN CIMENTACION WP14 | 0d | 2026-12-01 | 2026-12-01 | 152, 168 |  | 241d |
| 170 | 10.5 | **CIMENTACION WP16** | 121d | 2026-07-24 A | 2026-12-04 |  | 9% | 238.12d |
| 171 |  | LOCALIZACION, REPLANTEO Y DESBROCE DE AREA DE ACOPIO DE TORRE Y DE PALAS WP16 | 56d | 2026-07-24 A | 2026-09-23 | 154, 7 | 20% | 0d |
| 172 |  | EXCAVACIÓN DE CIMENTACION WP16 | 7d | 2026-09-23 | 2026-09-30 | 171, 121, 155 |  | 29.12d |
| 173 |  | BANCO DE DUCTO WP16 | 3d | 2026-10-01 | 2026-10-03 | 172 |  | 41.12d |
| 174 |  | COMPACTACION DE SELLO DE BASE WP16 | 4d | 2026-10-03 | 2026-10-08 | 172, 173 |  | 41.12d |
| 175 |  | SOLADO WP16 | 2d | 2026-10-08 | 2026-10-10 | 174, 76 |  | 41.12d |
| 176 |  | INSTALACIÓN DE PERNOS Y SOFT-SPOT WP16 | 5d | 2026-10-10 | 2026-10-16 | 175, 126 |  | 41.12d |
| 177 |  | INSTALACIÓN DE ACERO DE REFUERZO WP16 | 15d | 2026-10-16 | 2026-11-03 | 176 |  | 41.12d |
| 178 |  | ENCOFRADO DE ZAPATA Y DE PEDESTAL WP16 | 3d | 2026-11-03 | 2026-11-05 | 177 |  | 128.12d |
| 179 |  | HITO: ALISTAMIENTO Y MOVILIZACIÓN DE PLANTA DE CONCRETO PARA WP16 | 0d | 2026-11-03 | 2026-11-03 | 177 |  | 131.12d |
| 180 |  | FUNDIDA WP16 | 1d | 2026-11-05 | 2026-11-06 | 178, 179 |  | 128.12d |
| 181 |  | CURADO DEL CONCRETO WP16 | 7d | 2026-11-06 | 2026-11-13 | 180 |  | 129.12d |
| 182 |  | INSTALACIONES ELECTRICAS Y SISTEMA PUESTA TIERRA WP16 | 3d | 2026-11-14 | 2026-11-18 | 181 |  | 129.12d |
| 183 |  | INSTALACION DE GROUT Y MORTERO AUTOCOMPACTANTE DE ALTA RESISTENCIA WP16 | 2d | 2026-11-18 | 2026-11-20 | 182 |  | 129.12d |
| 184 |  | TAPADO AREA DE CIMENTACIÓN Y CONFORMACIÓN DE PLATAFORMA WP16 | 10d | 2026-11-19 | 2026-11-30 | 182, 132, 81, 133, 79 |  | 128.12d |
| 185 |  | ESTABILIZACIÓN DE TALUDES EN PLATAFORMA Y RECONFORMACION FINAL WP16 | 12d | 2026-11-21 | 2026-12-04 | 183SS+2d, 134, 184SS+2d |  | 128.12d |
| 186 |  | HITO: FINALIZACION DE ACTIVIDADES EN CIMENTACION WP16 | 0d | 2026-12-04 | 2026-12-04 | 169, 185 |  | 238.12d |
| 187 | 10.6 | **CIMENTACION WP18** | 128.38d | 2026-07-24 A | 2026-12-12 |  | 9% | 230.75d |
| 188 |  | LOCALIZACION, REPLANTEO Y DESBROCE DE AREA DE ACOPIO DE TORRE Y DE PALAS WP18 | 63d | 2026-07-24 A | 2026-09-30 | 171, 7 | 20% | 0d |
| 189 |  | EXCAVACIÓN DE CIMENTACION WP18 | 7d | 2026-10-01 | 2026-10-08 | 188, 138, 172 |  | 29.12d |
| 190 |  | BANCO DE DUCTO WP18 | 3d | 2026-10-08 | 2026-10-10 | 189 |  | 52.12d |
| 191 |  | COMPACTACION DE SELLO DE BASE WP18 | 4d | 2026-10-13 | 2026-10-16 | 189, 190 |  | 52.12d |
| 192 |  | SOLADO WP18 | 2d | 2026-10-16 | 2026-10-19 | 191, 143, 85 |  | 51.75d |
| 193 |  | INSTALACIÓN DE PERNOS Y SOFT-SPOT WP18 | 5d | 2026-10-19 | 2026-10-24 | 192 |  | 51.75d |
| 194 |  | INSTALACIÓN DE ACERO DE REFUERZO WP18 | 15d | 2026-10-24 | 2026-11-10 | 193 |  | 51.75d |
| 195 |  | ENCOFRADO DE ZAPATA Y DE PEDESTAL WP18 | 3d | 2026-11-10 | 2026-11-13 | 194 |  | 123.75d |
| 196 |  | HITO: ALISTAMIENTO Y MOVILIZACIÓN DE PLANTA DE CONCRETO PARA WP18 | 0d | 2026-11-10 | 2026-11-10 | 194 |  | 126.75d |
| 197 |  | FUNDIDA WP18 | 1d | 2026-11-13 | 2026-11-14 | 195, 196 |  | 123.75d |
| 198 |  | CURADO DEL CONCRETO WP18 | 7d | 2026-11-14 | 2026-11-23 | 197 |  | 123.75d |
| 199 |  | INSTALACIONES ELECTRICAS Y SISTEMA PUESTA TIERRA WP18 | 3d | 2026-11-23 | 2026-11-26 | 198 |  | 123.75d |
| 200 |  | INSTALACION DE GROUT Y MORTERO AUTOCOMPACTANTE DE ALTA RESISTENCIA WP18 | 2d | 2026-11-26 | 2026-11-28 | 199 |  | 123.75d |
| 201 |  | TAPADO AREA DE CIMENTACIÓN Y CONFORMACIÓN DE PLATAFORMA WP18 | 10d | 2026-11-27 | 2026-12-09 | 199, 149, 90, 150, 88 |  | 122.75d |
| 202 |  | ESTABILIZACIÓN DE TALUDES EN PLATAFORMA Y RECONFORMACION FINAL WP18 | 12d | 2026-11-30 | 2026-12-12 | 200SS+2d, 151, 201SS+2d |  | 122.75d |
| 203 |  | HITO: FINALIZACION DE ACTIVIDADES EN CIMENTACION WP18 | 0d | 2026-12-12 | 2026-12-12 | 202, 186 |  | 230.75d |
| 204 | 10.7 | **CIMENTACION WP9** | 135d | 2026-07-28 A | 2026-12-23 |  | 10% | 220.88d |
| 205 |  | LOCALIZACION, REPLANTEO Y DESBROCE DE AREA DE ACOPIO DE TORRE Y DE PALAS WP9 | 67d | 2026-07-28 A | 2026-10-08 | 188, 11 | 20% | 0d |
| 206 |  | EXCAVACIÓN DE CIMENTACION WP9 | 7d | 2026-10-08 | 2026-10-16 | 205, 155, 189 |  | 28.88d |
| 207 |  | BANCO DE DUCTO WP9 | 3d | 2026-10-16 | 2026-10-20 | 206 |  | 28.88d |
| 208 |  | COMPACTACION DE SELLO DE BASE WP9 | 4d | 2026-10-20 | 2026-10-24 | 207 |  | 28.88d |
| 209 |  | SOLADO WP9 | 2d | 2026-10-24 | 2026-10-26 | 208, 94 |  | 28.88d |
| 210 |  | INSTALACIÓN DE PERNOS Y SOFT-SPOT WP9 | 5d | 2026-10-27 | 2026-10-31 | 209 |  | 28.88d |

| ID | WBS | Task | Duration | Start | Finish | Predecessors | Complete | Total float |
| --- | --- | --- | --- | --- | --- | --- | --- | --- |
| 211 |  | INSTALACIÓN DE ACERO DE REFUERZO WP9 | 15d | 2026-10-31 | 2026-11-18 | 210 |  | 28.88d |
| 212 |  | ENCOFRADO DE ZAPATA Y DE PEDESTAL WP9 | 3d | 2026-11-18 | 2026-11-21 | 211 |  | 118.88d |
| 213 |  | HITO: ALISTAMIENTO Y MOVILIZACIÓN DE PLANTA DE CONCRETO PARA WP9 | 0d | 2026-11-18 | 2026-11-18 | 211 |  | 121.88d |
| 214 |  | FUNDIDA WP9 | 1d | 2026-11-21 | 2026-11-23 | 212, 213 |  | 118.88d |
| 215 |  | CURADO DEL CONCRETO WP9 | 7d | 2026-11-23 | 2026-11-30 | 214 |  | 118.88d |
| 216 |  | INSTALACIONES ELECTRICAS Y SISTEMA PUESTA TIERRA WP9 | 3d | 2026-12-04 | 2026-12-09 | 215, 100 |  | 114.88d |
| 217 |  | INSTALACION DE GROUT Y MORTERO AUTOCOMPACTANTE DE ALTA RESISTENCIA WP9 | 2d | 2026-12-09 | 2026-12-10 | 216 |  | 114.88d |
| 218 |  | TAPADO AREA DE CIMENTACIÓN Y CONFORMACIÓN DE PLATAFORMA WP9 | 10d | 2026-12-09 | 2026-12-19 | 216, 168, 166, 99, 167, 97 |  | 114.88d |
| 219 |  | ESTABILIZACIÓN DE TALUDES EN PLATAFORMA Y RECONFORMACION FINAL WP9 | 12d | 2026-12-11 | 2026-12-23 | 217SS+2d, 168, 218SS+2d |  | 114.88d |
| 220 |  | HITO: FINALIZACION DE ACTIVIDADES EN CIMENTACION WP9 | 0d | 2026-12-23 | 2026-12-23 | 219, 203 |  | 220.88d |
| 221 | 10.8 | **CIMENTACION WP8** | 137.62d | 2026-07-29 A | 2026-12-29 |  | 10% | 217.12d |
| 222 |  | LOCALIZACION, REPLANTEO Y DESBROCE DE AREA DE ACOPIO DE TORRE Y DE PALAS WP8 | 73d | 2026-07-29 A | 2026-10-16 | 205, 11 | 20% | 0d |
| 223 |  | EXCAVACIÓN DE CIMENTACION WP8 | 7d | 2026-10-16 | 2026-10-24 | 222, 172, 206 |  | 29.75d |
| 224 |  | BANCO DE DUCTO WP8 | 3d | 2026-10-24 | 2026-10-27 | 223 |  | 41.75d |
| 225 |  | COMPACTACION DE SELLO DE BASE WP8 | 4d | 2026-10-28 | 2026-10-31 | 223, 224 |  | 41.75d |
| 226 |  | SOLADO WP8 | 2d | 2026-11-03 | 2026-11-04 | 225, 177 |  | 41.12d |
| 227 |  | INSTALACIÓN DE PERNOS Y SOFT-SPOT WP8 | 5d | 2026-11-04 | 2026-11-10 | 226 |  | 41.12d |
| 228 |  | INSTALACIÓN DE ACERO DE REFUERZO WP8 | 15d | 2026-11-10 | 2026-11-26 | 227 |  | 41.12d |
| 229 |  | ENCOFRADO DE ZAPATA Y DE PEDESTAL WP8 | 3d | 2026-11-26 | 2026-11-30 | 228 |  | 121.12d |
| 230 |  | HITO: ALISTAMIENTO Y MOVILIZACIÓN DE PLANTA DE CONCRETO PARA WP8 | 0d | 2026-11-26 | 2026-11-26 | 228 |  | 124.12d |
| 231 |  | FUNDIDA WP8 | 1d | 2026-11-30 | 2026-12-01 | 229, 230 |  | 121.12d |
| 232 |  | CURADO DEL CONCRETO WP8 | 7d | 2026-12-01 | 2026-12-09 | 231 |  | 121.12d |
| 233 |  | INSTALACIONES ELECTRICAS Y SISTEMA PUESTA TIERRA WP8 | 3d | 2026-12-09 | 2026-12-12 | 232 |  | 121.12d |
| 234 |  | INSTALACION DE GROUT Y MORTERO AUTOCOMPACTANTE DE ALTA RESISTENCIA WP8 | 2d | 2026-12-12 | 2026-12-15 | 233 |  | 121.12d |
| 235 |  | TAPADO AREA DE CIMENTACIÓN Y CONFORMACIÓN DE PLATAFORMA WP8 | 10d | 2026-12-12 | 2026-12-23 | 233, 185, 183, 184 |  | 121.12d |
| 236 |  | ESTABILIZACIÓN DE TALUDES EN PLATAFORMA Y RECONFORMACION FINAL WP8 | 12d | 2026-12-15 | 2026-12-29 | 234SS+2d, 185, 235SS+2d |  | 121.12d |
| 237 |  | HITO: FINALIZACION DE ACTIVIDADES EN CIMENTACION WP8 | 0d | 2026-12-29 | 2026-12-29 | 236, 220 |  | 217.12d |
| 238 | 10.9 | **CIMENTACION WP19** | 141.62d | 2026-08-01 A | 2027-01-06 |  | 10% | 209.75d |
| 239 |  | LOCALIZACION, REPLANTEO Y DESBROCE DE AREA DE ACOPIO DE TORRE Y DE PALAS WP19 | 77d | 2026-08-01 A | 2026-10-24 | 222, 12 | 20% | 0d |
| 240 |  | EXCAVACIÓN DE CIMENTACION WP19 | 7d | 2026-10-24 | 2026-10-31 | 239, 189, 223 |  | 29.38d |
| 241 |  | BANCO DE DUCTO WP19 | 3d | 2026-10-31 | 2026-11-05 | 240 |  | 52.38d |
| 242 |  | COMPACTACION DE SELLO DE BASE WP19 | 4d | 2026-11-05 | 2026-11-10 | 240, 241 |  | 52.38d |
| 243 |  | SOLADO WP19 | 2d | 2026-11-10 | 2026-11-12 | 242, 194 |  | 51.75d |
| 244 |  | INSTALACIÓN DE PERNOS Y SOFT-SPOT WP19 | 5d | 2026-11-12 | 2026-11-18 | 243 |  | 51.75d |
| 245 |  | INSTALACIÓN DE ACERO DE REFUERZO WP19 | 15d | 2026-11-19 | 2026-12-04 | 244 |  | 51.75d |
| 246 |  | ENCOFRADO DE ZAPATA Y DE PEDESTAL WP19 | 3d | 2026-12-04 | 2026-12-09 | 245 |  | 113.75d |
| 247 |  | HITO: ALISTAMIENTO Y MOVILIZACIÓN DE PLANTA DE CONCRETO PARA WP19 | 0d | 2026-12-04 | 2026-12-04 | 245 |  | 116.75d |
| 248 |  | FUNDIDA WP19 | 1d | 2026-12-09 | 2026-12-10 | 246, 247 |  | 113.75d |
| 249 |  | CURADO DEL CONCRETO WP19 | 7d | 2026-12-10 | 2026-12-17 | 248 |  | 113.75d |
| 250 |  | INSTALACIONES ELECTRICAS Y SISTEMA PUESTA TIERRA WP19 | 3d | 2026-12-17 | 2026-12-21 | 249 |  | 113.75d |
| 251 |  | INSTALACION DE GROUT Y MORTERO AUTOCOMPACTANTE DE ALTA RESISTENCIA WP19 | 2d | 2026-12-21 | 2026-12-23 | 250 |  | 113.75d |
| 252 |  | TAPADO AREA DE CIMENTACIÓN Y CONFORMACIÓN DE PLATAFORMA WP19 | 10d | 2026-12-21 | 2027-01-02 | 250, 200, 201 |  | 113.75d |
| 253 |  | ESTABILIZACIÓN DE TALUDES EN PLATAFORMA Y RECONFORMACION FINAL WP19 | 12d | 2026-12-23 | 2027-01-06 | 251SS+2d, 202, 252SS+2d |  | 113.75d |
| 254 |  | HITO: FINALIZACION DE ACTIVIDADES EN CIMENTACION WP19 | 0d | 2027-01-06 | 2027-01-06 | 253, 237 |  | 209.75d |
| 255 | 10.10 | **CIMENTACION WP20** | 149d | 2026-08-01 A | 2027-01-15 |  | 11% | 202.38d |
| 256 |  | LOCALIZACION, REPLANTEO Y DESBROCE DE AREA DE ACOPIO DE TORRE Y DE PALAS WP20 | 85d | 2026-08-01 A | 2026-11-03 | 239, 12 | 20% | 0d |
| 257 |  | EXCAVACIÓN DE CIMENTACION WP20 | 7d | 2026-11-03 | 2026-11-11 | 256, 206, 240 |  | 28.38d |
| 258 |  | BANCO DE DUCTO WP20 | 3d | 2026-11-11 | 2026-11-13 | 257 |  | 28.38d |
| 259 |  | COMPACTACION DE SELLO DE BASE WP20 | 4d | 2026-11-13 | 2026-11-19 | 257, 258 |  | 28.38d |
| 260 |  | SOLADO WP20 | 2d | 2026-11-19 | 2026-11-21 | 259, 211 |  | 28.38d |
| 261 |  | INSTALACIÓN DE PERNOS Y SOFT-SPOT WP20 | 5d | 2026-11-21 | 2026-11-26 | 260 |  | 28.38d |
| 262 |  | INSTALACIÓN DE ACERO DE REFUERZO WP20 | 15d | 2026-11-26 | 2026-12-14 | 261 |  | 28.38d |
| 263 |  | ENCOFRADO DE ZAPATA Y DE PEDESTAL WP20 | 3d | 2026-12-14 | 2026-12-16 | 262 |  | 108.38d |
| 264 |  | HITO: ALISTAMIENTO Y MOVILIZACIÓN DE PLANTA DE CONCRETO PARA WP20 | 0d | 2026-12-14 | 2026-12-14 | 262 |  | 111.38d |
| 265 |  | FUNDIDA WP20 | 1d | 2026-12-17 | 2026-12-17 | 263, 264 |  | 108.38d |
| 266 |  | CURADO DEL CONCRETO WP20 | 7d | 2026-12-17 | 2026-12-26 | 265 |  | 108.38d |
| 267 |  | INSTALACIONES ELECTRICAS Y SISTEMA PUESTA TIERRA WP20 | 3d | 2026-12-26 | 2026-12-29 | 266 |  | 108.38d |
| 268 |  | INSTALACION DE GROUT Y MORTERO AUTOCOMPACTANTE DE ALTA RESISTENCIA WP20 | 2d | 2026-12-30 | 2026-12-31 | 267 |  | 108.38d |
| 269 |  | TAPADO AREA DE CIMENTACIÓN Y CONFORMACIÓN DE PLATAFORMA WP20 | 10d | 2026-12-30 | 2027-01-09 | 267, 217, 218 |  | 108.38d |
| 270 |  | ESTABILIZACIÓN DE TALUDES EN PLATAFORMA Y RECONFORMACION FINAL WP20 | 12d | 2026-12-31 | 2027-01-15 | 268SS+2d, 219, 269SS+2d |  | 108.38d |
| 271 |  | HITO: FINALIZACION DE ACTIVIDADES EN CIMENTACION WP20 | 0d | 2027-01-15 | 2027-01-15 | 270, 254 |  | 202.38d |
| 272 | 10.11 | **CIMENTACION WP22** | 156d | 2026-08-03 A | 2027-01-23 |  | 11% | 194.25d |
| 273 |  | LOCALIZACION, REPLANTEO Y DESBROCE DE AREA DE ACOPIO DE TORRE Y DE PALAS WP22 | 92d | 2026-08-03 A | 2026-11-12 | 256, 12, 13, 14 | 20% | 0d |
| 274 |  | EXCAVACIÓN DE CIMENTACION WP22 | 7d | 2026-11-12 | 2026-11-20 | 273, 223, 257 |  | 28.25d |
| 275 |  | BANCO DE DUCTO WP22 | 3d | 2026-11-20 | 2026-11-24 | 274 |  | 40.25d |
| 276 |  | COMPACTACION DE SELLO DE BASE WP22 | 4d | 2026-11-24 | 2026-11-27 | 274, 275 |  | 40.25d |
| 277 |  | SOLADO WP22 | 2d | 2026-11-27 | 2026-11-30 | 276, 228 |  | 40.25d |
| 278 |  | INSTALACIÓN DE PERNOS Y SOFT-SPOT WP22 | 5d | 2026-11-30 | 2026-12-04 | 277 |  | 40.25d |
| 279 |  | INSTALACIÓN DE ACERO DE REFUERZO WP22 | 15d | 2026-12-05 | 2026-12-22 | 278 |  | 40.25d |
| 280 |  | ENCOFRADO DE ZAPATA Y DE PEDESTAL WP22 | 3d | 2026-12-22 | 2026-12-26 | 279 |  | 110.25d |

| ID | WBS | Task | Duration | Start | Finish | Predecessors | Complete | Total float |
| --- | --- | --- | --- | --- | --- | --- | --- | --- |
| 281 |  | HITO: ALISTAMIENTO Y MOVILIZACIÓN DE PLANTA DE CONCRETO PARA WP22 | 0d | 2026-12-22 | 2026-12-22 | 279 |  | 113.25d |
| 282 |  | FUNDIDA WP22 | 1d | 2026-12-26 | 2026-12-28 | 280, 281 |  | 110.25d |
| 283 |  | CURADO DEL CONCRETO WP22 | 7d | 2026-12-28 | 2027-01-05 | 282 |  | 110.25d |
| 284 |  | INSTALACIONES ELECTRICAS Y SISTEMA PUESTA TIERRA WP22 | 3d | 2027-01-05 | 2027-01-08 | 283 |  | 110.25d |
| 285 |  | INSTALACION DE GROUT Y MORTERO AUTOCOMPACTANTE DE ALTA RESISTENCIA WP22 | 2d | 2027-01-08 | 2027-01-12 | 284 |  | 110.25d |
| 286 |  | TAPADO AREA DE CIMENTACIÓN Y CONFORMACIÓN DE PLATAFORMA WP22 | 10d | 2027-01-08 | 2027-01-20 | 284, 234, 235 |  | 110.25d |
| 287 |  | ESTABILIZACIÓN DE TALUDES EN PLATAFORMA Y RECONFORMACION FINAL WP22 | 12d | 2027-01-12 | 2027-01-23 | 285SS+2d, 236, 286SS+2d |  | 110.25d |
| 288 |  | HITO: FINALIZACION DE ACTIVIDADES EN CIMENTACION WP22 | 0d | 2027-01-23 | 2027-01-23 | 287, 271 |  | 194.25d |
| 289 | 10.12 | **CIMENTACION WP5** | 168d | 2026-07-30 A | 2027-02-02 |  |  | 185.62d |
| 290 |  | LOCALIZACION, REPLANTEO Y DESBROCE DE AREA DE ACOPIO DE TORRE Y DE PALAS WP5 | 104d | 2026-07-30 A | 2026-11-21 | 273 |  | 26.62d |
| 291 |  | EXCAVACIÓN DE CIMENTACION WP5 | 7d | 2026-11-21 | 2026-11-30 | 290, 240, 274 |  | 26.62d |
| 292 |  | BANCO DE DUCTO WP5 | 3d | 2026-11-30 | 2026-12-02 | 291 |  | 49.62d |
| 293 |  | COMPACTACION DE SELLO DE BASE WP5 | 4d | 2026-12-02 | 2026-12-07 | 291, 292 |  | 49.62d |
| 294 |  | SOLADO WP5 | 2d | 2026-12-07 | 2026-12-10 | 293, 245 |  | 49.62d |
| 295 |  | INSTALACIÓN DE PERNOS Y SOFT-SPOT WP5 | 5d | 2026-12-10 | 2026-12-15 | 294 |  | 49.62d |
| 296 |  | INSTALACIÓN DE ACERO DE REFUERZO WP5 | 15d | 2026-12-15 | 2027-01-02 | 295 |  | 49.62d |
| 297 |  | ENCOFRADO DE ZAPATA Y DE PEDESTAL WP5 | 3d | 2027-01-02 | 2027-01-06 | 296 |  | 101.62d |
| 298 |  | HITO: ALISTAMIENTO Y MOVILIZACIÓN DE PLANTA DE CONCRETO PARA WP5 | 0d | 2027-01-02 | 2027-01-02 | 296 |  | 104.62d |
| 299 |  | FUNDIDA WP5 | 1d | 2027-01-06 | 2027-01-07 | 297, 298 |  | 101.62d |
| 300 |  | CURADO DEL CONCRETO WP5 | 7d | 2027-01-07 | 2027-01-15 | 299 |  | 101.62d |
| 301 |  | INSTALACIONES ELECTRICAS Y SISTEMA PUESTA TIERRA WP5 | 3d | 2027-01-15 | 2027-01-19 | 300 |  | 101.62d |
| 302 |  | INSTALACION DE GROUT Y MORTERO AUTOCOMPACTANTE DE ALTA RESISTENCIA WP5 | 2d | 2027-01-19 | 2027-01-20 | 301 |  | 101.62d |
| 303 |  | TAPADO AREA DE CIMENTACIÓN Y CONFORMACIÓN DE PLATAFORMA WP5 | 10d | 2027-01-19 | 2027-01-29 | 301, 251, 252 |  | 101.62d |
| 304 |  | ESTABILIZACIÓN DE TALUDES EN PLATAFORMA Y RECONFORMACION FINAL WP5 | 12d | 2027-01-20 | 2027-02-02 | 302SS+2d, 253, 303SS+2d |  | 101.62d |
| 305 |  | HITO: FINALIZACION DE ACTIVIDADES EN CIMENTACION WP5 | 0d | 2027-02-02 | 2027-02-02 | 304, 288 |  | 185.62d |
| 306 | 10.13 | **CIMENTACION WP6** | 175d | 2026-07-30 A | 2027-02-10 |  | 12% | 178.62d |
| 307 |  | LOCALIZACION, REPLANTEO Y DESBROCE DE AREA DE ACOPIO DE TORRE Y DE PALAS WP6 | 105d | 2026-07-30 A | 2026-11-23 | 273 | 20% | 0d |
| 308 |  | EXCAVACIÓN DE CIMENTACION WP6 | 7d | 2026-11-30 | 2026-12-07 | 307, 257, 291 |  | 26.62d |
| 309 |  | BANCO DE DUCTO WP6 | 3d | 2026-12-07 | 2026-12-11 | 308 |  | 26.62d |
| 310 |  | COMPACTACION DE SELLO DE BASE WP6 | 4d | 2026-12-11 | 2026-12-15 | 309 |  | 26.62d |
| 311 |  | SOLADO WP6 | 2d | 2026-12-15 | 2026-12-17 | 310, 262 |  | 26.62d |
| 312 |  | INSTALACIÓN DE PERNOS Y SOFT-SPOT WP6 | 5d | 2026-12-17 | 2026-12-23 | 311 |  | 26.62d |
| 313 |  | INSTALACIÓN DE ACERO DE REFUERZO WP6 | 15d | 2026-12-23 | 2027-01-09 | 312 |  | 26.62d |
| 314 |  | ENCOFRADO DE ZAPATA Y DE PEDESTAL WP6 | 3d | 2027-01-09 | 2027-01-14 | 313 |  | 96.62d |
| 315 |  | HITO: ALISTAMIENTO Y MOVILIZACIÓN DE PLANTA DE CONCRETO PARA WP6 | 0d | 2027-01-09 | 2027-01-09 | 313 |  | 99.62d |
| 316 |  | FUNDIDA WP6 | 1d | 2027-01-14 | 2027-01-15 | 314, 315 |  | 96.62d |
| 317 |  | CURADO DEL CONCRETO WP6 | 7d | 2027-01-15 | 2027-01-22 | 316 |  | 96.62d |
| 318 |  | INSTALACIONES ELECTRICAS Y SISTEMA PUESTA TIERRA WP6 | 3d | 2027-01-22 | 2027-01-26 | 317 |  | 96.62d |
| 319 |  | INSTALACION DE GROUT Y MORTERO AUTOCOMPACTANTE DE ALTA RESISTENCIA WP6 | 2d | 2027-01-26 | 2027-01-28 | 318 |  | 96.62d |
| 320 |  | TAPADO AREA DE CIMENTACIÓN Y CONFORMACIÓN DE PLATAFORMA WP6 | 10d | 2027-01-26 | 2027-02-05 | 318, 268, 269 |  | 96.62d |
| 321 |  | ESTABILIZACIÓN DE TALUDES EN PLATAFORMA Y RECONFORMACION FINAL WP6 | 12d | 2027-01-28 | 2027-02-10 | 319SS+2d, 270, 320SS+2d |  | 96.62d |
| 322 |  | HITO: FINALIZACION DE ACTIVIDADES EN CIMENTACION WP6 | 0d | 2027-02-10 | 2027-02-10 | 321, 305 |  | 178.62d |
| 323 | 10.14 | **CIMENTACION WP42** | 77d | 2026-11-23 | 2027-02-17 |  |  | 0d |
| 324 |  | LOCALIZACION, REPLANTEO Y DESBROCE DE AREA DE ACOPIO DE TORRE Y DE PALAS WP42 | 8d | 2026-11-23 | 2026-12-01 | 307, 13 |  | 0d |
| 325 |  | EXCAVACIÓN DE CIMENTACION WP42 | 7d | 2026-12-07 | 2026-12-15 | 324, 274, 308 |  | 27.62d |
| 326 |  | BANCO DE DUCTO WP42 | 3d | 2026-12-15 | 2026-12-18 | 325 |  | 39.62d |
| 327 |  | COMPACTACION DE SELLO DE BASE WP42 | 4d | 2026-12-18 | 2026-12-23 | 326 |  | 39.62d |
| 328 |  | SOLADO WP42 | 2d | 2026-12-23 | 2026-12-24 | 327, 279 |  | 39.62d |
| 329 |  | INSTALACIÓN DE PERNOS Y SOFT-SPOT WP42 | 5d | 2026-12-26 | 2026-12-31 | 328 |  | 39.62d |
| 330 |  | INSTALACIÓN DE ACERO DE REFUERZO WP42 | 15d | 2026-12-31 | 2027-01-19 | 329 |  | 39.62d |
| 331 |  | ENCOFRADO DE ZAPATA Y DE PEDESTAL WP42 | 3d | 2027-01-19 | 2027-01-21 | 330 |  | 99.62d |
| 332 |  | HITO: ALISTAMIENTO Y MOVILIZACIÓN DE PLANTA DE CONCRETO PARA WP42 | 0d | 2027-01-19 | 2027-01-19 | 330 |  | 102.62d |
| 333 |  | FUNDIDA WP42 | 1d | 2027-01-21 | 2027-01-22 | 331, 332 |  | 99.62d |
| 334 |  | CURADO DEL CONCRETO WP42 | 7d | 2027-01-22 | 2027-01-29 | 333 |  | 99.62d |
| 335 |  | INSTALACIONES ELECTRICAS Y SISTEMA PUESTA TIERRA WP42 | 3d | 2027-01-30 | 2027-02-02 | 334 |  | 99.62d |
| 336 |  | INSTALACION DE GROUT Y MORTERO AUTOCOMPACTANTE DE ALTA RESISTENCIA WP42 | 2d | 2027-02-02 | 2027-02-04 | 335 |  | 99.62d |
| 337 |  | TAPADO AREA DE CIMENTACIÓN Y CONFORMACIÓN DE PLATAFORMA WP42 | 10d | 2027-02-02 | 2027-02-12 | 335, 285, 286 |  | 99.62d |
| 338 |  | ESTABILIZACIÓN DE TALUDES EN PLATAFORMA Y RECONFORMACION FINAL WP42 | 12d | 2027-02-04 | 2027-02-17 | 336SS+2d, 287, 337SS+2d |  | 99.62d |
| 339 |  | HITO: FINALIZACION DE ACTIVIDADES EN CIMENTACION WP42 | 0d | 2027-02-17 | 2027-02-17 | 338, 322 |  | 171.62d |
| 340 | 10.15 | **CIMENTACION WP41** | 77d | 2026-12-02 | 2027-02-25 |  |  | 0d |
| 341 |  | LOCALIZACION, REPLANTEO Y DESBROCE DE AREA DE ACOPIO DE TORRE Y DE PALAS WP41 | 8d | 2026-12-02 | 2026-12-11 | 324, 13 |  | 0d |
| 342 |  | EXCAVACIÓN DE CIMENTACION WP41 | 7d | 2026-12-15 | 2026-12-23 | 341, 291, 325 |  | 27.62d |
| 343 |  | BANCO DE DUCTO WP41 | 3d | 2026-12-23 | 2026-12-26 | 342 |  | 50.62d |
| 344 |  | COMPACTACION DE SELLO DE BASE WP41 | 4d | 2026-12-26 | 2026-12-31 | 343 |  | 50.62d |
| 345 |  | SOLADO WP41 | 2d | 2027-01-02 | 2027-01-05 | 344, 296 |  | 49.62d |
| 346 |  | INSTALACIÓN DE PERNOS Y SOFT-SPOT WP41 | 5d | 2027-01-05 | 2027-01-09 | 345 |  | 49.62d |
| 347 |  | INSTALACIÓN DE ACERO DE REFUERZO WP41 | 15d | 2027-01-09 | 2027-01-27 | 346 |  | 49.62d |
| 348 |  | ENCOFRADO DE ZAPATA Y DE PEDESTAL WP41 | 3d | 2027-01-27 | 2027-01-29 | 347 |  | 91.62d |
| 349 |  | HITO: ALISTAMIENTO Y MOVILIZACIÓN DE PLANTA DE CONCRETO PARA WP41 | 0d | 2027-01-27 | 2027-01-27 | 347 |  | 94.62d |
| 350 |  | FUNDIDA WP41 | 1d | 2027-01-30 | 2027-01-30 | 348, 349 |  | 91.62d |

| ID | WBS | Task | Duration | Start | Finish | Predecessors | Complete | Total float |
| --- | --- | --- | --- | --- | --- | --- | --- | --- |
| 351 |  | CURADO DEL CONCRETO WP41 | 7d | 2027-01-30 | 2027-02-08 | 350 |  | 91.62d |
| 352 |  | INSTALACIONES ELECTRICAS Y SISTEMA PUESTA TIERRA WP41 | 3d | 2027-02-08 | 2027-02-10 | 351 |  | 91.62d |
| 353 |  | INSTALACION DE GROUT Y MORTERO AUTOCOMPACTANTE DE ALTA RESISTENCIA WP41 | 2d | 2027-02-11 | 2027-02-12 | 352 |  | 91.62d |
| 354 |  | TAPADO AREA DE CIMENTACIÓN Y CONFORMACIÓN DE PLATAFORMA WP41 | 10d | 2027-02-11 | 2027-02-20 | 352, 302, 303 |  | 91.62d |
| 355 |  | ESTABILIZACIÓN DE TALUDES EN PLATAFORMA Y RECONFORMACION FINAL WP41 | 12d | 2027-02-12 | 2027-02-25 | 353SS+2d, 304, 354SS+2d |  | 91.62d |
| 356 |  | HITO: FINALIZACION DE ACTIVIDADES EN CIMENTACION WP41 | 0d | 2027-02-25 | 2027-02-25 | 355, 339 |  | 163.62d |
| 357 | 10.16 | **CIMENTACION WP40** | 76d | 2026-12-11 | 2027-03-04 |  |  | 0d |
| 358 |  | LOCALIZACION, REPLANTEO Y DESBROCE DE AREA DE ACOPIO DE TORRE Y DE PALAS WP40 | 8d | 2026-12-11 | 2026-12-19 | 341, 13 |  | 0d |
| 359 |  | EXCAVACIÓN DE CIMENTACION WP40 | 7d | 2026-12-23 | 2026-12-31 | 358, 308, 342 |  | 27.62d |
| 360 |  | BANCO DE DUCTO WP40 | 3d | 2026-12-31 | 2027-01-05 | 359 |  | 27.62d |
| 361 |  | COMPACTACION DE SELLO DE BASE WP40 | 4d | 2027-01-05 | 2027-01-08 | 360 |  | 27.62d |
| 362 |  | SOLADO WP40 | 2d | 2027-01-09 | 2027-01-13 | 361, 313 |  | 26.62d |
| 363 |  | INSTALACIÓN DE PERNOS Y SOFT-SPOT WP40 | 5d | 2027-01-13 | 2027-01-19 | 362 |  | 26.62d |
| 364 |  | INSTALACIÓN DE ACERO DE REFUERZO WP40 | 15d | 2027-01-19 | 2027-02-03 | 363 |  | 26.62d |
| 365 |  | ENCOFRADO DE ZAPATA Y DE PEDESTAL WP40 | 3d | 2027-02-03 | 2027-02-06 | 364 |  | 86.62d |
| 366 |  | HITO: ALISTAMIENTO Y MOVILIZACIÓN DE PLANTA DE CONCRETO PARA WP40 | 0d | 2027-02-03 | 2027-02-03 | 364 |  | 89.62d |
| 367 |  | FUNDIDA WP40 | 1d | 2027-02-06 | 2027-02-08 | 365, 366 |  | 86.62d |
| 368 |  | CURADO DEL CONCRETO WP40 | 7d | 2027-02-08 | 2027-02-15 | 367 |  | 86.62d |
| 369 |  | INSTALACIONES ELECTRICAS Y SISTEMA PUESTA TIERRA WP40 | 3d | 2027-02-15 | 2027-02-18 | 368 |  | 86.62d |
| 370 |  | INSTALACION DE GROUT Y MORTERO AUTOCOMPACTANTE DE ALTA RESISTENCIA WP40 | 2d | 2027-02-18 | 2027-02-20 | 369 |  | 86.62d |
| 371 |  | TAPADO AREA DE CIMENTACIÓN Y CONFORMACIÓN DE PLATAFORMA WP40 | 10d | 2027-02-18 | 2027-03-01 | 369, 319, 320 |  | 86.62d |
| 372 |  | ESTABILIZACIÓN DE TALUDES EN PLATAFORMA Y RECONFORMACION FINAL WP40 | 12d | 2027-02-20 | 2027-03-04 | 370SS+2d, 321, 371SS+2d |  | 86.62d |
| 373 |  | HITO: FINALIZACION DE ACTIVIDADES EN CIMENTACION WP40 | 0d | 2027-03-04 | 2027-03-04 | 372, 356 |  | 156.62d |
| 374 | 10.17 | **CIMENTACION WP39** | 75d | 2026-12-19 | 2027-03-12 |  |  | 0d |
| 375 |  | LOCALIZACION, REPLANTEO Y DESBROCE DE AREA DE ACOPIO DE TORRE Y DE PALAS WP39 | 8d | 2026-12-19 | 2026-12-29 | 358, 13 |  | 0d |
| 376 |  | EXCAVACIÓN DE CIMENTACION WP39 | 7d | 2026-12-31 | 2027-01-08 | 375, 324, 359 |  | 28.62d |
| 377 |  | BANCO DE DUCTO WP39 | 3d | 2027-01-08 | 2027-01-13 | 376 |  | 40.62d |
| 378 |  | COMPACTACION DE SELLO DE BASE WP39 | 4d | 2027-01-13 | 2027-01-18 | 377 |  | 40.62d |
| 379 |  | SOLADO WP39 | 2d | 2027-01-19 | 2027-01-20 | 378, 330 |  | 39.62d |
| 380 |  | INSTALACIÓN DE PERNOS Y SOFT-SPOT WP39 | 5d | 2027-01-20 | 2027-01-26 | 379 |  | 39.62d |
| 381 |  | INSTALACIÓN DE ACERO DE REFUERZO WP39 | 15d | 2027-01-26 | 2027-02-10 | 380 |  | 39.62d |
| 382 |  | ENCOFRADO DE ZAPATA Y DE PEDESTAL WP39 | 3d | 2027-02-11 | 2027-02-13 | 381 |  | 89.62d |
| 383 |  | HITO: ALISTAMIENTO Y MOVILIZACIÓN DE PLANTA DE CONCRETO PARA WP39 | 0d | 2027-02-10 | 2027-02-10 | 381 |  | 92.62d |
| 384 |  | FUNDIDA WP39 | 1d | 2027-02-13 | 2027-02-15 | 382, 383 |  | 89.62d |
| 385 |  | CURADO DEL CONCRETO WP39 | 7d | 2027-02-15 | 2027-02-22 | 384 |  | 89.62d |
| 386 |  | INSTALACIONES ELECTRICAS Y SISTEMA PUESTA TIERRA WP39 | 3d | 2027-02-23 | 2027-02-25 | 385 |  | 89.62d |
| 387 |  | INSTALACION DE GROUT Y MORTERO AUTOCOMPACTANTE DE ALTA RESISTENCIA WP39 | 2d | 2027-02-25 | 2027-02-27 | 386 |  | 89.62d |
| 388 |  | TAPADO AREA DE CIMENTACIÓN Y CONFORMACIÓN DE PLATAFORMA WP39 | 10d | 2027-02-25 | 2027-03-08 | 386, 336, 337 |  | 89.62d |
| 389 |  | ESTABILIZACIÓN DE TALUDES EN PLATAFORMA Y RECONFORMACION FINAL WP39 | 12d | 2027-02-27 | 2027-03-12 | 387SS+2d, 338, 388SS+2d |  | 89.62d |
| 390 |  | HITO: FINALIZACION DE ACTIVIDADES EN CIMENTACION WP39 | 0d | 2027-03-12 | 2027-03-12 | 389, 373 |  | 149.62d |
| 391 | 10.18 | **CIMENTACION WP23** | 207.62d | 2026-08-04 A | 2027-03-20 |  | 13% | 141.62d |
| 392 |  | LOCALIZACION, REPLANTEO Y DESBROCE DE AREA DE ACOPIO DE TORRE Y DE PALAS WP23 | 141d | 2026-08-04 A | 2027-01-08 | 375, 12, 14, 13 | 20% | 0d |
| 393 |  | EXCAVACIÓN DE CIMENTACION WP23 | 7d | 2027-01-08 | 2027-01-18 | 392, 342, 376 |  | 28.62d |
| 394 |  | BANCO DE DUCTO WP23 | 3d | 2027-01-18 | 2027-01-20 | 393 |  | 40.62d |
| 395 |  | COMPACTACION DE SELLO DE BASE WP23 | 4d | 2027-01-20 | 2027-01-25 | 394 |  | 51.62d |
| 396 |  | SOLADO WP23 | 2d | 2027-01-27 | 2027-01-29 | 395, 347 |  | 49.62d |
| 397 |  | INSTALACIÓN DE PERNOS Y SOFT-SPOT WP23 | 5d | 2027-01-29 | 2027-02-03 | 396 |  | 49.62d |
| 398 |  | INSTALACIÓN DE ACERO DE REFUERZO WP23 | 15d | 2027-02-03 | 2027-02-19 | 397 |  | 49.62d |
| 399 |  | ENCOFRADO DE ZAPATA Y DE PEDESTAL WP23 | 3d | 2027-02-19 | 2027-02-22 | 398 |  | 81.62d |
| 400 |  | HITO: ALISTAMIENTO Y MOVILIZACIÓN DE PLANTA DE CONCRETO PARA WP23 | 0d | 2027-02-19 | 2027-02-19 | 398 |  | 84.62d |
| 401 |  | FUNDIDA WP23 | 1d | 2027-02-23 | 2027-02-23 | 399, 400 |  | 81.62d |
| 402 |  | CURADO DEL CONCRETO WP23 | 7d | 2027-02-23 | 2027-03-03 | 401 |  | 81.62d |
| 403 |  | INSTALACIONES ELECTRICAS Y SISTEMA PUESTA TIERRA WP23 | 3d | 2027-03-03 | 2027-03-05 | 402 |  | 81.62d |
| 404 |  | INSTALACION DE GROUT Y MORTERO AUTOCOMPACTANTE DE ALTA RESISTENCIA WP23 | 2d | 2027-03-05 | 2027-03-08 | 403 |  | 81.62d |
| 405 |  | TAPADO AREA DE CIMENTACIÓN Y CONFORMACIÓN DE PLATAFORMA WP23 | 10d | 2027-03-05 | 2027-03-16 | 403, 353, 354 |  | 81.62d |
| 406 |  | ESTABILIZACIÓN DE TALUDES EN PLATAFORMA Y RECONFORMACION FINAL WP23 | 12d | 2027-03-08 | 2027-03-20 | 404SS+2d, 355, 405SS+2d |  | 81.62d |
| 407 |  | HITO: FINALIZACION DE ACTIVIDADES EN CIMENTACION WP23 | 0d | 2027-03-20 | 2027-03-20 | 406, 390 |  | 141.62d |
| 408 | 10.19 | **CIMENTACION WP24** | 212.38d | 2026-08-06 A | 2027-03-31 |  | 13% | 134.62d |
| 409 |  | LOCALIZACION, REPLANTEO Y DESBROCE DE AREA DE ACOPIO DE TORRE Y DE PALAS WP24 | 147d | 2026-08-06 A | 2027-01-18 | 392, 12, 14, 13 | 20% | 0d |
| 410 |  | EXCAVACIÓN DE CIMENTACION WP24 | 7d | 2027-01-18 | 2027-01-26 | 409, 359, 393 |  | 28d |
| 411 |  | BANCO DE DUCTO WP24 | 3d | 2027-01-26 | 2027-01-28 | 410 |  | 28d |
| 412 |  | COMPACTACION DE SELLO DE BASE WP24 | 4d | 2027-01-28 | 2027-02-02 | 411 |  | 28d |
| 413 |  | SOLADO WP24 | 2d | 2027-02-03 | 2027-02-05 | 412, 364 |  | 26.62d |
| 414 |  | INSTALACIÓN DE PERNOS Y SOFT-SPOT WP24 | 5d | 2027-02-05 | 2027-02-10 | 413 |  | 26.62d |
| 415 |  | INSTALACIÓN DE ACERO DE REFUERZO WP24 | 15d | 2027-02-11 | 2027-02-26 | 414 |  | 26.62d |
| 416 |  | ENCOFRADO DE ZAPATA Y DE PEDESTAL WP24 | 3d | 2027-02-26 | 2027-03-02 | 415 |  | 76.62d |
| 417 |  | HITO: ALISTAMIENTO Y MOVILIZACIÓN DE PLANTA DE CONCRETO PARA WP24 | 0d | 2027-02-26 | 2027-02-26 | 415 |  | 79.62d |
| 418 |  | FUNDIDA WP24 | 1d | 2027-03-02 | 2027-03-03 | 416, 417 |  | 76.62d |
| 419 |  | CURADO DEL CONCRETO WP24 | 7d | 2027-03-03 | 2027-03-10 | 418 |  | 76.62d |
| 420 |  | INSTALACIONES ELECTRICAS Y SISTEMA PUESTA TIERRA WP24 | 3d | 2027-03-10 | 2027-03-13 | 419 |  | 76.62d |

| ID | WBS | Task | Duration | Start | Finish | Predecessors | Complete | Total float |
| --- | --- | --- | --- | --- | --- | --- | --- | --- |
| 421 |  | INSTALACION DE GROUT Y MORTERO AUTOCOMPACTANTE DE ALTA RESISTENCIA WP24 | 2d | 2027-03-13 | 2027-03-16 | 420 |  | 76.62d |
| 422 |  | TAPADO AREA DE CIMENTACIÓN Y CONFORMACIÓN DE PLATAFORMA WP24 | 10d | 2027-03-13 | 2027-03-27 | 420, 370, 371 |  | 76.62d |
| 423 |  | ESTABILIZACIÓN DE TALUDES EN PLATAFORMA Y RECONFORMACION FINAL WP24 | 12d | 2027-03-16 | 2027-03-31 | 421SS+2d, 372, 422SS+2d |  | 76.62d |
| 424 |  | HITO: FINALIZACION DE ACTIVIDADES EN CIMENTACION WP24 | 0d | 2027-03-31 | 2027-03-31 | 423, 407 |  | 134.62d |
| 425 | 10.20 | **CIMENTACION WP25** | 217.12d | 2026-08-10 A | 2027-04-08 |  | 13% | 127.62d |
| 426 |  | LOCALIZACION, REPLANTEO Y DESBROCE DE AREA DE ACOPIO DE TORRE Y DE PALAS WP25 | 153d | 2026-08-10 A | 2027-01-27 | 409, 12, 14, 13 | 20% | 0d |
| 427 |  | EXCAVACIÓN DE CIMENTACION WP25 | 7d | 2027-01-27 | 2027-02-03 | 426, 376, 410 |  | 27.75d |
| 428 |  | BANCO DE DUCTO WP25 | 3d | 2027-02-03 | 2027-02-06 | 427 |  | 39.75d |
| 429 |  | COMPACTACION DE SELLO DE BASE WP25 | 4d | 2027-02-06 | 2027-02-10 | 428 |  | 39.75d |
| 430 |  | SOLADO WP25 | 2d | 2027-02-11 | 2027-02-12 | 429, 381 |  | 39.62d |
| 431 |  | INSTALACIÓN DE PERNOS Y SOFT-SPOT WP25 | 5d | 2027-02-12 | 2027-02-18 | 430, 347 |  | 39.62d |
| 432 |  | INSTALACIÓN DE ACERO DE REFUERZO WP25 | 15d | 2027-02-18 | 2027-03-05 | 431 |  | 39.62d |
| 433 |  | ENCOFRADO DE ZAPATA Y DE PEDESTAL WP25 | 3d | 2027-03-05 | 2027-03-09 | 432 |  | 79.62d |
| 434 |  | HITO: ALISTAMIENTO Y MOVILIZACIÓN DE PLANTA DE CONCRETO PARA WP25 | 0d | 2027-03-05 | 2027-03-05 | 432 |  | 82.62d |
| 435 |  | FUNDIDA WP25 | 1d | 2027-03-09 | 2027-03-10 | 433, 434 |  | 79.62d |
| 436 |  | CURADO DEL CONCRETO WP25 | 7d | 2027-03-10 | 2027-03-17 | 435 |  | 79.62d |
| 437 |  | INSTALACIONES ELECTRICAS Y SISTEMA PUESTA TIERRA WP25 | 3d | 2027-03-17 | 2027-03-20 | 436 |  | 79.62d |
| 438 |  | INSTALACION DE GROUT Y MORTERO AUTOCOMPACTANTE DE ALTA RESISTENCIA WP25 | 2d | 2027-03-20 | 2027-03-24 | 437 |  | 79.62d |
| 439 |  | TAPADO AREA DE CIMENTACIÓN Y CONFORMACIÓN DE PLATAFORMA WP25 | 10d | 2027-03-20 | 2027-04-03 | 437, 387, 388 |  | 79.62d |
| 440 |  | ESTABILIZACIÓN DE TALUDES EN PLATAFORMA Y RECONFORMACION FINAL WP25 | 12d | 2027-03-24 | 2027-04-08 | 438SS+2d, 389, 439SS+2d |  | 79.62d |
| 441 |  | HITO: FINALIZACION DE ACTIVIDADES EN CIMENTACION WP25 | 0d | 2027-04-08 | 2027-04-08 | 440, 424 |  | 127.62d |
| 442 | 10.21 | **CIMENTACION WP26** | 222d | 2026-08-13 A | 2027-04-16 |  | 14% | 119.5d |
| 443 |  | LOCALIZACION, REPLANTEO Y DESBROCE DE AREA DE ACOPIO DE TORRE Y DE PALAS WP26 | 158d | 2026-08-13 A | 2027-02-04 | 426, 12, 14, 13 | 20% | 0d |
| 444 |  | EXCAVACIÓN DE CIMENTACION WP26 | 7d | 2027-02-04 | 2027-02-11 | 443, 394, 427 |  | 26.5d |
| 445 |  | BANCO DE DUCTO WP26 | 3d | 2027-02-12 | 2027-02-15 | 444 |  | 47.5d |
| 446 |  | COMPACTACION DE SELLO DE BASE WP26 | 4d | 2027-02-15 | 2027-02-19 | 445 |  | 47.5d |
| 447 |  | SOLADO WP26 | 2d | 2027-02-19 | 2027-02-22 | 446 |  | 47.5d |
| 448 |  | INSTALACIÓN DE PERNOS Y SOFT-SPOT WP26 | 5d | 2027-02-22 | 2027-02-26 | 447, 398 |  | 47.5d |
| 449 |  | INSTALACIÓN DE ACERO DE REFUERZO WP26 | 15d | 2027-02-26 | 2027-03-15 | 448 |  | 47.5d |
| 450 |  | ENCOFRADO DE ZAPATA Y DE PEDESTAL WP26 | 3d | 2027-03-15 | 2027-03-17 | 449 |  | 71.5d |
| 451 |  | HITO: ALISTAMIENTO Y MOVILIZACIÓN DE PLANTA DE CONCRETO PARA WP26 | 0d | 2027-03-15 | 2027-03-15 | 449 |  | 74.5d |
| 452 |  | FUNDIDA WP26 | 1d | 2027-03-18 | 2027-03-18 | 450, 451 |  | 71.5d |
| 453 |  | CURADO DEL CONCRETO WP26 | 7d | 2027-03-18 | 2027-03-30 | 452 |  | 71.5d |
| 454 |  | INSTALACIONES ELECTRICAS Y SISTEMA PUESTA TIERRA WP26 | 3d | 2027-03-30 | 2027-04-01 | 453 |  | 71.5d |
| 455 |  | INSTALACION DE GROUT Y MORTERO AUTOCOMPACTANTE DE ALTA RESISTENCIA WP26 | 2d | 2027-04-01 | 2027-04-03 | 454 |  | 71.5d |
| 456 |  | TAPADO AREA DE CIMENTACIÓN Y CONFORMACIÓN DE PLATAFORMA WP26 | 10d | 2027-04-01 | 2027-04-12 | 454, 404, 405 |  | 71.5d |
| 457 |  | ESTABILIZACIÓN DE TALUDES EN PLATAFORMA Y RECONFORMACION FINAL WP26 | 12d | 2027-04-03 | 2027-04-16 | 455SS+2d, 406, 456SS+2d |  | 71.5d |
| 458 |  | HITO: FINALIZACION DE ACTIVIDADES EN CIMENTACION WP26 | 0d | 2027-04-16 | 2027-04-16 | 457, 441 |  | 119.5d |
| 459 | 10.22 | **CIMENTACION WP27** | 232d | 2026-08-12 A | 2027-04-26 |  | 14% | 110.62d |
| 460 |  | LOCALIZACION, REPLANTEO Y DESBROCE DE AREA DE ACOPIO DE TORRE Y DE PALAS WP27 | 168d | 2026-08-12 A | 2027-02-13 | 443, 12, 14, 13 | 20% | 18.62d |
| 461 |  | EXCAVACIÓN DE CIMENTACION WP27 | 7d | 2027-02-13 | 2027-02-20 | 460, 410, 444 |  | 24.62d |
| 462 |  | BANCO DE DUCTO WP27 | 3d | 2027-02-22 | 2027-02-24 | 461 |  | 24.62d |
| 463 |  | COMPACTACION DE SELLO DE BASE WP27 | 4d | 2027-02-24 | 2027-03-01 | 462 |  | 24.62d |
| 464 |  | SOLADO WP27 | 2d | 2027-03-01 | 2027-03-03 | 463, 415 |  | 24.62d |
| 465 |  | INSTALACIÓN DE PERNOS Y SOFT-SPOT WP27 | 5d | 2027-03-03 | 2027-03-08 | 464 |  | 24.62d |
| 466 |  | INSTALACIÓN DE ACERO DE REFUERZO WP27 | 15d | 2027-03-08 | 2027-03-27 | 465 |  | 24.62d |
| 467 |  | ENCOFRADO DE ZAPATA Y DE PEDESTAL WP27 | 3d | 2027-03-27 | 2027-03-30 | 466 |  | 64.62d |
| 468 |  | HITO: ALISTAMIENTO Y MOVILIZACIÓN DE PLANTA DE CONCRETO PARA WP27 | 0d | 2027-03-27 | 2027-03-27 | 466 |  | 67.62d |
| 469 |  | FUNDIDA WP27 | 1d | 2027-03-31 | 2027-03-31 | 467, 468 |  | 64.62d |
| 470 |  | CURADO DEL CONCRETO WP27 | 7d | 2027-03-31 | 2027-04-08 | 469 |  | 64.62d |
| 471 |  | INSTALACIONES ELECTRICAS Y SISTEMA PUESTA TIERRA WP27 | 3d | 2027-04-08 | 2027-04-10 | 470 |  | 64.62d |
| 472 |  | INSTALACION DE GROUT Y MORTERO AUTOCOMPACTANTE DE ALTA RESISTENCIA WP27 | 2d | 2027-04-10 | 2027-04-13 | 471 |  | 64.62d |
| 473 |  | TAPADO AREA DE CIMENTACIÓN Y CONFORMACIÓN DE PLATAFORMA WP27 | 10d | 2027-04-10 | 2027-04-21 | 471, 421, 422 |  | 64.62d |
| 474 |  | ESTABILIZACIÓN DE TALUDES EN PLATAFORMA Y RECONFORMACION FINAL WP27 | 12d | 2027-04-13 | 2027-04-26 | 472SS+2d, 423, 473SS+2d |  | 64.62d |
| 475 |  | HITO: FINALIZACION DE ACTIVIDADES EN CIMENTACION WP27 | 0d | 2027-04-26 | 2027-04-26 | 474, 458 |  | 110.62d |
| 476 | 10.23 | **CIMENTACION WP28** | 72d | 2027-02-13 | 2027-05-04 |  |  | 18.62d |
| 477 |  | LOCALIZACION, REPLANTEO Y DESBROCE DE AREA DE ACOPIO DE TORRE Y DE PALAS WP28 | 8d | 2027-02-13 | 2027-02-22 | 460, 12, 14, 13 |  | 18.62d |
| 478 |  | EXCAVACIÓN DE CIMENTACION WP28 | 7d | 2027-02-23 | 2027-03-02 | 477, 427, 461 |  | 23.62d |
| 479 |  | BANCO DE DUCTO WP28 | 3d | 2027-03-02 | 2027-03-04 | 478 |  | 36.62d |
| 480 |  | COMPACTACION DE SELLO DE BASE WP28 | 4d | 2027-03-05 | 2027-03-09 | 479 |  | 36.62d |
| 481 |  | SOLADO WP28 | 2d | 2027-03-09 | 2027-03-11 | 480, 432 |  | 36.62d |
| 482 |  | INSTALACIÓN DE PERNOS Y SOFT-SPOT WP28 | 5d | 2027-03-11 | 2027-03-16 | 481 |  | 36.62d |
| 483 |  | INSTALACIÓN DE ACERO DE REFUERZO WP28 | 15d | 2027-03-17 | 2027-04-05 | 482 |  | 36.62d |
| 484 |  | ENCOFRADO DE ZAPATA Y DE PEDESTAL WP28 | 3d | 2027-04-05 | 2027-04-08 | 483 |  | 66.62d |
| 485 |  | HITO: ALISTAMIENTO Y MOVILIZACIÓN DE PLANTA DE CONCRETO PARA WP28 | 0d | 2027-04-05 | 2027-04-05 | 483 |  | 69.62d |
| 486 |  | FUNDIDA WP28 | 1d | 2027-04-08 | 2027-04-09 | 484, 485 |  | 66.62d |
| 487 |  | CURADO DEL CONCRETO WP28 | 7d | 2027-04-09 | 2027-04-16 | 486 |  | 66.62d |
| 488 |  | INSTALACIONES ELECTRICAS Y SISTEMA PUESTA TIERRA WP28 | 3d | 2027-04-16 | 2027-04-20 | 487 |  | 66.62d |
| 489 |  | INSTALACION DE GROUT Y MORTERO AUTOCOMPACTANTE DE ALTA RESISTENCIA WP28 | 2d | 2027-04-20 | 2027-04-21 | 488 |  | 66.62d |
| 490 |  | TAPADO AREA DE CIMENTACIÓN Y CONFORMACIÓN DE PLATAFORMA WP28 | 10d | 2027-04-20 | 2027-04-30 | 488, 438, 439 |  | 66.62d |

| ID | WBS | Task | Duration | Start | Finish | Predecessors | Total float |
| --- | --- | --- | --- | --- | --- | --- | --- |
| 491 |  | ESTABILIZACIÓN DE TALUDES EN PLATAFORMA Y RECONFORMACION FINAL WP28 | 12d | 2027-04-22 | 2027-05-04 | 489SS+2d, 440, 490SS+2d | 66.62d |
| 492 |  | HITO: FINALIZACION DE ACTIVIDADES EN CIMENTACION WP28 | 0d | 2027-05-04 | 2027-05-04 | 491, 475 | 102.62d |
| 493 | 10.24 | **CIMENTACION WP3** | 72d | 2027-02-23 | 2027-05-13 |  | 18.62d |
| 494 |  | LOCALIZACION, REPLANTEO Y DESBROCE DE AREA DE ACOPIO DE TORRE Y DE PALAS WP3 | 8d | 2027-02-23 | 2027-03-03 | 477, 11, 15 | 18.62d |
| 495 |  | EXCAVACIÓN DE CIMENTACION WP3 | 7d | 2027-03-03 | 2027-03-10 | 494, 444, 478 | 22.62d |
| 496 |  | BANCO DE DUCTO WP3 | 3d | 2027-03-10 | 2027-03-13 | 495 | 44.62d |
| 497 |  | COMPACTACION DE SELLO DE BASE WP3 | 4d | 2027-03-13 | 2027-03-17 | 496 | 44.62d |
| 498 |  | SOLADO WP3 | 2d | 2027-03-17 | 2027-03-19 | 497, 449 | 44.62d |
| 499 |  | INSTALACIÓN DE PERNOS Y SOFT-SPOT WP3 | 5d | 2027-03-19 | 2027-03-29 | 498 | 44.62d |
| 500 |  | INSTALACIÓN DE ACERO DE REFUERZO WP3 | 15d | 2027-03-29 | 2027-04-13 | 499 | 44.62d |
| 501 |  | ENCOFRADO DE ZAPATA Y DE PEDESTAL WP3 | 3d | 2027-04-13 | 2027-04-16 | 500 | 56.62d |
| 502 |  | HITO: ALISTAMIENTO Y MOVILIZACIÓN DE PLANTA DE CONCRETO PARA WP3 | 0d | 2027-04-13 | 2027-04-13 | 500 | 59.62d |
| 503 |  | FUNDIDA WP3 | 1d | 2027-04-16 | 2027-04-17 | 501, 502 | 56.62d |
| 504 |  | CURADO DEL CONCRETO WP3 | 7d | 2027-04-17 | 2027-04-24 | 503 | 56.62d |
| 505 |  | INSTALACIONES ELECTRICAS Y SISTEMA PUESTA TIERRA WP3 | 3d | 2027-04-24 | 2027-04-28 | 504 | 56.62d |
| 506 |  | INSTALACION DE GROUT Y MORTERO AUTOCOMPACTANTE DE ALTA RESISTENCIA WP3 | 2d | 2027-04-28 | 2027-04-30 | 505 | 58.62d |
| 507 |  | TAPADO AREA DE CIMENTACIÓN Y CONFORMACIÓN DE PLATAFORMA WP3 | 10d | 2027-04-28 | 2027-05-08 | 505, 455, 456 | 56.62d |
| 508 |  | ESTABILIZACIÓN DE TALUDES EN PLATAFORMA Y RECONFORMACION FINAL WP3 | 12d | 2027-04-30 | 2027-05-13 | 506SS+2d, 457, 507SS+2d | 58.62d |
| 509 |  | HITO: FINALIZACION DE ACTIVIDADES EN CIMENTACION WP3 | 0d | 2027-05-13 | 2027-05-13 | 508, 492 | 94.62d |
| 510 | 10.25 | **CIMENTACION WP4** | 72d | 2027-03-03 | 2027-05-22 |  | 18.62d |
| 511 |  | LOCALIZACION, REPLANTEO Y DESBROCE DE AREA DE ACOPIO DE TORRE Y DE PALAS WP4 | 8d | 2027-03-03 | 2027-03-11 | 494, 15 | 18.62d |
| 512 |  | EXCAVACIÓN DE CIMENTACION WP4 | 7d | 2027-03-11 | 2027-03-18 | 511, 461, 495 | 21.62d |
| 513 |  | BANCO DE DUCTO WP4 | 3d | 2027-03-18 | 2027-03-23 | 512 | 22.62d |
| 514 |  | COMPACTACION DE SELLO DE BASE WP4 | 4d | 2027-03-23 | 2027-03-30 | 513 | 22.62d |
| 515 |  | SOLADO WP4 | 2d | 2027-03-30 | 2027-03-31 | 514, 466 | 22.62d |
| 516 |  | INSTALACIÓN DE PERNOS Y SOFT-SPOT WP4 | 5d | 2027-03-31 | 2027-04-06 | 515 | 22.62d |
| 517 |  | INSTALACIÓN DE ACERO DE REFUERZO WP4 | 15d | 2027-04-06 | 2027-04-21 | 516 | 22.62d |
| 518 |  | ENCOFRADO DE ZAPATA Y DE PEDESTAL WP4 | 3d | 2027-04-22 | 2027-04-24 | 517 | 52.62d |
| 519 |  | HITO: ALISTAMIENTO Y MOVILIZACIÓN DE PLANTA DE CONCRETO PARA WP4 | 0d | 2027-04-21 | 2027-04-21 | 517 | 55.62d |
| 520 |  | FUNDIDA WP4 | 1d | 2027-04-24 | 2027-04-26 | 518, 519 | 52.62d |
| 521 |  | CURADO DEL CONCRETO WP4 | 7d | 2027-04-26 | 2027-05-03 | 520 | 52.62d |
| 522 |  | INSTALACIONES ELECTRICAS Y SISTEMA PUESTA TIERRAWP4 | 3d | 2027-05-04 | 2027-05-06 | 521 | 52.62d |
| 523 |  | INSTALACION DE GROUT Y MORTERO AUTOCOMPACTANTE DE ALTA RESISTENCIA WP4 | 2d | 2027-05-06 | 2027-05-08 | 522 | 52.62d |
| 524 |  | TAPADO AREA DE CIMENTACIÓN Y CONFORMACIÓN DE PLATAFORMA WP4 | 10d | 2027-05-06 | 2027-05-18 | 522, 472, 473 | 52.62d |
| 525 |  | ESTABILIZACIÓN DE TALUDES EN PLATAFORMA Y RECONFORMACION FINAL WP4 | 12d | 2027-05-08 | 2027-05-22 | 523SS+2d, 474, 524SS+2d | 52.62d |
| 526 |  | HITO: FINALIZACION DE ACTIVIDADES EN CIMENTACION WP4 | 0d | 2027-05-22 | 2027-05-22 | 525, 509 | 86.62d |
| 527 | 10.26 | **CIMENTACION WP2** | 72d | 2027-03-11 | 2027-06-01 |  | 18.62d |
| 528 |  | LOCALIZACION, REPLANTEO Y DESBROCE DE AREA DE ACOPIO DE TORRE Y DE PALAS WP2 | 8d | 2027-03-11 | 2027-03-19 | 511, 16 | 18.62d |
| 529 |  | EXCAVACIÓN DE CIMENTACION WP2 | 7d | 2027-03-19 | 2027-03-30 | 528, 478, 512 | 20.62d |
| 530 |  | BANCO DE DUCTO WP2 | 3d | 2027-03-31 | 2027-04-02 | 529 | 34.62d |
| 531 |  | COMPACTACION DE SELLO DE BASE WP2 | 4d | 2027-04-02 | 2027-04-07 | 529, 530 | 34.62d |
| 532 |  | SOLADO WP2 | 2d | 2027-04-07 | 2027-04-09 | 531, 483 | 34.62d |
| 533 |  | INSTALACIÓN DE PERNOS Y SOFT-SPOT WP2 | 5d | 2027-04-09 | 2027-04-14 | 532 | 34.62d |
| 534 |  | INSTALACIÓN DE ACERO DE REFUERZO WP2 | 15d | 2027-04-14 | 2027-04-30 | 533 | 34.62d |
| 535 |  | ENCOFRADO DE ZAPATA Y DE PEDESTAL WP2 | 3d | 2027-04-30 | 2027-05-03 | 534 | 54.62d |
| 536 |  | HITO: ALISTAMIENTO Y MOVILIZACIÓN DE PLANTA DE CONCRETO PARA WP2 | 0d | 2027-04-30 | 2027-04-30 | 534 | 57.62d |
| 537 |  | FUNDIDA WP2 | 1d | 2027-05-04 | 2027-05-04 | 535, 536 | 54.62d |
| 538 |  | CURADO DEL CONCRETO WP2 | 7d | 2027-05-04 | 2027-05-13 | 537 | 54.62d |
| 539 |  | INSTALACIONES ELECTRICAS Y SISTEMA PUESTA TIERRA WP2 | 3d | 2027-05-13 | 2027-05-15 | 538 | 54.62d |
| 540 |  | INSTALACION DE GROUT Y MORTERO AUTOCOMPACTANTE DE ALTA RESISTENCIA WP2 | 2d | 2027-05-15 | 2027-05-18 | 539 | 54.62d |
| 541 |  | TAPADO AREA DE CIMENTACIÓN Y CONFORMACIÓN DE PLATAFORMA WP2 | 10d | 2027-05-15 | 2027-05-26 | 539, 489, 490 | 54.62d |
| 542 |  | ESTABILIZACIÓN DE TALUDES EN PLATAFORMA Y RECONFORMACION FINAL WP2 | 12d | 2027-05-18 | 2027-06-01 | 540SS+2d, 491, 541SS+2d | 54.62d |
| 543 |  | HITO: FINALIZACION DE ACTIVIDADES EN CIMENTACION WP2 | 0d | 2027-06-01 | 2027-06-01 | 542, 526 | 78.62d |
| 544 | 10.27 | **CIMENTACION WP43** | 71d | 2027-03-19 | 2027-06-09 |  | 18.62d |
| 545 |  | LOCALIZACION, REPLANTEO Y DESBROCE DE AREA DE ACOPIO DE TORRE Y DE PALAS WP43 | 7d | 2027-03-19 | 2027-03-30 | 528, 16 | 18.62d |
| 546 |  | EXCAVACIÓN DE CIMENTACION WP43 | 7d | 2027-03-31 | 2027-04-07 | 545, 495, 529 | 20.62d |
| 547 |  | BANCO DE DUCTO WP43 | 3d | 2027-04-07 | 2027-04-09 | 546 | 43.62d |
| 548 |  | COMPACTACION DE SELLO DE BASE WP43 | 4d | 2027-04-10 | 2027-04-14 | 547 | 43.62d |
| 549 |  | SOLADO WP43 | 2d | 2027-04-14 | 2027-04-16 | 548, 500 | 43.62d |
| 550 |  | INSTALACIÓN DE PERNOS Y SOFT-SPOT WP43 | 5d | 2027-04-16 | 2027-04-21 | 549 | 43.62d |
| 551 |  | INSTALACIÓN DE ACERO DE REFUERZO WP43 | 15d | 2027-04-22 | 2027-05-07 | 550 | 43.62d |
| 552 |  | ENCOFRADO DE ZAPATA Y DE PEDESTAL WP43 | 3d | 2027-05-07 | 2027-05-12 | 551 | 43.62d |
| 553 |  | HITO: ALISTAMIENTO Y MOVILIZACIÓN DE PLANTA DE CONCRETO PARA WP43 | 0d | 2027-05-07 | 2027-05-07 | 551 | 46.62d |
| 554 |  | FUNDIDA WP43 | 1d | 2027-05-12 | 2027-05-13 | 552, 553 | 43.62d |
| 555 |  | CURADO DEL CONCRETO WP43 | 7d | 2027-05-13 | 2027-05-20 | 554 | 43.62d |
| 556 |  | INSTALACIONES ELECTRICAS Y SISTEMA PUESTA TIERRA WP43 | 3d | 2027-05-20 | 2027-05-24 | 555 | 43.62d |
| 557 |  | INSTALACION DE GROUT Y MORTERO AUTOCOMPACTANTE DE ALTA RESISTENCIA WP43 | 2d | 2027-05-24 | 2027-05-25 | 556 | 47.62d |
| 558 |  | TAPADO AREA DE CIMENTACIÓN Y CONFORMACIÓN DE PLATAFORMA WP43 | 10d | 2027-05-24 | 2027-06-04 | 556, 506, 507 | 43.62d |
| 559 |  | ESTABILIZACIÓN DE TALUDES EN PLATAFORMA Y RECONFORMACION FINAL WP43 | 12d | 2027-05-26 | 2027-06-09 | 557SS+2d, 508, 558SS+2d | 47.62d |
| 560 |  | HITO: FINALIZACION DE ACTIVIDADES EN CIMENTACION WP43 | 0d | 2027-06-09 | 2027-06-09 | 559, 543 | 71.62d |

| ID | WBS | Task | Duration | Start | Finish | Predecessors | Total float |
| --- | --- | --- | --- | --- | --- | --- | --- |
| 561 | 10.28 | **CIMENTACION WP29** | 71d | 2027-03-31 | 2027-06-16 |  | 18.62d |
| 562 |  | LOCALIZACION, REPLANTEO Y DESBROCE DE AREA DE ACOPIO DE TORRE Y DE PALAS WP29 | 7d | 2027-03-31 | 2027-04-07 | 545, 12, 13, 14 | 18.62d |
| 563 |  | EXCAVACIÓN DE CIMENTACION WP29 | 7d | 2027-04-07 | 2027-04-14 | 562, 512, 546 | 20.62d |
| 564 |  | BANCO DE DUCTO WP29 | 3d | 2027-04-14 | 2027-04-17 | 563 | 22.62d |
| 565 |  | COMPACTACION DE SELLO DE BASE WP29 | 4d | 2027-04-17 | 2027-04-21 | 564 | 22.62d |
| 566 |  | SOLADO WP29 | 2d | 2027-04-22 | 2027-04-23 | 565, 517 | 22.62d |
| 567 |  | INSTALACIÓN DE PERNOS Y SOFT-SPOT WP29 | 5d | 2027-04-23 | 2027-04-29 | 566 | 22.62d |
| 568 |  | INSTALACIÓN DE ACERO DE REFUERZO WP29 | 15d | 2027-04-29 | 2027-05-15 | 567 | 22.62d |
| 569 |  | ENCOFRADO DE ZAPATA Y DE PEDESTAL WP29 | 3d | 2027-05-15 | 2027-05-19 | 568 | 42.62d |
| 570 |  | HITO: ALISTAMIENTO Y MOVILIZACIÓN DE PLANTA DE CONCRETO PARA WP29 | 0d | 2027-05-15 | 2027-05-15 | 568 | 45.62d |
| 571 |  | FUNDIDA WP29 | 1d | 2027-05-19 | 2027-05-20 | 569, 570 | 42.62d |
| 572 |  | CURADO DEL CONCRETO WP29 | 7d | 2027-05-20 | 2027-05-27 | 571 | 42.62d |
| 573 |  | INSTALACIONES ELECTRICAS Y SISTEMA PUESTA TIERRA WP29 | 3d | 2027-05-27 | 2027-06-01 | 572 | 42.62d |
| 574 |  | INSTALACION DE GROUT Y MORTERO AUTOCOMPACTANTE DE ALTA RESISTENCIA WP29 | 2d | 2027-06-01 | 2027-06-03 | 573 | 42.62d |
| 575 |  | TAPADO AREA DE CIMENTACIÓN Y CONFORMACIÓN DE PLATAFORMA WP29 | 10d | 2027-06-01 | 2027-06-12 | 573, 523, 524 | 42.62d |
| 576 |  | ESTABILIZACIÓN DE TALUDES EN PLATAFORMA Y RECONFORMACION FINAL WP29 | 12d | 2027-06-03 | 2027-06-16 | 574SS+2d, 525, 575SS+2d | 42.62d |
| 577 |  | HITO: FINALIZACION DE ACTIVIDADES EN CIMENTACION WP29 | 0d | 2027-06-16 | 2027-06-16 | 576, 560 | 64.62d |
| 578 | 10.29 | **CIMENTACION WP30** | 72d | 2027-04-07 | 2027-06-25 |  | 18.62d |
| 579 |  | LOCALIZACION, REPLANTEO Y DESBROCE DE AREA DE ACOPIO DE TORRE Y DE PALAS WP30 | 7d | 2027-04-07 | 2027-04-14 | 562, 12, 13, 14 | 18.62d |
| 580 |  | EXCAVACIÓN DE CIMENTACION WP30 | 7d | 2027-04-14 | 2027-04-21 | 579, 529, 563 | 20.62d |
| 581 |  | BANCO DE DUCTO WP30 | 3d | 2027-04-22 | 2027-04-24 | 580 | 35.62d |
| 582 |  | COMPACTACION DE SELLO DE BASE WP30 | 4d | 2027-04-24 | 2027-04-29 | 581 | 35.62d |
| 583 |  | SOLADO WP30 | 2d | 2027-04-30 | 2027-05-01 | 582, 534 | 34.62d |
| 584 |  | INSTALACIÓN DE PERNOS Y SOFT-SPOT WP30 | 5d | 2027-05-03 | 2027-05-07 | 583 | 34.62d |
| 585 |  | INSTALACIÓN DE ACERO DE REFUERZO WP30 | 15d | 2027-05-07 | 2027-05-25 | 584 | 34.62d |
| 586 |  | ENCOFRADO DE ZAPATA Y DE PEDESTAL WP30 | 3d | 2027-05-25 | 2027-05-27 | 585 | 44.62d |
| 587 |  | HITO: ALISTAMIENTO Y MOVILIZACIÓN DE PLANTA DE CONCRETO PARA WP30 | 0d | 2027-05-25 | 2027-05-25 | 585 | 47.62d |
| 588 |  | FUNDIDA WP30 | 1d | 2027-05-27 | 2027-05-28 | 586, 587 | 44.62d |
| 589 |  | CURADO DEL CONCRETO WP30 | 7d | 2027-05-28 | 2027-06-05 | 588 | 44.62d |
| 590 |  | INSTALACIONES ELECTRICAS Y SISTEMA PUESTA TIERRA WP30 | 3d | 2027-06-05 | 2027-06-10 | 589 | 44.62d |
| 591 |  | INSTALACION DE GROUT Y MORTERO AUTOCOMPACTANTE DE ALTA RESISTENCIA WP30 | 2d | 2027-06-10 | 2027-06-12 | 590 | 44.62d |
| 592 |  | TAPADO AREA DE CIMENTACIÓN Y CONFORMACIÓN DE PLATAFORMA WP30 | 10d | 2027-06-10 | 2027-06-21 | 590, 540, 541 | 44.62d |
| 593 |  | ESTABILIZACIÓN DE TALUDES EN PLATAFORMA Y RECONFORMACION FINAL WP30 | 12d | 2027-06-12 | 2027-06-25 | 591SS+2d, 542, 592SS+2d | 44.62d |
| 594 |  | HITO: FINALIZACION DE ACTIVIDADES EN CIMENTACION WP30 | 0d | 2027-06-25 | 2027-06-25 | 593, 577 | 56.62d |
| 595 | 10.30 | **CIMENTACION WP31** | 71d | 2027-04-14 | 2027-07-01 |  | 18.62d |
| 596 |  | LOCALIZACION, REPLANTEO Y DESBROCE DE AREA DE ACOPIO DE TORRE Y DE PALAS WP31 | 7d | 2027-04-14 | 2027-04-21 | 579, 12, 13, 14 | 18.62d |
| 597 |  | EXCAVACIÓN DE CIMENTACION WP31 | 7d | 2027-04-22 | 2027-04-29 | 596, 546, 580 | 20.62d |
| 598 |  | BANCO DE DUCTO WP31 | 3d | 2027-04-29 | 2027-05-01 | 597 | 20.62d |
| 599 |  | COMPACTACION DE SELLO DE BASE WP31 | 4d | 2027-05-03 | 2027-05-06 | 598 | 20.62d |
| 600 |  | SOLADO WP31 | 2d | 2027-05-06 | 2027-05-08 | 599 | 20.62d |
| 601 |  | INSTALACIÓN DE PERNOS Y SOFT-SPOT WP31 | 5d | 2027-05-08 | 2027-05-14 | 600 | 20.62d |
| 602 |  | INSTALACIÓN DE ACERO DE REFUERZO WP31 | 15d | 2027-05-14 | 2027-06-01 | 601 | 20.62d |
| 603 |  | ENCOFRADO DE ZAPATA Y DE PEDESTAL WP31 | 3d | 2027-06-01 | 2027-06-04 | 602 | 32.62d |
| 604 |  | HITO: ALISTAMIENTO Y MOVILIZACIÓN DE PLANTA DE CONCRETO PARA WP31 | 0d | 2027-06-01 | 2027-06-01 | 602 | 35.62d |
| 605 |  | FUNDIDA WP31 | 1d | 2027-06-04 | 2027-06-04 | 603, 604 | 32.62d |
| 606 |  | CURADO DEL CONCRETO WP31 | 7d | 2027-06-05 | 2027-06-14 | 605 | 32.62d |
| 607 |  | INSTALACIONES ELECTRICAS Y SISTEMA PUESTA TIERRA WP31 | 3d | 2027-06-14 | 2027-06-16 | 606 | 32.62d |
| 608 |  | INSTALACION DE GROUT Y MORTERO AUTOCOMPACTANTE DE ALTA RESISTENCIA WP31 | 2d | 2027-06-17 | 2027-06-18 | 607 | 38.62d |
| 609 |  | TAPADO AREA DE CIMENTACIÓN Y CONFORMACIÓN DE PLATAFORMA WP31 | 10d | 2027-06-17 | 2027-06-26 | 607, 557, 558 | 32.62d |
| 610 |  | ESTABILIZACIÓN DE TALUDES EN PLATAFORMA Y RECONFORMACION FINAL WP31 | 12d | 2027-06-18 | 2027-07-01 | 608SS+2d, 559, 609SS+2d | 38.62d |
| 611 |  | HITO: FINALIZACION DE ACTIVIDADES EN CIMENTACION WP31 | 0d | 2027-07-01 | 2027-07-01 | 610, 594 | 50.62d |
| 612 | 10.31 | **CIMENTACION WP35** | 72d | 2027-04-22 | 2027-07-10 |  | 18.62d |
| 613 |  | LOCALIZACION, REPLANTEO Y DESBROCE DE AREA DE ACOPIO DE TORRE Y DE PALAS WP35 | 8d | 2027-04-22 | 2027-04-30 | 596, 18, 20, 19, 17 | 18.62d |
| 614 |  | EXCAVACIÓN DE CIMENTACION WP35 | 7d | 2027-04-30 | 2027-05-07 | 613, 563, 597 | 20.62d |
| 615 |  | BANCO DE DUCTO WP35 | 3d | 2027-05-07 | 2027-05-12 | 614 | 22.62d |
| 616 |  | COMPACTACION DE SELLO DE BASE WP35 | 4d | 2027-05-12 | 2027-05-15 | 615 | 22.62d |
| 617 |  | SOLADO WP35 | 2d | 2027-05-15 | 2027-05-18 | 616, 568 | 22.62d |
| 618 |  | INSTALACIÓN DE PERNOS Y SOFT-SPOT WP35 | 5d | 2027-05-18 | 2027-05-24 | 617 | 22.62d |
| 619 |  | INSTALACIÓN DE ACERO DE REFUERZO WP35 | 15d | 2027-05-24 | 2027-06-10 | 618 | 22.62d |
| 620 |  | ENCOFRADO DE ZAPATA Y DE PEDESTAL WP35 | 3d | 2027-06-10 | 2027-06-14 | 619 | 32.62d |
| 621 |  | HITO: ALISTAMIENTO Y MOVILIZACIÓN DE PLANTA DE CONCRETO PARA WP35 | 0d | 2027-06-10 | 2027-06-10 | 619 | 35.62d |
| 622 |  | FUNDIDA WP35 | 1d | 2027-06-14 | 2027-06-15 | 620, 621 | 32.62d |
| 623 |  | CURADO DEL CONCRETO WP35 | 7d | 2027-06-15 | 2027-06-22 | 622 | 32.62d |
| 624 |  | INSTALACIONES ELECTRICAS Y SISTEMA PUESTA TIERRA WP35 | 3d | 2027-06-22 | 2027-06-25 | 623 | 32.62d |
| 625 |  | INSTALACION DE GROUT Y MORTERO AUTOCOMPACTANTE DE ALTA RESISTENCIA WP35 | 2d | 2027-06-25 | 2027-06-26 | 624 | 32.62d |
| 626 |  | TAPADO AREA DE CIMENTACIÓN Y CONFORMACIÓN DE PLATAFORMA WP35 | 10d | 2027-06-25 | 2027-07-07 | 624, 574, 575 | 32.62d |
| 627 |  | ESTABILIZACIÓN DE TALUDES EN PLATAFORMA Y RECONFORMACION FINAL WP35 | 12d | 2027-06-28 | 2027-07-10 | 625, 576, 626SS+2d | 32.62d |
| 628 |  | HITO: FINALIZACION DE ACTIVIDADES EN CIMENTACION WP35 | 0d | 2027-07-10 | 2027-07-10 | 627, 611 | 42.62d |
| 629 | 10.32 | **CIMENTACION WP34** | 72d | 2027-04-30 | 2027-07-21 |  | 18.62d |
| 630 |  | LOCALIZACION, REPLANTEO Y DESBROCE DE AREA DE ACOPIO DE TORRE Y DE PALAS WP34 | 8d | 2027-04-30 | 2027-05-08 | 613, 18, 20, 19, 17 | 18.62d |

| ID | WBS | Task | Duration | Start | Finish | Predecessors | Total float |
| --- | --- | --- | --- | --- | --- | --- | --- |
| 631 |  | EXCAVACIÓN DE CIMENTACION WP34 | 7d | 2027-05-08 | 2027-05-17 | 630, 580, 614 | 19.62d |
| 632 |  | BANCO DE DUCTO WP34 | 3d | 2027-05-17 | 2027-05-20 | 631 | 34.62d |
| 633 |  | COMPACTACION DE SELLO DE BASE WP34 | 4d | 2027-05-20 | 2027-05-25 | 632 | 34.62d |
| 634 |  | SOLADO WP34 | 2d | 2027-05-25 | 2027-05-26 | 633, 585 | 34.62d |
| 635 |  | INSTALACIÓN DE PERNOS Y SOFT-SPOT WP34 | 5d | 2027-05-26 | 2027-06-02 | 634 | 34.62d |
| 636 |  | INSTALACIÓN DE ACERO DE REFUERZO WP34 | 15d | 2027-06-02 | 2027-06-18 | 635 | 34.62d |
| 637 |  | ENCOFRADO DE ZAPATA Y DE PEDESTAL WP34 | 3d | 2027-06-18 | 2027-06-22 | 636 | 34.62d |
| 638 |  | HITO: ALISTAMIENTO Y MOVILIZACIÓN DE PLANTA DE CONCRETO PARA WP34 | 0d | 2027-06-18 | 2027-06-18 | 636 | 37.62d |
| 639 |  | FUNDIDA WP34 | 1d | 2027-06-22 | 2027-06-23 | 637, 638 | 34.62d |
| 640 |  | CURADO DEL CONCRETO WP34 | 7d | 2027-06-23 | 2027-06-30 | 639 | 34.62d |
| 641 |  | INSTALACIONES ELECTRICAS Y SISTEMA PUESTA TIERRA WP34 | 3d | 2027-06-30 | 2027-07-03 | 640 | 34.62d |
| 642 |  | INSTALACION DE GROUT Y MORTERO AUTOCOMPACTANTE DE ALTA RESISTENCIA WP34 | 2d | 2027-07-03 | 2027-07-07 | 641 | 34.62d |
| 643 |  | TAPADO AREA DE CIMENTACIÓN Y CONFORMACIÓN DE PLATAFORMA WP34 | 10d | 2027-07-03 | 2027-07-16 | 641, 591, 592 | 34.62d |
| 644 |  | ESTABILIZACIÓN DE TALUDES EN PLATAFORMA Y RECONFORMACION FINAL WP34 | 12d | 2027-07-07 | 2027-07-21 | 642, 593, 643SS+2d | 34.62d |
| 645 |  | HITO: FINALIZACION DE ACTIVIDADES EN CIMENTACION WP34 | 0d | 2027-07-21 | 2027-07-21 | 644, 628 | 34.62d |
| 646 | 10.33 | **CIMENTACION WP33** | 72d | 2027-05-08 | 2027-07-30 |  | 18.62d |
| 647 |  | LOCALIZACION, REPLANTEO Y DESBROCE DE AREA DE ACOPIO DE TORRE Y DE PALAS WP33 | 8d | 2027-05-08 | 2027-05-18 | 630, 18, 20, 19, 17 | 18.62d |
| 648 |  | EXCAVACIÓN DE CIMENTACION WP33 | 7d | 2027-05-18 | 2027-05-25 | 647, 597, 631 | 18.62d |
| 649 |  | BANCO DE DUCTO WP33 | 3d | 2027-05-26 | 2027-05-28 | 648 | 18.62d |
| 650 |  | COMPACTACION DE SELLO DE BASE WP33 | 4d | 2027-05-28 | 2027-06-03 | 649 | 18.62d |
| 651 |  | SOLADO WP33 | 2d | 2027-06-03 | 2027-06-04 | 650, 602 | 18.62d |
| 652 |  | INSTALACIÓN DE PERNOS Y SOFT-SPOT WP33 | 5d | 2027-06-05 | 2027-06-11 | 651 | 18.62d |
| 653 |  | INSTALACIÓN DE ACERO DE REFUERZO WP33 | 15d | 2027-06-11 | 2027-06-26 | 652 | 18.62d |
| 654 |  | ENCOFRADO DE ZAPATA Y DE PEDESTAL WP33 | 3d | 2027-06-28 | 2027-06-30 | 653 | 18.62d |
| 655 |  | HITO: ALISTAMIENTO Y MOVILIZACIÓN DE PLANTA DE CONCRETO PARA WP33 | 0d | 2027-06-26 | 2027-06-26 | 653 | 21.62d |
| 656 |  | FUNDIDA WP33 | 1d | 2027-06-30 | 2027-07-01 | 654, 655 | 18.62d |
| 657 |  | CURADO DEL CONCRETO WP33 | 7d | 2027-07-01 | 2027-07-09 | 656 | 18.62d |
| 658 |  | INSTALACIONES ELECTRICAS Y SISTEMA PUESTA TIERRA WP33 | 3d | 2027-07-09 | 2027-07-14 | 657 | 18.62d |
| 659 |  | INSTALACION DE GROUT Y MORTERO AUTOCOMPACTANTE DE ALTA RESISTENCIA WP33 | 2d | 2027-07-14 | 2027-07-16 | 658 | 26.62d |
| 660 |  | TAPADO AREA DE CIMENTACIÓN Y CONFORMACIÓN DE PLATAFORMA WP33 | 10d | 2027-07-14 | 2027-07-26 | 658, 608, 609 | 18.62d |
| 661 |  | ESTABILIZACIÓN DE TALUDES EN PLATAFORMA Y RECONFORMACION FINAL WP33 | 12d | 2027-07-16 | 2027-07-30 | 659, 610, 660SS+2d | 26.62d |
| 662 |  | HITO: FINALIZACION DE ACTIVIDADES EN CIMENTACION WP33 | 0d | 2027-07-30 | 2027-07-30 | 661, 645 | 26.62d |
| 663 | 10.34 | **CIMENTACION WP32** | 72d | 2027-05-18 | 2027-08-07 |  | 18.62d |
| 664 |  | LOCALIZACION, REPLANTEO Y DESBROCE DE AREA DE ACOPIO DE TORRE Y DE PALAS WP32 | 8d | 2027-05-18 | 2027-05-26 | 647, 18, 20, 19, 17 | 20.62d |
| 665 |  | EXCAVACIÓN DE CIMENTACION WP32 | 7d | 2027-05-26 | 2027-06-04 | 664, 614 | 20.62d |
| 666 |  | BANCO DE DUCTO WP32 | 3d | 2027-06-04 | 2027-06-08 | 665 | 20.62d |
| 667 |  | COMPACTACION DE SELLO DE BASE WP32 | 4d | 2027-06-08 | 2027-06-12 | 666 | 20.62d |
| 668 |  | SOLADO WP32 | 2d | 2027-06-12 | 2027-06-15 | 667, 619 | 20.62d |
| 669 |  | INSTALACIÓN DE PERNOS Y SOFT-SPOT WP32 | 5d | 2027-06-15 | 2027-06-19 | 668 | 20.62d |
| 670 |  | INSTALACIÓN DE ACERO DE REFUERZO WP32 | 15d | 2027-06-19 | 2027-07-07 | 669 | 20.62d |
| 671 |  | ENCOFRADO DE ZAPATA Y DE PEDESTAL WP32 | 3d | 2027-07-07 | 2027-07-09 | 670 | 20.62d |
| 672 |  | HITO: ALISTAMIENTO Y MOVILIZACIÓN DE PLANTA DE CONCRETO PARA WP32 | 0d | 2027-07-07 | 2027-07-07 | 670 | 23.62d |
| 673 |  | FUNDIDA WP32 | 1d | 2027-07-09 | 2027-07-10 | 671, 672 | 20.62d |
| 674 |  | CURADO DEL CONCRETO WP32 | 7d | 2027-07-10 | 2027-07-21 | 673 | 20.62d |
| 675 |  | INSTALACIONES ELECTRICAS Y SISTEMA PUESTA TIERRA WP32 | 3d | 2027-07-21 | 2027-07-23 | 674 | 20.62d |
| 676 |  | INSTALACION DE GROUT Y MORTERO AUTOCOMPACTANTE DE ALTA RESISTENCIA WP32 | 2d | 2027-07-23 | 2027-07-26 | 675 | 20.62d |
| 677 |  | TAPADO AREA DE CIMENTACIÓN Y CONFORMACIÓN DE PLATAFORMA WP32 | 10d | 2027-07-26 | 2027-08-05 | 675, 660, 626 | 18.62d |
| 678 |  | ESTABILIZACIÓN DE TALUDES EN PLATAFORMA Y RECONFORMACION FINAL WP32 | 10d | 2027-07-28 | 2027-08-07 | 676, 627, 677SS+2d | 18.62d |
| 679 |  | HITO: FINALIZACION DE ACTIVIDADES EN CIMENTACION WP32 | 0d | 2027-08-07 | 2027-08-07 | 678, 662 | 18.62d |
| 680 |  | HITO 4: FIN DE CIMENTACIONES NUEVAS | 0d | 2027-08-07 | 2027-08-07 | 678, 30, 29, 661, 644, 677, 643, 679 | 18.62d |
| 681 | 11 | **EJECUCIÓN DE ACTIVIDADES CONFORMACIÓN DE ZODMES** | 301.38d | 2026-09-05 | 2027-08-07 |  | 0d |
| 682 |  | CONFORMACIÓN DE ZODMES 1,3,4,6,8 | 120d | 2026-09-05 | 2027-01-18 | 38 | 0d |
| 683 |  | CONFORMACIÓN DE ZODMES 2,5,7 | 100d | 2026-09-08 | 2026-12-28 | 137 | 107.75d |
| 684 |  | CONFORMACIÓN DE ZODMES 9,10,11,12,14 | 160d | 2026-10-08 | 2027-04-07 | 205 | 128.88d |
| 685 |  | CONFORMACIÓN DE ZODMES 13,15,16,18 | 140d | 2027-01-18 | 2027-06-22 | 273SS, 682 | 0d |
| 686 |  | CONFORMACIÓN DE ZODMES 17,19,20,21 | 110d | 2027-04-07 | 2027-08-07 | 562, 683 | 18.62d |
| 687 | 12 | **EJECUCIÓN DE ACTIVIDADES POR LLAMADO DE MAQUINARIA, EQUIPOS Y PERSONAL** | 60d | 2027-06-22 | 2027-08-28 |  | 0d |
| 688 |  | EQUIPOS Y/O HERRAMIENTAS POR LLLAMADO | 60d | 2027-06-22 | 2027-08-28 | 28, 25, 685 | 0d |
| 689 |  | ACTIVIDADES Y SUMINISTRO DE PERSONAL POR LLAMADO | 60d | 2027-06-22 | 2027-08-28 | 25, 28, 685 | 0d |
| 690 |  | HITO 5: FIN DE ACTIVIDADES DE OBRA | 0d | 2027-08-28 | 2027-08-28 | 678, 30, 29, 680, 684, 685, 686, 660, 688, 689 | 0d |
| 691 | 14 | **ACTIVIDADES FINALES** | 9d | 2027-08-28 | 2027-09-07 |  | 0d |
| 692 |  | DESMOVILIZACION | 9d | 2027-08-28 | 2027-09-07 | 690, 35 | 0d |
| 693 |  | CIERRES ADMINISTRATIVOS Y GESTIÓN DE ENTORNO FINAL | 9d | 2027-08-28 | 2027-09-07 | 690 | 0d |
| 694 |  | CONFORMACIÓN Y ENTREGA DE DOSSIER | 9d | 2027-08-28 | 2027-09-07 | 690 | 0d |
| 695 |  | HITO 6: ACTA DE TERMINACIÓN DE LA ODS | 0d | 2027-09-07 | 2027-09-07 | 678, 30, 29, 680, 692, 693, 694 | 0d |

## Version 2 (data date 2026-09-18, saved 2026-09-21, file PDT_ODS02_Informe_Semanal_N10_18-09-2026.mpp)

Note of the change: Initial commit: Visor geográfico de torres Windpeshi

Last finish stays 2027-09-07. Complete tasks 17 → 19.

Changed:

| ID | Task | Start | Finish | Duration | Complete | Total float |
| --- | --- | --- | --- | --- | --- | --- |
| 6 | **SOCIALIZACIÓN CON COMUNIDADES** | 2026-07-15 A → 2026-07-29 A (+14d) | 2026-08-21 → 2026-09-05 (+15d) | 32.25d → 35.5d |  | 238.75d → 223.25d |
| 7 | REUNIONES RIO PATAJATAMA | 2026-07-15 A → 2026-08-12 A (+28d) | 2026-07-15 A → 2026-08-12 A (+28d) |  |  |  |
| 8 | REUNIONES RIO ROMANA | 2026-07-15 A → 2026-07-29 A (+14d) | 2026-07-15 A → 2026-07-29 A (+14d) |  |  |  |
| 9 | REUNIONES RIO UTKAP | 2026-07-15 A → 2026-08-10 A (+26d) | 2026-07-15 A → 2026-08-10 A (+26d) |  |  |  |
| 10 | REUNIONES RIO CALINCHON | 2026-07-15 A → 2026-08-14 A (+30d) | 2026-07-15 A → 2026-08-14 A (+30d) |  |  |  |
| 11 | REUNIONES RIO CAÑAVERAL | 2026-07-15 A → 2026-08-27 A (+43d) | 2026-07-15 A → 2026-08-27 A (+43d) |  |  |  |
| 12 | REUNIONES RIO KAMUSHIPA | 2026-07-15 A → 2026-07-31 A (+16d) | 2026-07-15 A → 2026-07-31 A (+16d) |  |  |  |
| 13 | REUNIONES RIO FLOR DE LA FRONTERA | 2026-07-15 A → 2026-07-30 A (+15d) | 2026-07-15 A → 2026-07-30 A (+15d) |  |  |  |
| 14 | REUNIONES RIO JAIKA KALINCHON | 2026-07-15 A → 2026-08-06 A (+22d) | 2026-07-15 A → 2026-08-06 A (+22d) |  |  |  |
| 15 | REUNIONES RIO MASHUMANA | 2026-07-15 A → 2026-08-03 A (+19d) | 2026-07-15 A → 2026-08-03 A (+19d) |  |  |  |
| 16 | REUNIONES RIO MASHUMANA WANE | 2026-07-15 A → 2026-08-04 A (+20d) | 2026-07-15 A → 2026-08-04 A (+20d) |  |  |  |
| 17 | REUNIONES RIO MATAJUNAY | 2026-07-15 → 2026-09-02 A (+49d) | 2026-07-15 → 2026-09-02 A (+49d) |  | 0% → 100% | 271d → none |
| 18 | REUNIONES RIO MANNAJUYAY | 2026-07-15 A → 2026-08-31 A (+47d) | 2026-07-15 A → 2026-08-31 A (+47d) |  |  |  |
| 19 | REUNIONES RIO WINPESHI | 2026-08-21 A → 2026-08-19 A (-2d) | 2026-08-21 A → 2026-08-19 A (-2d) |  |  |  |
| 20 | REUNIONES RIO JAMUCHERRU | 2026-08-18 → 2026-09-05 (+18d) | 2026-08-18 → 2026-09-05 (+18d) |  |  | 241d → 223.25d |
| 22 | **SUMINISTRO DE MATERIALES** |  | 2026-09-18 → 2026-09-25 (+7d) | 38d → 45d | 33% → 46% | 127d → 120d |
| 23 | SUMINISTRO DE MATERIALES CIVILES: ANCHOR CAGE (CLIENTE) |  | 2026-09-08 → 2026-09-25 (+17d) | 28d → 45d | 50% → 60% | 137d → 120d |
| 26 | **PISCINA INDUSTRIAL** | 2026-09-03 → 2026-09-18 A (+15d) | 2026-10-07 → 2026-10-22 (+15d) |  | 0% → 3% | 133d → 276.25d |
| 27 | MOVIMIENTO DE TIERRAS Y RECONFORMACION PISCINA INDUSTRIAL | 2026-09-03 → 2026-09-18 A (+15d) | 2026-09-18 → 2026-10-02 (+14d) |  | 0% → 10% | 133d → 119.25d |
| 28 | INSTALACION DE GEOMEMBRANA PISCINA INDUSTRIAL | 2026-09-18 → 2026-10-02 (+14d) | 2026-09-29 → 2026-10-14 (+15d) |  |  | 133d → 119.25d |
| 29 | CONSTRUCCION DE CERRAMIENTO EN ALAMBRE DE PUA PISCINA INDUSTRIAL | 2026-09-07 → 2026-09-21 (+14d) | 2026-09-21 → 2026-10-06 (+15d) |  |  | 305d → 291.25d |
| 30 | CONSTRUCCION CUNETA PERIMETRAL PISCINA INDUSTRIAL | 2026-09-29 → 2026-10-14 (+15d) | 2026-10-07 → 2026-10-22 (+15d) |  |  | 133d → 119.25d |
| 31 | **ZONAS DE CAMPAMENTOS - FAENAS** |  | 2027-07-17 → 2027-08-05 (+19d) | 302d → 318d | 4% → 11% | 37d → 21d |
| 32 | CONFORMACIÓN DEL AREA ZONAS DE CAMPAMENTOS - FAENAS |  | 2026-09-12 → 2026-09-10 A (-2d) | 25.4d → 24d | 50% → 100% | 0d → none |
| 33 | INSTALACIÓN DE CONTENEDORES Y EQUIPOS ZONAS DE CAMPAMENTOS - FAENAS |  | 2026-09-08 → 2026-09-24 (+16d) | 14d → 30d | 10% → 50% | 37d → 21d |
| 34 | INSTALACIÓN DE LAS FACILIDADES ELECTRICAS E HIDRÚALICAS DE LOS CONTENEDORES ZONAS DE CAMPAMENTOS - FAENAS | 2026-09-08 → 2026-09-24 (+16d) | 2026-09-16 → 2026-10-02 (+16d) |  |  | 37d → 21d |
| 35 | ADMINISTRACIÓN Y MANTENIMIENTO DE CAMPAMENTOS | 2026-09-09 → 2026-09-25 (+16d) | 2027-07-17 → 2027-08-05 (+19d) |  |  | 37d → 21d |
| 36 | **EJECUCIÓN DE ACTIVIDADES DE CIMENTACIONES EXISTENTES** | 2026-07-25 → 2026-08-14 (+20d) | 2026-12-04 → 2026-12-09 (+5d) | 119.25d → 105.47d |  | 35.12d → 18.38d |
| 37 | **RECALCE 1 WP44** |  | 2026-11-03 → 2026-11-04 (+1d) | 55d → 56.75d |  |  |
| 41 | APLICACIÓN DE EPOXICO Y FIJACIÓN DEL ACERO WP44 | 2026-10-16 → 2026-10-17 (+1d) | 2026-10-21 → 2026-10-22 (+1d) |  |  | 121d → 120d |
| 42 | ENCONFRADO WP44 | 2026-10-21 → 2026-10-22 (+1d) | 2026-10-22 → 2026-10-23 (+1d) |  |  | 121d → 120d |
| 43 | VACIADO DE CONCRETO (APLICACIÓN PUENTE DE ADHERENCIA) WP44 | 2026-10-22 → 2026-10-23 (+1d) | 2026-10-23 → 2026-10-24 (+1d) |  |  | 121d → 119.25d |
| 44 | ADECUACIONES E INSTALACIONES ELECTRICAS REQUERIDAS WP44 | 2026-10-23 → 2026-10-24 (+1d) | 2026-10-26 → 2026-10-28 (+2d) |  |  | 125d → 123.25d |
| 45 | INSTALACION DE GROUT Y MORTERO AUTOCOMPACTANTE DE ALTA RESISTENCIA WP44 | 2026-10-30 → 2026-11-03 (+4d) | 2026-11-03 → 2026-11-04 (+1d) |  |  | 121d → 119.25d |
| 46 | **RECALCE 2 WP45** |  | 2026-10-31 → 2026-11-03 (+3d) | 61.75d → 63.5d |  |  |
| 50 | APLICACIÓN DE EPOXICO Y FIJACIÓN DEL ACERO WP45 | 2026-10-08 → 2026-10-13 (+5d) | 2026-10-14 → 2026-10-16 (+2d) |  |  | 137.75d → 134.78d |
| 51 | ENCONFRADO WP45 | 2026-10-14 → 2026-10-16 (+2d) | 2026-10-15 → 2026-10-17 (+2d) |  |  | 137.75d → 134.78d |
| 52 | VACIADO DE CONCRETO (APLICACIÓN PUENTE DE ADHERENCIA) WP45 | 2026-10-15 → 2026-10-17 (+2d) | 2026-10-15 → 2026-10-19 (+4d) |  |  | 137.75d → 134.78d |
| 53 | ADECUACIONES E INSTALACIONES ELECTRICAS REQUERIDAS WP45 | 2026-10-26 → 2026-10-28 (+2d) | 2026-10-29 → 2026-10-31 (+2d) |  |  | 128d → 126.25d |
| 54 | INSTALACION DE GROUT Y MORTERO AUTOCOMPACTANTE DE ALTA RESISTENCIA WP45 | 2026-10-29 → 2026-10-31 (+2d) | 2026-10-31 → 2026-11-03 (+3d) |  |  | 132d → 130.25d |
| 55 | **RECALCE 3 WP46** | 2026-09-02 → 2026-09-05 (+3d) | 2026-11-04 → 2026-11-06 (+2d) | 57.75d → 56.52d |  | 59.75d → 56.77d |
| 56 | LOCALIZACIÓN DEL ACERO WP46 | 2026-09-02 → 2026-09-05 (+3d) | 2026-09-04 → 2026-09-08 (+4d) |  |  | 59.75d → 56.77d |
| 57 | ESCARIFICADO Y LIMPIEZA DEL RECUBRIMIENTO WP46 | 2026-09-04 → 2026-09-08 (+4d) | 2026-09-10 → 2026-09-12 (+2d) |  |  | 59.75d → 56.77d |
| 58 | CORTE Y FIGURADO DE ACERO WP46 | 2026-09-10 → 2026-09-12 (+2d) | 2026-09-14 → 2026-09-17 (+3d) |  |  | 59.75d → 56.77d |
| 59 | APLICACIÓN DE EPOXICO Y FIJACIÓN DEL ACERO WP46 | 2026-10-16 → 2026-10-20 (+4d) | 2026-10-21 → 2026-10-24 (+3d) |  |  | 132.75d → 129.78d |
| 60 | ENCONFRADO WP46 | 2026-10-21 → 2026-10-24 (+3d) | 2026-10-22 → 2026-10-26 (+4d) |  |  | 132.75d → 129.78d |
| 61 | VACIADO DE CONCRETO (APLICACIÓN PUENTE DE ADHERENCIA) WP46 | 2026-10-22 → 2026-10-26 (+4d) | 2026-10-23 → 2026-10-27 (+4d) |  |  | 132.75d → 129.78d |
| 62 | ADECUACIONES E INSTALACIONES ELECTRICAS REQUERIDAS WP46 | 2026-10-29 → 2026-10-31 (+2d) | 2026-11-03 → 2026-11-04 (+1d) |  |  | 128d → 126.25d |
| 63 | INSTALACION DE GROUT Y MORTERO AUTOCOMPACTANTE DE ALTA RESISTENCIA WP46 | 2026-11-03 → 2026-11-04 (+1d) | 2026-11-04 → 2026-11-06 (+2d) |  |  | 131d → 129.25d |
| 64 | **RECALCE 4 WP47** | 2026-09-10 → 2026-09-12 (+2d) | 2026-11-10 → 2026-11-13 (+3d) |  |  | 125.75d → 122.78d |
| 65 | LOCALIZACIÓN DEL ACERO WP47 | 2026-09-10 → 2026-09-12 (+2d) | 2026-09-11 → 2026-09-15 (+4d) |  |  | 133.75d → 130.78d |
| 66 | ESCARIFICADO Y LIMPIEZA DEL RECUBRIMIENTO WP47 | 2026-09-12 → 2026-09-15 (+3d) | 2026-09-17 → 2026-09-21 (+4d) |  |  | 133.75d → 130.78d |
| 67 | CORTE Y FIGURADO DE ACERO WP47 | 2026-09-17 → 2026-09-21 (+4d) | 2026-09-22 → 2026-09-24 (+2d) |  |  | 133.75d → 130.78d |
| 68 | APLICACIÓN DE EPOXICO Y FIJACIÓN DEL ACERO WP47 | 2026-10-24 → 2026-10-27 (+3d) | 2026-10-28 → 2026-10-31 (+3d) |  |  | 125.75d → 122.78d |
| 69 | ENCONFRADO WP47 | 2026-10-28 → 2026-10-31 (+3d) | 2026-10-29 → 2026-11-03 (+5d) |  |  | 125.75d → 122.78d |
| 70 | VACIADO DE CONCRETO (APLICACIÓN PUENTE DE ADHERENCIA) WP47 | 2026-10-29 → 2026-11-03 (+5d) | 2026-10-30 → 2026-11-04 (+5d) |  |  | 125.75d → 122.78d |
| 71 | ADECUACIONES E INSTALACIONES ELECTRICAS REQUERIDAS WP47 | 2026-11-03 → 2026-11-04 (+1d) | 2026-11-05 → 2026-11-07 (+2d) |  |  | 128d → 126.25d |
| 72 | INSTALACION DE GROUT Y MORTERO AUTOCOMPACTANTE DE ALTA RESISTENCIA WP47 | 2026-11-07 → 2026-11-11 (+4d) | 2026-11-10 → 2026-11-13 (+3d) |  |  | 125.75d → 122.78d |
| 73 | **RECALCE 5 WP48** | 2026-07-25 → 2026-08-14 (+20d) | 2026-11-19 → 2026-11-23 (+4d) | 105d → 91.22d |  | 98.12d → 81.38d |
| 74 | LOCALIZACIÓN DEL ACERO WP48 | 2026-07-25 → 2026-08-14 (+20d) | 2026-07-28 → 2026-08-15 (+18d) |  |  | 98.12d → 81.38d |
| 75 | ESCARIFICADO Y LIMPIEZA DEL RECUBRIMIENTO WP48 | 2026-07-28 → 2026-08-15 (+18d) | 2026-08-03 → 2026-08-22 (+19d) |  |  | 98.12d → 81.38d |
| 76 | CORTE Y FIGURADO DE ACERO WP48 | 2026-08-03 → 2026-08-22 (+19d) | 2026-08-06 → 2026-08-26 (+20d) |  |  | 98.12d → 81.38d |
| 77 | APLICACIÓN DE EPOXICO Y FIJACIÓN DEL ACERO WP48 | 2026-11-03 → 2026-11-05 (+2d) | 2026-11-06 → 2026-11-10 (+4d) |  |  | 127.12d → 124.15d |
| 78 | ENCONFRADO WP48 | 2026-11-06 → 2026-11-10 (+4d) | 2026-11-07 → 2026-11-11 (+4d) |  |  | 127.12d → 124.15d |
| 79 | VACIADO DE CONCRETO (APLICACIÓN PUENTE DE ADHERENCIA) WP48 | 2026-11-07 → 2026-11-11 (+4d) | 2026-11-09 → 2026-11-12 (+3d) |  |  | 127.12d → 124.15d |
| 80 | ADECUACIONES E INSTALACIONES ELECTRICAS REQUERIDAS WP48 | 2026-11-09 → 2026-11-12 (+3d) | 2026-11-12 → 2026-11-14 (+2d) |  |  | 127.12d → 124.15d |
| 81 | INSTALACION DE GROUT Y MORTERO AUTOCOMPACTANTE DE ALTA RESISTENCIA WP48 | 2026-11-17 → 2026-11-20 (+3d) | 2026-11-19 → 2026-11-23 (+4d) |  |  | 128.12d → 125.15d |
| 82 | **RECALCE 6 WP49** | 2026-07-25 → 2026-08-14 (+20d) | 2026-11-27 → 2026-11-30 (+3d) | 112.38d → 98.6d |  | 116.12d → 99.38d |
| 83 | LOCALIZACIÓN DEL HACERO WP49 | 2026-07-25 → 2026-08-14 (+20d) | 2026-07-28 → 2026-08-15 (+18d) |  |  | 116.12d → 99.38d |
| 84 | ESCARIFICADO Y LIMPIEZA DEL RECUBRIMIENTO WP49 | 2026-07-28 → 2026-08-15 (+18d) | 2026-08-03 → 2026-08-22 (+19d) |  |  | 116.12d → 99.38d |

| ID | Task | Start | Finish | Duration | Complete | Total float |
| --- | --- | --- | --- | --- | --- | --- |
| 85 | CORTE Y FIGURADO DE ACERO WP49 | 2026-08-03 → 2026-08-22 (+19d) | 2026-08-06 → 2026-08-26 (+20d) |  |  | 116.12d → 99.38d |
| 86 | APLICACIÓN DE EPOXICO Y FIJACIÓN DEL ACERO WP49 | 2026-11-10 → 2026-11-13 (+3d) | 2026-11-14 → 2026-11-18 (+4d) |  |  | 122.75d → 119.78d |
| 87 | ENCONFRADO WP49 | 2026-11-14 → 2026-11-18 (+4d) | 2026-11-17 → 2026-11-19 (+2d) |  |  | 122.75d → 119.78d |
| 88 | VACIADO DE CONCRETO (APLICACIÓN PUENTE DE ADHERENCIA) WP49 | 2026-11-17 → 2026-11-19 (+2d) | 2026-11-18 → 2026-11-20 (+2d) |  |  | 122.75d → 119.78d |
| 89 | ADECUACIONES E INSTALACIONES ELECTRICAS REQUERIDAS WP49 | 2026-11-18 → 2026-11-20 (+2d) | 2026-11-20 → 2026-11-24 (+4d) |  |  | 122.75d → 119.78d |
| 90 | INSTALACION DE GROUT Y MORTERO AUTOCOMPACTANTE DE ALTA RESISTENCIA WP49 | 2026-11-25 → 2026-11-28 (+3d) | 2026-11-27 → 2026-11-30 (+3d) |  |  | 122.75d → 119.78d |
| 91 | **RECALCE 7 WP52** | 2026-07-29 → 2026-08-14 (+16d) | 2026-12-04 → 2026-12-09 (+5d) | 116d → 105.47d |  | 96.88d → 83.38d |
| 92 | LOCALIZACIÓN DEL ACERO WP52 | 2026-07-29 → 2026-08-14 (+16d) | 2026-07-31 → 2026-08-15 (+15d) |  |  | 96.88d → 83.38d |
| 93 | ESCARIFICADO Y LIMPIEZA DEL RECUBRIMIENTO WP52 | 2026-07-31 → 2026-08-15 (+15d) | 2026-08-06 → 2026-08-22 (+16d) |  |  | 96.88d → 83.38d |
| 94 | CORTE Y FIGURADO DE ACERO WP52 | 2026-08-06 → 2026-08-22 (+16d) | 2026-08-11 → 2026-08-26 (+15d) |  |  | 96.88d → 83.38d |
| 95 | APLICACIÓN DE EPOXICO Y FIJACIÓN DEL ACERO WP52 | 2026-11-18 → 2026-11-21 (+3d) | 2026-11-23 → 2026-11-26 (+3d) |  |  | 114.88d → 111.9d |
| 96 | ENCONFRADO WP52 | 2026-11-23 → 2026-11-26 (+3d) | 2026-11-24 → 2026-11-27 (+3d) |  |  | 114.88d → 111.9d |
| 97 | VACIADO DE CONCRETO (APLICACIÓN PUENTE DE ADHERENCIA) WP52 | 2026-11-24 → 2026-11-27 (+3d) | 2026-11-25 → 2026-11-27 (+2d) |  |  | 114.88d → 111.9d |
| 98 | ADECUACIONES E INSTALACIONES ELECTRICAS REQUERIDAS WP52 | 2026-11-25 → 2026-11-27 (+2d) | 2026-11-27 → 2026-12-01 (+4d) |  |  | 118.88d → 115.9d |
| 99 | INSTALACION DE GROUT Y MORTERO AUTOCOMPACTANTE DE ALTA RESISTENCIA WP52 | 2026-12-02 → 2026-12-05 (+3d) | 2026-12-04 → 2026-12-09 (+5d) |  |  | 114.88d → 111.9d |
| 100 | HITO 3: FIN DE ACTIVIDADES DE RECALCE | 2026-12-04 → 2026-12-09 (+5d) | 2026-12-04 → 2026-12-09 (+5d) |  |  | 114.88d → 111.9d |
| 101 | **EJECUCIÓN DE ACTIVIDADES DE CIMENTACIONES NUEVAS** |  |  |  | 7% → 4% |  |
| 102 | **CIMENTACION WP50** |  | 2026-11-18 → 2026-11-20 (+2d) | 111.75d → 113.5d | 5% → 0% | 253d → 251.25d |
| 103 | LOCALIZACION, REPLANTEO Y DESBROCE DE AREA DE ACOPIO DE TORRE Y DE PALAS WP50 |  | 2026-08-14 → 2026-08-20 (+6d) | 25d → 29.38d | 20% → 0% | 1.4d → 0d |
| 104 | EXCAVACIÓN DE CIMENTACION WP50 | 2026-08-14 → 2026-08-20 (+6d) | 2026-08-22 → 2026-08-27 (+5d) |  |  | 37.75d → 33.38d |
| 105 | BANCO DE DUCTO WP50 | 2026-08-22 → 2026-08-27 (+5d) | 2026-08-26 → 2026-08-31 (+5d) |  |  | 142.75d → 138.38d |
| 106 | COMPACTACION DE SELLO DE BASE WP50 | 2026-08-26 → 2026-08-31 (+5d) | 2026-08-31 → 2026-09-04 (+4d) |  |  | 142.75d → 138.38d |
| 108 | INSTALACIÓN DE PERNOS Y SOFT-SPOT WP50 | 2026-09-24 → 2026-09-25 (+1d) | 2026-09-30 → 2026-10-01 (+1d) |  |  | 121d → 120d |
| 109 | INSTALACIÓN DE ACERO DE REFUERZO WP50 | 2026-09-30 → 2026-10-01 (+1d) | 2026-10-16 → 2026-10-17 (+1d) |  |  | 121d → 120d |
| 110 | ENCOFRADO DE ZAPATA Y DE PEDESTAL WP50 | 2026-10-16 → 2026-10-17 (+1d) | 2026-10-20 → 2026-10-21 (+1d) |  |  | 122d → 121d |
| 111 | HITO: ALISTAMIENTO Y MOVILIZACIÓN DE PLANTA DE CONCRETO PARA WP50 | 2026-10-16 → 2026-10-17 (+1d) | 2026-10-16 → 2026-10-17 (+1d) |  |  | 125d → 124d |
| 112 | FUNDIDA WP50 | 2026-10-20 → 2026-10-22 (+2d) | 2026-10-21 → 2026-10-23 (+2d) |  |  | 122d → 119.25d |
| 113 | CURADO DEL CONCRETO WP50 | 2026-10-21 → 2026-10-23 (+2d) | 2026-10-28 → 2026-10-31 (+3d) |  |  | 122d → 119.25d |
| 114 | INSTALACIONES ELECTRICAS Y SISTEMA PUESTA TIERRA WP50 | 2026-10-28 → 2026-10-31 (+3d) | 2026-10-31 → 2026-11-04 (+4d) |  |  | 122d → 119.25d |
| 115 | INSTALACION DE GROUT Y MORTERO AUTOCOMPACTANTE DE ALTA RESISTENCIA WP50 | 2026-10-31 → 2026-11-04 (+4d) | 2026-11-04 → 2026-11-06 (+2d) |  |  | 122d → 119.25d |
| 116 | TAPADO AREA DE CIMENTACIÓN Y CONFORMACIÓN DE PLATAFORMA WP50 | 2026-11-03 → 2026-11-04 (+1d) | 2026-11-13 → 2026-11-14 (+1d) |  |  | 121d → 119.25d |
| 117 | ESTABILIZACIÓN DE TALUDES EN PLATAFORMA Y RECONFORMACION FINAL WP50 | 2026-11-05 → 2026-11-06 (+1d) | 2026-11-18 → 2026-11-20 (+2d) |  |  | 121d → 119.25d |
| 118 | HITO: FINALIZACION DE ACTIVIDADES EN CIMENTACION WP50 | 2026-11-18 → 2026-11-20 (+2d) | 2026-11-18 → 2026-11-20 (+2d) |  |  | 253d → 251.25d |
| 119 | **CIMENTACION WP53** |  | 2026-11-18 → 2026-11-20 (+2d) | 78.75d → 80.5d |  | 253d → 251.25d |
| 120 | LOCALIZACION, REPLANTEO Y DESBROCE DE AREA DE ACOPIO DE TORRE Y DE PALAS WP53 |  | 2026-09-01 → 2026-09-03 (+2d) | 7d → 9.97d | 20% → 14% |  |
| 121 | EXCAVACIÓN DE CIMENTACION WP53 | 2026-09-01 → 2026-09-03 (+2d) | 2026-09-08 → 2026-09-11 (+3d) |  |  | 29.75d → 26.77d |
| 122 | BANCO DE DUCTO WP53 | 2026-09-08 → 2026-09-11 (+3d) | 2026-09-11 → 2026-09-14 (+3d) |  |  | 42.75d → 39.77d |
| 123 | COMPACTACION DE SELLO DE BASE WP53 | 2026-09-11 → 2026-09-14 (+3d) | 2026-09-15 → 2026-09-18 (+3d) |  |  | 42.75d → 39.77d |
| 124 | WP53 WP53 | 2026-09-15 → 2026-09-18 (+3d) | 2026-09-17 → 2026-09-21 (+4d) |  |  | 42.75d → 39.77d |
| 125 | INSTALACIÓN DE PERNOS Y SOFT-SPOT WP53 | 2026-09-17 → 2026-09-21 (+4d) | 2026-09-23 → 2026-09-25 (+2d) |  |  | 42.75d → 39.77d |
| 126 | INSTALACIÓN DE ACERO DE REFUERZO WP53 | 2026-09-23 → 2026-09-25 (+2d) | 2026-10-08 → 2026-10-13 (+5d) |  |  | 42.75d → 39.77d |
| 127 | ENCOFRADO DE ZAPATA Y DE PEDESTAL WP53 | 2026-10-08 → 2026-10-13 (+5d) | 2026-10-13 → 2026-10-15 (+2d) |  |  | 138.75d → 135.78d |
| 128 | HITO: ALISTAMIENTO Y MOVILIZACIÓN DE PLANTA DE CONCRETO PARA WP53 | 2026-10-08 → 2026-10-13 (+5d) | 2026-10-08 → 2026-10-13 (+5d) |  |  | 141.75d → 138.78d |
| 129 | FUNDIDA WP53 | 2026-10-13 → 2026-10-15 (+2d) | 2026-10-14 → 2026-10-16 (+2d) |  |  | 138.75d → 135.78d |
| 130 | CURADO DEL CONCRETO WP53 | 2026-10-14 → 2026-10-16 (+2d) | 2026-10-21 → 2026-10-24 (+3d) |  |  | 138.75d → 135.78d |
| 131 | INSTALACIONES ELECTRICAS Y SISTEMA PUESTA TIERRA WP53 | 2026-10-21 → 2026-10-24 (+3d) | 2026-10-24 → 2026-10-27 (+3d) |  |  | 138.75d → 135.78d |
| 132 | INSTALACION DE GROUT Y MORTERO AUTOCOMPACTANTE DE ALTA RESISTENCIA WP53 | 2026-10-24 → 2026-10-27 (+3d) | 2026-10-27 → 2026-10-29 (+2d) |  |  | 138.75d → 135.78d |
| 133 | TAPADO AREA DE CIMENTACIÓN Y CONFORMACIÓN DE PLATAFORMA WP53 | 2026-10-31 → 2026-11-03 (+3d) | 2026-11-12 → 2026-11-13 (+1d) |  |  | 132d → 130.25d |
| 134 | ESTABILIZACIÓN DE TALUDES EN PLATAFORMA Y RECONFORMACION FINAL WP53 | 2026-11-04 → 2026-11-05 (+1d) | 2026-11-17 → 2026-11-19 (+2d) |  |  | 132d → 130.25d |
| 135 | HITO: FINALIZACION DE ACTIVIDADES EN CIMENTACION WP53 | 2026-11-18 → 2026-11-20 (+2d) | 2026-11-18 → 2026-11-20 (+2d) |  |  | 253d → 251.25d |
| 136 | **CIMENTACION WP15** | 2026-09-01 → 2026-09-03 (+2d) | 2026-11-20 → 2026-11-23 (+3d) | 73.75d → 72.53d |  |  |
| 137 | LOCALIZACION, REPLANTEO Y DESBROCE DE AREA DE ACOPIO DE TORRE Y DE PALAS WP15 | 2026-09-01 → 2026-09-03 (+2d) | 2026-09-08 → 2026-09-11 (+3d) |  |  |  |
| 138 | EXCAVACIÓN DE CIMENTACION WP15 | 2026-09-08 → 2026-09-11 (+3d) | 2026-09-15 → 2026-09-18 (+3d) |  |  | 29.75d → 26.77d |
| 139 | BANCO DE DUCTO WP15 | 2026-09-15 → 2026-09-18 (+3d) | 2026-09-18 → 2026-09-22 (+4d) |  |  | 51.75d → 48.77d |
| 140 | COMPACTACION DE SELLO DE BASE WP15 | 2026-09-18 → 2026-09-22 (+4d) | 2026-09-23 → 2026-09-25 (+2d) |  |  | 51.75d → 48.77d |
| 141 | SOLADO WP15 | 2026-09-23 → 2026-09-25 (+2d) | 2026-09-24 → 2026-09-28 (+4d) |  |  | 51.75d → 48.77d |
| 142 | INSTALACIÓN DE PERNOS Y SOFT-SPOT WP15 | 2026-09-24 → 2026-09-28 (+4d) | 2026-09-30 → 2026-10-03 (+3d) |  |  | 51.75d → 48.77d |
| 143 | INSTALACIÓN DE ACERO DE REFUERZO WP15 | 2026-09-30 → 2026-10-03 (+3d) | 2026-10-16 → 2026-10-20 (+4d) |  |  | 51.75d → 48.77d |
| 144 | ENCOFRADO DE ZAPATA Y DE PEDESTAL WP15 | 2026-10-16 → 2026-10-20 (+4d) | 2026-10-20 → 2026-10-23 (+3d) |  |  | 133.75d → 130.78d |
| 145 | HITO: ALISTAMIENTO Y MOVILIZACIÓN DE PLANTA DE CONCRETO PARA WP15 | 2026-10-16 → 2026-10-20 (+4d) | 2026-10-16 → 2026-10-20 (+4d) |  |  | 136.75d → 133.78d |
| 146 | FUNDIDA WP15 | 2026-10-20 → 2026-10-23 (+3d) | 2026-10-21 → 2026-10-24 (+3d) |  |  | 133.75d → 130.78d |
| 147 | CURADO DEL CONCRETO WP15 | 2026-10-21 → 2026-10-24 (+3d) | 2026-10-28 → 2026-10-31 (+3d) |  |  | 133.75d → 130.78d |
| 148 | INSTALACIONES ELECTRICAS Y SISTEMA PUESTA TIERRA WP15 | 2026-10-28 → 2026-10-31 (+3d) | 2026-10-31 → 2026-11-05 (+5d) |  |  | 133.75d → 130.78d |
| 149 | INSTALACION DE GROUT Y MORTERO AUTOCOMPACTANTE DE ALTA RESISTENCIA WP15 | 2026-10-31 → 2026-11-05 (+5d) | 2026-11-04 → 2026-11-06 (+2d) |  |  | 133.75d → 130.78d |
| 150 | TAPADO AREA DE CIMENTACIÓN Y CONFORMACIÓN DE PLATAFORMA WP15 | 2026-11-05 → 2026-11-06 (+1d) | 2026-11-14 → 2026-11-18 (+4d) |  |  | 131d → 129.25d |
| 151 | ESTABILIZACIÓN DE TALUDES EN PLATAFORMA Y RECONFORMACION FINAL WP15 | 2026-11-06 → 2026-11-09 (+3d) | 2026-11-20 → 2026-11-23 (+3d) |  |  | 131d → 129.25d |
| 152 | HITO: FINALIZACION DE ACTIVIDADES EN CIMENTACION WP15 | 2026-11-20 → 2026-11-23 (+3d) | 2026-11-20 → 2026-11-23 (+3d) |  |  | 251d → 249.25d |
| 153 | **CIMENTACION WP14** | 2026-09-08 → 2026-09-11 (+3d) | 2026-12-01 → 2026-12-03 (+2d) | 76.75d → 75.53d |  |  |
| 154 | LOCALIZACION, REPLANTEO Y DESBROCE DE AREA DE ACOPIO DE TORRE Y DE PALAS WP14 | 2026-09-08 → 2026-09-11 (+3d) | 2026-09-15 → 2026-09-18 (+3d) |  |  |  |
| 155 | EXCAVACIÓN DE CIMENTACION WP14 | 2026-09-15 → 2026-09-18 (+3d) | 2026-09-23 → 2026-09-25 (+2d) |  |  | 29.75d → 26.77d |

| ID | Task | Start | Finish | Duration | Complete | Total float |
| --- | --- | --- | --- | --- | --- | --- |
| 156 | BANCO DE DUCTO WP14 | 2026-09-23 → 2026-09-25 (+2d) | 2026-09-25 → 2026-09-29 (+4d) |  |  | 125.75d → 122.78d |
| 157 | COMPACTACION DE SELLO DE BASE WP14 | 2026-09-25 → 2026-09-29 (+4d) | 2026-09-30 → 2026-10-03 (+3d) |  |  | 125.75d → 122.78d |
| 158 | SOLADO WP14 | 2026-09-30 → 2026-10-03 (+3d) | 2026-10-02 → 2026-10-05 (+3d) |  |  | 125.75d → 122.78d |
| 159 | INSTALACIÓN DE PERNOS Y SOFT-SPOT WP14 | 2026-10-02 → 2026-10-05 (+3d) | 2026-10-07 → 2026-10-10 (+3d) |  |  | 125.75d → 122.78d |
| 160 | INSTALACIÓN DE ACERO DE REFUERZO WP14 | 2026-10-07 → 2026-10-10 (+3d) | 2026-10-24 → 2026-10-27 (+3d) |  |  | 125.75d → 122.78d |
| 161 | ENCOFRADO DE ZAPATA Y DE PEDESTAL WP14 | 2026-10-24 → 2026-10-27 (+3d) | 2026-10-27 → 2026-10-30 (+3d) |  |  | 126.75d → 123.78d |
| 162 | HITO: ALISTAMIENTO Y MOVILIZACIÓN DE PLANTA DE CONCRETO PARA WP14 | 2026-10-24 → 2026-10-27 (+3d) | 2026-10-24 → 2026-10-27 (+3d) |  |  | 129.75d → 126.78d |
| 163 | FUNDIDA WP14 | 2026-10-28 → 2026-10-30 (+2d) | 2026-10-28 → 2026-10-31 (+3d) |  |  | 126.75d → 123.78d |
| 164 | CURADO DEL CONCRETO WP14 | 2026-10-28 → 2026-10-31 (+3d) | 2026-11-06 → 2026-11-09 (+3d) |  |  | 126.75d → 123.78d |
| 165 | INSTALACIONES ELECTRICAS Y SISTEMA PUESTA TIERRA WP14 | 2026-11-06 → 2026-11-09 (+3d) | 2026-11-09 → 2026-11-12 (+3d) |  |  | 126.75d → 123.78d |
| 166 | INSTALACION DE GROUT Y MORTERO AUTOCOMPACTANTE DE ALTA RESISTENCIA WP14 | 2026-11-09 → 2026-11-12 (+3d) | 2026-11-11 → 2026-11-14 (+3d) |  |  | 126.75d → 123.78d |
| 167 | TAPADO AREA DE CIMENTACIÓN Y CONFORMACIÓN DE PLATAFORMA WP14 | 2026-11-13 → 2026-11-14 (+1d) | 2026-11-25 → 2026-11-26 (+1d) |  |  | 123d → 121.25d |
| 168 | ESTABILIZACIÓN DE TALUDES EN PLATAFORMA Y RECONFORMACION FINAL WP14 | 2026-11-18 → 2026-11-20 (+2d) | 2026-12-01 → 2026-12-03 (+2d) |  |  | 121d → 119.25d |
| 169 | HITO: FINALIZACION DE ACTIVIDADES EN CIMENTACION WP14 | 2026-12-01 → 2026-12-03 (+2d) | 2026-12-01 → 2026-12-03 (+2d) |  |  | 241d → 239.25d |
| 170 | **CIMENTACION WP16** |  | 2026-12-04 → 2026-12-07 (+3d) | 121d → 123.97d | 9% → 0% | 238.12d → 235.15d |
| 171 | LOCALIZACION, REPLANTEO Y DESBROCE DE AREA DE ACOPIO DE TORRE Y DE PALAS WP16 |  | 2026-09-23 → 2026-09-26 (+3d) | 56d → 58.98d | 20% → 0% |  |
| 172 | EXCAVACIÓN DE CIMENTACION WP16 | 2026-09-23 → 2026-09-26 (+3d) | 2026-09-30 → 2026-10-03 (+3d) |  |  | 29.12d → 26.15d |
| 173 | BANCO DE DUCTO WP16 | 2026-10-01 → 2026-10-03 (+2d) | 2026-10-03 → 2026-10-07 (+4d) |  |  | 41.12d → 38.15d |
| 174 | COMPACTACION DE SELLO DE BASE WP16 | 2026-10-03 → 2026-10-07 (+4d) | 2026-10-08 → 2026-10-10 (+2d) |  |  | 41.12d → 38.15d |
| 175 | SOLADO WP16 | 2026-10-08 → 2026-10-10 (+2d) | 2026-10-10 → 2026-10-14 (+4d) |  |  | 41.12d → 38.15d |
| 176 | INSTALACIÓN DE PERNOS Y SOFT-SPOT WP16 | 2026-10-10 → 2026-10-14 (+4d) | 2026-10-16 → 2026-10-20 (+4d) |  |  | 41.12d → 38.15d |
| 177 | INSTALACIÓN DE ACERO DE REFUERZO WP16 | 2026-10-16 → 2026-10-20 (+4d) | 2026-11-03 → 2026-11-05 (+2d) |  |  | 41.12d → 38.15d |
| 178 | ENCOFRADO DE ZAPATA Y DE PEDESTAL WP16 | 2026-11-03 → 2026-11-05 (+2d) | 2026-11-05 → 2026-11-09 (+4d) |  |  | 128.12d → 125.15d |
| 179 | HITO: ALISTAMIENTO Y MOVILIZACIÓN DE PLANTA DE CONCRETO PARA WP16 | 2026-11-03 → 2026-11-05 (+2d) | 2026-11-03 → 2026-11-05 (+2d) |  |  | 131.12d → 128.15d |
| 180 | FUNDIDA WP16 | 2026-11-05 → 2026-11-09 (+4d) | 2026-11-06 → 2026-11-10 (+4d) |  |  | 128.12d → 125.15d |
| 181 | CURADO DEL CONCRETO WP16 | 2026-11-06 → 2026-11-10 (+4d) | 2026-11-13 → 2026-11-18 (+5d) |  |  | 129.12d → 126.15d |
| 182 | INSTALACIONES ELECTRICAS Y SISTEMA PUESTA TIERRA WP16 | 2026-11-14 → 2026-11-18 (+4d) | 2026-11-18 → 2026-11-21 (+3d) |  |  | 129.12d → 126.15d |
| 183 | INSTALACION DE GROUT Y MORTERO AUTOCOMPACTANTE DE ALTA RESISTENCIA WP16 | 2026-11-18 → 2026-11-21 (+3d) | 2026-11-20 → 2026-11-24 (+4d) |  |  | 129.12d → 126.15d |
| 184 | TAPADO AREA DE CIMENTACIÓN Y CONFORMACIÓN DE PLATAFORMA WP16 | 2026-11-19 → 2026-11-23 (+4d) | 2026-11-30 → 2026-12-03 (+3d) |  |  | 128.12d → 125.15d |
| 185 | ESTABILIZACIÓN DE TALUDES EN PLATAFORMA Y RECONFORMACION FINAL WP16 | 2026-11-21 → 2026-11-25 (+4d) | 2026-12-04 → 2026-12-07 (+3d) |  |  | 128.12d → 125.15d |
| 186 | HITO: FINALIZACION DE ACTIVIDADES EN CIMENTACION WP16 | 2026-12-04 → 2026-12-07 (+3d) | 2026-12-04 → 2026-12-07 (+3d) |  |  | 238.12d → 235.15d |
| 187 | **CIMENTACION WP18** |  | 2026-12-12 → 2026-12-16 (+4d) | 128.38d → 131.35d | 9% → 0% | 230.75d → 227.78d |
| 188 | LOCALIZACION, REPLANTEO Y DESBROCE DE AREA DE ACOPIO DE TORRE Y DE PALAS WP18 |  | 2026-09-30 → 2026-10-03 (+3d) | 63d → 65.97d | 20% → 0% |  |
| 189 | EXCAVACIÓN DE CIMENTACION WP18 | 2026-10-01 → 2026-10-03 (+2d) | 2026-10-08 → 2026-10-10 (+2d) |  |  | 29.12d → 26.15d |
| 190 | BANCO DE DUCTO WP18 | 2026-10-08 → 2026-10-10 (+2d) | 2026-10-10 → 2026-10-15 (+5d) |  |  | 52.12d → 49.15d |
| 191 | COMPACTACION DE SELLO DE BASE WP18 | 2026-10-13 → 2026-10-15 (+2d) | 2026-10-16 → 2026-10-20 (+4d) |  |  | 52.12d → 49.15d |
| 192 | SOLADO WP18 | 2026-10-16 → 2026-10-20 (+4d) | 2026-10-19 → 2026-10-22 (+3d) |  |  | 51.75d → 48.77d |
| 193 | INSTALACIÓN DE PERNOS Y SOFT-SPOT WP18 | 2026-10-19 → 2026-10-22 (+3d) | 2026-10-24 → 2026-10-27 (+3d) |  |  | 51.75d → 48.77d |
| 194 | INSTALACIÓN DE ACERO DE REFUERZO WP18 | 2026-10-24 → 2026-10-27 (+3d) | 2026-11-10 → 2026-11-13 (+3d) |  |  | 51.75d → 48.77d |
| 195 | ENCOFRADO DE ZAPATA Y DE PEDESTAL WP18 | 2026-11-10 → 2026-11-13 (+3d) | 2026-11-13 → 2026-11-18 (+5d) |  |  | 123.75d → 120.78d |
| 196 | HITO: ALISTAMIENTO Y MOVILIZACIÓN DE PLANTA DE CONCRETO PARA WP18 | 2026-11-10 → 2026-11-13 (+3d) | 2026-11-10 → 2026-11-13 (+3d) |  |  | 126.75d → 123.78d |
| 197 | FUNDIDA WP18 | 2026-11-13 → 2026-11-18 (+5d) | 2026-11-14 → 2026-11-18 (+4d) |  |  | 123.75d → 120.78d |
| 198 | CURADO DEL CONCRETO WP18 | 2026-11-14 → 2026-11-18 (+4d) | 2026-11-23 → 2026-11-26 (+3d) |  |  | 123.75d → 120.78d |
| 199 | INSTALACIONES ELECTRICAS Y SISTEMA PUESTA TIERRA WP18 | 2026-11-23 → 2026-11-26 (+3d) | 2026-11-26 → 2026-11-28 (+2d) |  |  | 123.75d → 120.78d |
| 200 | INSTALACION DE GROUT Y MORTERO AUTOCOMPACTANTE DE ALTA RESISTENCIA WP18 | 2026-11-26 → 2026-11-28 (+2d) | 2026-11-28 → 2026-12-01 (+3d) |  |  | 123.75d → 120.78d |
| 201 | TAPADO AREA DE CIMENTACIÓN Y CONFORMACIÓN DE PLATAFORMA WP18 | 2026-11-27 → 2026-11-30 (+3d) | 2026-12-09 → 2026-12-11 (+2d) |  |  | 122.75d → 119.78d |
| 202 | ESTABILIZACIÓN DE TALUDES EN PLATAFORMA Y RECONFORMACION FINAL WP18 | 2026-11-30 → 2026-12-02 (+2d) | 2026-12-12 → 2026-12-16 (+4d) |  |  | 122.75d → 119.78d |
| 203 | HITO: FINALIZACION DE ACTIVIDADES EN CIMENTACION WP18 | 2026-12-12 → 2026-12-16 (+4d) | 2026-12-12 → 2026-12-16 (+4d) |  |  | 230.75d → 227.78d |
| 204 | **CIMENTACION WP9** |  | 2026-12-23 → 2026-12-28 (+5d) | 135d → 137.97d | 10% → 0% | 220.88d → 217.9d |
| 205 | LOCALIZACION, REPLANTEO Y DESBROCE DE AREA DE ACOPIO DE TORRE Y DE PALAS WP9 |  | 2026-10-08 → 2026-10-13 (+5d) | 67d → 69.97d | 20% → 0% |  |
| 206 | EXCAVACIÓN DE CIMENTACION WP9 | 2026-10-08 → 2026-10-13 (+5d) | 2026-10-16 → 2026-10-20 (+4d) |  |  | 28.88d → 25.9d |
| 207 | BANCO DE DUCTO WP9 | 2026-10-16 → 2026-10-20 (+4d) | 2026-10-20 → 2026-10-23 (+3d) |  |  | 28.88d → 25.9d |
| 208 | COMPACTACION DE SELLO DE BASE WP9 | 2026-10-20 → 2026-10-23 (+3d) | 2026-10-24 → 2026-10-27 (+3d) |  |  | 28.88d → 25.9d |
| 209 | SOLADO WP9 | 2026-10-24 → 2026-10-27 (+3d) | 2026-10-26 → 2026-10-29 (+3d) |  |  | 28.88d → 25.9d |
| 210 | INSTALACIÓN DE PERNOS Y SOFT-SPOT WP9 | 2026-10-27 → 2026-10-29 (+2d) | 2026-10-31 → 2026-11-05 (+5d) |  |  | 28.88d → 25.9d |
| 211 | INSTALACIÓN DE ACERO DE REFUERZO WP9 | 2026-10-31 → 2026-11-05 (+5d) | 2026-11-18 → 2026-11-21 (+3d) |  |  | 28.88d → 25.9d |
| 212 | ENCOFRADO DE ZAPATA Y DE PEDESTAL WP9 | 2026-11-18 → 2026-11-21 (+3d) | 2026-11-21 → 2026-11-25 (+4d) |  |  | 118.88d → 115.9d |
| 213 | HITO: ALISTAMIENTO Y MOVILIZACIÓN DE PLANTA DE CONCRETO PARA WP9 | 2026-11-18 → 2026-11-21 (+3d) | 2026-11-18 → 2026-11-21 (+3d) |  |  | 121.88d → 118.9d |
| 214 | FUNDIDA WP9 | 2026-11-21 → 2026-11-25 (+4d) | 2026-11-23 → 2026-11-26 (+3d) |  |  | 118.88d → 115.9d |
| 215 | CURADO DEL CONCRETO WP9 | 2026-11-23 → 2026-11-26 (+3d) | 2026-11-30 → 2026-12-03 (+3d) |  |  | 118.88d → 115.9d |
| 216 | INSTALACIONES ELECTRICAS Y SISTEMA PUESTA TIERRA WP9 | 2026-12-04 → 2026-12-09 (+5d) | 2026-12-09 → 2026-12-11 (+2d) |  |  | 114.88d → 111.9d |
| 217 | INSTALACION DE GROUT Y MORTERO AUTOCOMPACTANTE DE ALTA RESISTENCIA WP9 | 2026-12-09 → 2026-12-11 (+2d) | 2026-12-10 → 2026-12-14 (+4d) |  |  | 114.88d → 111.9d |
| 218 | TAPADO AREA DE CIMENTACIÓN Y CONFORMACIÓN DE PLATAFORMA WP9 | 2026-12-09 → 2026-12-11 (+2d) | 2026-12-19 → 2026-12-22 (+3d) |  |  | 114.88d → 111.9d |
| 219 | ESTABILIZACIÓN DE TALUDES EN PLATAFORMA Y RECONFORMACION FINAL WP9 | 2026-12-11 → 2026-12-14 (+3d) | 2026-12-23 → 2026-12-28 (+5d) |  |  | 114.88d → 111.9d |
| 220 | HITO: FINALIZACION DE ACTIVIDADES EN CIMENTACION WP9 | 2026-12-23 → 2026-12-28 (+5d) | 2026-12-23 → 2026-12-28 (+5d) |  |  | 220.88d → 217.9d |
| 221 | **CIMENTACION WP8** |  | 2026-12-29 → 2026-12-31 (+2d) | 137.62d → 140.6d | 10% → 0% | 217.12d → 214.15d |
| 222 | LOCALIZACION, REPLANTEO Y DESBROCE DE AREA DE ACOPIO DE TORRE Y DE PALAS WP8 |  | 2026-10-16 → 2026-10-20 (+4d) | 73d → 75.97d | 20% → 0% |  |
| 223 | EXCAVACIÓN DE CIMENTACION WP8 | 2026-10-16 → 2026-10-20 (+4d) | 2026-10-24 → 2026-10-27 (+3d) |  |  | 29.75d → 26.77d |
| 224 | BANCO DE DUCTO WP8 | 2026-10-24 → 2026-10-27 (+3d) | 2026-10-27 → 2026-10-30 (+3d) |  |  | 41.75d → 38.77d |
| 225 | COMPACTACION DE SELLO DE BASE WP8 | 2026-10-28 → 2026-10-30 (+2d) | 2026-10-31 → 2026-11-05 (+5d) |  |  | 41.75d → 38.77d |

| ID | Task | Start | Finish | Duration | Complete | Total float |
| --- | --- | --- | --- | --- | --- | --- |
| 226 | SOLADO WP8 | 2026-11-03 → 2026-11-05 (+2d) | 2026-11-04 → 2026-11-07 (+3d) |  |  | 41.12d → 38.15d |
| 227 | INSTALACIÓN DE PERNOS Y SOFT-SPOT WP8 | 2026-11-04 → 2026-11-07 (+3d) | 2026-11-10 → 2026-11-13 (+3d) |  |  | 41.12d → 38.15d |
| 228 | INSTALACIÓN DE ACERO DE REFUERZO WP8 | 2026-11-10 → 2026-11-13 (+3d) | 2026-11-26 → 2026-11-30 (+4d) |  |  | 41.12d → 38.15d |
| 229 | ENCOFRADO DE ZAPATA Y DE PEDESTAL WP8 | 2026-11-26 → 2026-11-30 (+4d) | 2026-11-30 → 2026-12-03 (+3d) |  |  | 121.12d → 118.15d |
| 230 | HITO: ALISTAMIENTO Y MOVILIZACIÓN DE PLANTA DE CONCRETO PARA WP8 | 2026-11-26 → 2026-11-30 (+4d) | 2026-11-26 → 2026-11-30 (+4d) |  |  | 124.12d → 121.15d |
| 231 | FUNDIDA WP8 | 2026-11-30 → 2026-12-03 (+3d) | 2026-12-01 → 2026-12-04 (+3d) |  |  | 121.12d → 118.15d |
| 232 | CURADO DEL CONCRETO WP8 | 2026-12-01 → 2026-12-04 (+3d) | 2026-12-09 → 2026-12-12 (+3d) |  |  | 121.12d → 118.15d |
| 233 | INSTALACIONES ELECTRICAS Y SISTEMA PUESTA TIERRA WP8 | 2026-12-09 → 2026-12-12 (+3d) | 2026-12-12 → 2026-12-16 (+4d) |  |  | 121.12d → 118.15d |
| 234 | INSTALACION DE GROUT Y MORTERO AUTOCOMPACTANTE DE ALTA RESISTENCIA WP8 | 2026-12-12 → 2026-12-16 (+4d) | 2026-12-15 → 2026-12-18 (+3d) |  |  | 121.12d → 118.15d |
| 235 | TAPADO AREA DE CIMENTACIÓN Y CONFORMACIÓN DE PLATAFORMA WP8 | 2026-12-12 → 2026-12-16 (+4d) | 2026-12-23 → 2026-12-28 (+5d) |  |  | 121.12d → 118.15d |
| 236 | ESTABILIZACIÓN DE TALUDES EN PLATAFORMA Y RECONFORMACION FINAL WP8 | 2026-12-15 → 2026-12-18 (+3d) | 2026-12-29 → 2026-12-31 (+2d) |  |  | 121.12d → 118.15d |
| 237 | HITO: FINALIZACION DE ACTIVIDADES EN CIMENTACION WP8 | 2026-12-29 → 2026-12-31 (+2d) | 2026-12-29 → 2026-12-31 (+2d) |  |  | 217.12d → 214.15d |
| 238 | **CIMENTACION WP19** |  | 2027-01-06 → 2027-01-09 (+3d) | 141.62d → 144.6d | 10% → 0% | 209.75d → 206.78d |
| 239 | LOCALIZACION, REPLANTEO Y DESBROCE DE AREA DE ACOPIO DE TORRE Y DE PALAS WP19 |  | 2026-10-24 → 2026-10-28 (+4d) | 77d → 79.97d | 20% → 0% |  |
| 240 | EXCAVACIÓN DE CIMENTACION WP19 | 2026-10-24 → 2026-10-28 (+4d) | 2026-10-31 → 2026-11-05 (+5d) |  |  | 29.38d → 26.4d |
| 241 | BANCO DE DUCTO WP19 | 2026-10-31 → 2026-11-05 (+5d) | 2026-11-05 → 2026-11-09 (+4d) |  |  | 52.38d → 49.4d |
| 242 | COMPACTACION DE SELLO DE BASE WP19 | 2026-11-05 → 2026-11-09 (+4d) | 2026-11-10 → 2026-11-12 (+2d) |  |  | 52.38d → 49.4d |
| 243 | SOLADO WP19 | 2026-11-10 → 2026-11-13 (+3d) | 2026-11-12 → 2026-11-17 (+5d) |  |  | 51.75d → 48.77d |
| 244 | INSTALACIÓN DE PERNOS Y SOFT-SPOT WP19 | 2026-11-12 → 2026-11-17 (+5d) | 2026-11-18 → 2026-11-21 (+3d) |  |  | 51.75d → 48.77d |
| 245 | INSTALACIÓN DE ACERO DE REFUERZO WP19 | 2026-11-19 → 2026-11-21 (+2d) | 2026-12-04 → 2026-12-09 (+5d) |  |  | 51.75d → 48.77d |
| 246 | ENCOFRADO DE ZAPATA Y DE PEDESTAL WP19 | 2026-12-04 → 2026-12-09 (+5d) | 2026-12-09 → 2026-12-11 (+2d) |  |  | 113.75d → 110.78d |
| 247 | HITO: ALISTAMIENTO Y MOVILIZACIÓN DE PLANTA DE CONCRETO PARA WP19 | 2026-12-04 → 2026-12-09 (+5d) | 2026-12-04 → 2026-12-09 (+5d) |  |  | 116.75d → 113.78d |
| 248 | FUNDIDA WP19 | 2026-12-09 → 2026-12-11 (+2d) | 2026-12-10 → 2026-12-12 (+2d) |  |  | 113.75d → 110.78d |
| 249 | CURADO DEL CONCRETO WP19 | 2026-12-10 → 2026-12-12 (+2d) | 2026-12-17 → 2026-12-21 (+4d) |  |  | 113.75d → 110.78d |
| 250 | INSTALACIONES ELECTRICAS Y SISTEMA PUESTA TIERRA WP19 | 2026-12-17 → 2026-12-21 (+4d) | 2026-12-21 → 2026-12-23 (+2d) |  |  | 113.75d → 110.78d |
| 251 | INSTALACION DE GROUT Y MORTERO AUTOCOMPACTANTE DE ALTA RESISTENCIA WP19 | 2026-12-21 → 2026-12-23 (+2d) | 2026-12-23 → 2026-12-26 (+3d) |  |  | 113.75d → 110.78d |
| 252 | TAPADO AREA DE CIMENTACIÓN Y CONFORMACIÓN DE PLATAFORMA WP19 | 2026-12-21 → 2026-12-23 (+2d) | 2027-01-02 → 2027-01-06 (+4d) |  |  | 113.75d → 110.78d |
| 253 | ESTABILIZACIÓN DE TALUDES EN PLATAFORMA Y RECONFORMACION FINAL WP19 | 2026-12-23 → 2026-12-26 (+3d) | 2027-01-06 → 2027-01-09 (+3d) |  |  | 113.75d → 110.78d |
| 254 | HITO: FINALIZACION DE ACTIVIDADES EN CIMENTACION WP19 | 2027-01-06 → 2027-01-09 (+3d) | 2027-01-06 → 2027-01-09 (+3d) |  |  | 209.75d → 206.78d |
| 255 | **CIMENTACION WP20** |  | 2027-01-15 → 2027-01-19 (+4d) | 149d → 151.97d | 11% → 0% | 202.38d → 199.4d |
| 256 | LOCALIZACION, REPLANTEO Y DESBROCE DE AREA DE ACOPIO DE TORRE Y DE PALAS WP20 |  | 2026-11-03 → 2026-11-06 (+3d) | 85d → 87.97d | 20% → 0% |  |
| 257 | EXCAVACIÓN DE CIMENTACION WP20 | 2026-11-03 → 2026-11-06 (+3d) | 2026-11-11 → 2026-11-13 (+2d) |  |  | 28.38d → 25.4d |
| 258 | BANCO DE DUCTO WP20 | 2026-11-11 → 2026-11-13 (+2d) | 2026-11-13 → 2026-11-18 (+5d) |  |  | 28.38d → 25.4d |
| 259 | COMPACTACION DE SELLO DE BASE WP20 | 2026-11-13 → 2026-11-18 (+5d) | 2026-11-19 → 2026-11-21 (+2d) |  |  | 28.38d → 25.4d |
| 260 | SOLADO WP20 | 2026-11-19 → 2026-11-21 (+2d) | 2026-11-21 → 2026-11-24 (+3d) |  |  | 28.38d → 25.4d |
| 261 | INSTALACIÓN DE PERNOS Y SOFT-SPOT WP20 | 2026-11-21 → 2026-11-24 (+3d) | 2026-11-26 → 2026-11-30 (+4d) |  |  | 28.38d → 25.4d |
| 262 | INSTALACIÓN DE ACERO DE REFUERZO WP20 | 2026-11-26 → 2026-11-30 (+4d) | 2026-12-14 → 2026-12-16 (+2d) |  |  | 28.38d → 25.4d |
| 263 | ENCOFRADO DE ZAPATA Y DE PEDESTAL WP20 | 2026-12-14 → 2026-12-16 (+2d) | 2026-12-16 → 2026-12-19 (+3d) |  |  | 108.38d → 105.4d |
| 264 | HITO: ALISTAMIENTO Y MOVILIZACIÓN DE PLANTA DE CONCRETO PARA WP20 | 2026-12-14 → 2026-12-16 (+2d) | 2026-12-14 → 2026-12-16 (+2d) |  |  | 111.38d → 108.4d |
| 265 | FUNDIDA WP20 | 2026-12-17 → 2026-12-19 (+2d) | 2026-12-17 → 2026-12-21 (+4d) |  |  | 108.38d → 105.4d |
| 266 | CURADO DEL CONCRETO WP20 | 2026-12-17 → 2026-12-21 (+4d) | 2026-12-26 → 2026-12-29 (+3d) |  |  | 108.38d → 105.4d |
| 267 | INSTALACIONES ELECTRICAS Y SISTEMA PUESTA TIERRA WP20 | 2026-12-26 → 2026-12-29 (+3d) | 2026-12-29 → 2027-01-02 (+4d) |  |  | 108.38d → 105.4d |
| 268 | INSTALACION DE GROUT Y MORTERO AUTOCOMPACTANTE DE ALTA RESISTENCIA WP20 | 2026-12-30 → 2027-01-02 (+3d) | 2026-12-31 → 2027-01-05 (+5d) |  |  | 108.38d → 105.4d |
| 269 | TAPADO AREA DE CIMENTACIÓN Y CONFORMACIÓN DE PLATAFORMA WP20 | 2026-12-30 → 2027-01-02 (+3d) | 2027-01-09 → 2027-01-14 (+5d) |  |  | 108.38d → 105.4d |
| 270 | ESTABILIZACIÓN DE TALUDES EN PLATAFORMA Y RECONFORMACION FINAL WP20 | 2026-12-31 → 2027-01-05 (+5d) | 2027-01-15 → 2027-01-19 (+4d) |  |  | 108.38d → 105.4d |
| 271 | HITO: FINALIZACION DE ACTIVIDADES EN CIMENTACION WP20 | 2027-01-15 → 2027-01-19 (+4d) | 2027-01-15 → 2027-01-19 (+4d) |  |  | 202.38d → 199.4d |
| 272 | **CIMENTACION WP22** |  | 2027-01-23 → 2027-01-27 (+4d) | 156d → 158.97d | 11% → 0% | 194.25d → 191.28d |
| 273 | LOCALIZACION, REPLANTEO Y DESBROCE DE AREA DE ACOPIO DE TORRE Y DE PALAS WP22 |  | 2026-11-12 → 2026-11-14 (+2d) | 92d → 94.97d | 20% → 0% |  |
| 274 | EXCAVACIÓN DE CIMENTACION WP22 | 2026-11-12 → 2026-11-14 (+2d) | 2026-11-20 → 2026-11-24 (+4d) |  |  | 28.25d → 25.27d |
| 275 | BANCO DE DUCTO WP22 | 2026-11-20 → 2026-11-24 (+4d) | 2026-11-24 → 2026-11-26 (+2d) |  |  | 40.25d → 37.27d |
| 276 | COMPACTACION DE SELLO DE BASE WP22 | 2026-11-24 → 2026-11-26 (+2d) | 2026-11-27 → 2026-12-01 (+4d) |  |  | 40.25d → 37.27d |
| 277 | SOLADO WP22 | 2026-11-27 → 2026-12-01 (+4d) | 2026-11-30 → 2026-12-03 (+3d) |  |  | 40.25d → 37.27d |
| 278 | INSTALACIÓN DE PERNOS Y SOFT-SPOT WP22 | 2026-11-30 → 2026-12-03 (+3d) | 2026-12-04 → 2026-12-09 (+5d) |  |  | 40.25d → 37.27d |
| 279 | INSTALACIÓN DE ACERO DE REFUERZO WP22 | 2026-12-05 → 2026-12-09 (+4d) | 2026-12-22 → 2026-12-26 (+4d) |  |  | 40.25d → 37.27d |
| 280 | ENCOFRADO DE ZAPATA Y DE PEDESTAL WP22 | 2026-12-22 → 2026-12-26 (+4d) | 2026-12-26 → 2026-12-30 (+4d) |  |  | 110.25d → 107.28d |
| 281 | HITO: ALISTAMIENTO Y MOVILIZACIÓN DE PLANTA DE CONCRETO PARA WP22 | 2026-12-22 → 2026-12-26 (+4d) | 2026-12-22 → 2026-12-26 (+4d) |  |  | 113.25d → 110.28d |
| 282 | FUNDIDA WP22 | 2026-12-26 → 2026-12-30 (+4d) | 2026-12-28 → 2026-12-30 (+2d) |  |  | 110.25d → 107.28d |
| 283 | CURADO DEL CONCRETO WP22 | 2026-12-28 → 2026-12-30 (+2d) | 2027-01-05 → 2027-01-08 (+3d) |  |  | 110.25d → 107.28d |
| 284 | INSTALACIONES ELECTRICAS Y SISTEMA PUESTA TIERRA WP22 | 2027-01-05 → 2027-01-08 (+3d) | 2027-01-08 → 2027-01-12 (+4d) |  |  | 110.25d → 107.28d |
| 285 | INSTALACION DE GROUT Y MORTERO AUTOCOMPACTANTE DE ALTA RESISTENCIA WP22 | 2027-01-08 → 2027-01-12 (+4d) | 2027-01-12 → 2027-01-14 (+2d) |  |  | 110.25d → 107.28d |
| 286 | TAPADO AREA DE CIMENTACIÓN Y CONFORMACIÓN DE PLATAFORMA WP22 | 2027-01-08 → 2027-01-12 (+4d) | 2027-01-20 → 2027-01-22 (+2d) |  |  | 110.25d → 107.28d |
| 287 | ESTABILIZACIÓN DE TALUDES EN PLATAFORMA Y RECONFORMACION FINAL WP22 | 2027-01-12 → 2027-01-14 (+2d) | 2027-01-23 → 2027-01-27 (+4d) |  |  | 110.25d → 107.28d |
| 288 | HITO: FINALIZACION DE ACTIVIDADES EN CIMENTACION WP22 | 2027-01-23 → 2027-01-27 (+4d) | 2027-01-23 → 2027-01-27 (+4d) |  |  | 194.25d → 191.28d |
| 289 | **CIMENTACION WP5** |  | 2027-02-02 → 2027-02-05 (+3d) | 168d → 170.97d |  | 185.62d → 182.65d |
| 290 | LOCALIZACION, REPLANTEO Y DESBROCE DE AREA DE ACOPIO DE TORRE Y DE PALAS WP5 |  | 2026-11-21 → 2026-11-25 (+4d) | 104d → 106.97d |  | 26.62d → 23.65d |
| 291 | EXCAVACIÓN DE CIMENTACION WP5 | 2026-11-21 → 2026-11-25 (+4d) | 2026-11-30 → 2026-12-02 (+2d) |  |  | 26.62d → 23.65d |
| 292 | BANCO DE DUCTO WP5 | 2026-11-30 → 2026-12-02 (+2d) | 2026-12-02 → 2026-12-05 (+3d) |  |  | 49.62d → 46.65d |
| 293 | COMPACTACION DE SELLO DE BASE WP5 | 2026-12-02 → 2026-12-05 (+3d) | 2026-12-07 → 2026-12-11 (+4d) |  |  | 49.62d → 46.65d |
| 294 | SOLADO WP5 | 2026-12-07 → 2026-12-11 (+4d) | 2026-12-10 → 2026-12-12 (+2d) |  |  | 49.62d → 46.65d |
| 295 | INSTALACIÓN DE PERNOS Y SOFT-SPOT WP5 | 2026-12-10 → 2026-12-12 (+2d) | 2026-12-15 → 2026-12-18 (+3d) |  |  | 49.62d → 46.65d |

| ID | Task | Start | Finish | Duration | Complete | Total float | Predecessors |
| --- | --- | --- | --- | --- | --- | --- | --- |
| 296 | INSTALACIÓN DE ACERO DE REFUERZO WP5 | 2026-12-15 → 2026-12-18 (+3d) | 2027-01-02 → 2027-01-06 (+4d) |  |  | 49.62d → 46.65d |  |
| 297 | ENCOFRADO DE ZAPATA Y DE PEDESTAL WP5 | 2027-01-02 → 2027-01-06 (+4d) | 2027-01-06 → 2027-01-08 (+2d) |  |  | 101.62d → 98.65d |  |
| 298 | HITO: ALISTAMIENTO Y MOVILIZACIÓN DE PLANTA DE CONCRETO PARA WP5 | 2027-01-02 → 2027-01-06 (+4d) | 2027-01-02 → 2027-01-06 (+4d) |  |  | 104.62d → 101.65d |  |
| 299 | FUNDIDA WP5 | 2027-01-06 → 2027-01-08 (+2d) | 2027-01-07 → 2027-01-09 (+2d) |  |  | 101.62d → 98.65d |  |
| 300 | CURADO DEL CONCRETO WP5 | 2027-01-07 → 2027-01-09 (+2d) | 2027-01-15 → 2027-01-19 (+4d) |  |  | 101.62d → 98.65d |  |
| 301 | INSTALACIONES ELECTRICAS Y SISTEMA PUESTA TIERRA WP5 | 2027-01-15 → 2027-01-19 (+4d) | 2027-01-19 → 2027-01-21 (+2d) |  |  | 101.62d → 98.65d |  |
| 302 | INSTALACION DE GROUT Y MORTERO AUTOCOMPACTANTE DE ALTA RESISTENCIA WP5 | 2027-01-19 → 2027-01-21 (+2d) | 2027-01-20 → 2027-01-23 (+3d) |  |  | 101.62d → 98.65d |  |
| 303 | TAPADO AREA DE CIMENTACIÓN Y CONFORMACIÓN DE PLATAFORMA WP5 | 2027-01-19 → 2027-01-21 (+2d) | 2027-01-29 → 2027-02-01 (+3d) |  |  | 101.62d → 98.65d |  |
| 304 | ESTABILIZACIÓN DE TALUDES EN PLATAFORMA Y RECONFORMACION FINAL WP5 | 2027-01-20 → 2027-01-23 (+3d) | 2027-02-02 → 2027-02-05 (+3d) |  |  | 101.62d → 98.65d |  |
| 305 | HITO: FINALIZACION DE ACTIVIDADES EN CIMENTACION WP5 | 2027-02-02 → 2027-02-05 (+3d) | 2027-02-02 → 2027-02-05 (+3d) |  |  | 185.62d → 182.65d |  |
| 306 | **CIMENTACION WP6** |  | 2027-02-10 → 2027-02-12 (+2d) | 175d → 177.97d | 12% → 0% | 178.62d → 175.65d |  |
| 307 | LOCALIZACION, REPLANTEO Y DESBROCE DE AREA DE ACOPIO DE TORRE Y DE PALAS WP6 |  | 2026-11-23 → 2026-11-25 (+2d) | 105d → 107.35d | 20% → 0% | 0d → 30.27d |  |
| 308 | EXCAVACIÓN DE CIMENTACION WP6 | 2026-11-30 → 2026-12-02 (+2d) | 2026-12-07 → 2026-12-11 (+4d) |  |  | 26.62d → 23.65d |  |
| 309 | BANCO DE DUCTO WP6 | 2026-12-07 → 2026-12-11 (+4d) | 2026-12-11 → 2026-12-14 (+3d) |  |  | 26.62d → 23.65d |  |
| 310 | COMPACTACION DE SELLO DE BASE WP6 | 2026-12-11 → 2026-12-14 (+3d) | 2026-12-15 → 2026-12-18 (+3d) |  |  | 26.62d → 23.65d |  |
| 311 | SOLADO WP6 | 2026-12-15 → 2026-12-18 (+3d) | 2026-12-17 → 2026-12-21 (+4d) |  |  | 26.62d → 23.65d |  |
| 312 | INSTALACIÓN DE PERNOS Y SOFT-SPOT WP6 | 2026-12-17 → 2026-12-21 (+4d) | 2026-12-23 → 2026-12-26 (+3d) |  |  | 26.62d → 23.65d |  |
| 313 | INSTALACIÓN DE ACERO DE REFUERZO WP6 | 2026-12-23 → 2026-12-26 (+3d) | 2027-01-09 → 2027-01-14 (+5d) |  |  | 26.62d → 23.65d |  |
| 314 | ENCOFRADO DE ZAPATA Y DE PEDESTAL WP6 | 2027-01-09 → 2027-01-14 (+5d) | 2027-01-14 → 2027-01-18 (+4d) |  |  | 96.62d → 93.65d |  |
| 315 | HITO: ALISTAMIENTO Y MOVILIZACIÓN DE PLANTA DE CONCRETO PARA WP6 | 2027-01-09 → 2027-01-14 (+5d) | 2027-01-09 → 2027-01-14 (+5d) |  |  | 99.62d → 96.65d |  |
| 316 | FUNDIDA WP6 | 2027-01-14 → 2027-01-18 (+4d) | 2027-01-15 → 2027-01-19 (+4d) |  |  | 96.62d → 93.65d |  |
| 317 | CURADO DEL CONCRETO WP6 | 2027-01-15 → 2027-01-19 (+4d) | 2027-01-22 → 2027-01-26 (+4d) |  |  | 96.62d → 93.65d |  |
| 318 | INSTALACIONES ELECTRICAS Y SISTEMA PUESTA TIERRA WP6 | 2027-01-22 → 2027-01-26 (+4d) | 2027-01-26 → 2027-01-29 (+3d) |  |  | 96.62d → 93.65d |  |
| 319 | INSTALACION DE GROUT Y MORTERO AUTOCOMPACTANTE DE ALTA RESISTENCIA WP6 | 2027-01-26 → 2027-01-29 (+3d) | 2027-01-28 → 2027-01-30 (+2d) |  |  | 96.62d → 93.65d |  |
| 320 | TAPADO AREA DE CIMENTACIÓN Y CONFORMACIÓN DE PLATAFORMA WP6 | 2027-01-26 → 2027-01-29 (+3d) | 2027-02-05 → 2027-02-09 (+4d) |  |  | 96.62d → 93.65d |  |
| 321 | ESTABILIZACIÓN DE TALUDES EN PLATAFORMA Y RECONFORMACION FINAL WP6 | 2027-01-28 → 2027-01-30 (+2d) | 2027-02-10 → 2027-02-12 (+2d) |  |  | 96.62d → 93.65d |  |
| 322 | HITO: FINALIZACION DE ACTIVIDADES EN CIMENTACION WP6 | 2027-02-10 → 2027-02-12 (+2d) | 2027-02-10 → 2027-02-12 (+2d) |  |  | 178.62d → 175.65d |  |
| 323 | **CIMENTACION WP42** | 2026-11-23 → 2026-11-25 (+2d) | 2027-02-17 → 2027-02-20 (+3d) | 77d → 77.62d |  | 0d → 30.27d |  |
| 324 | LOCALIZACION, REPLANTEO Y DESBROCE DE AREA DE ACOPIO DE TORRE Y DE PALAS WP42 | 2026-11-23 → 2026-11-25 (+2d) | 2026-12-01 → 2026-12-04 (+3d) |  |  | 0d → 30.27d |  |
| 325 | EXCAVACIÓN DE CIMENTACION WP42 | 2026-12-07 → 2026-12-11 (+4d) | 2026-12-15 → 2026-12-18 (+3d) |  |  | 27.62d → 24.65d |  |
| 326 | BANCO DE DUCTO WP42 | 2026-12-15 → 2026-12-18 (+3d) | 2026-12-18 → 2026-12-22 (+4d) |  |  | 39.62d → 36.65d |  |
| 327 | COMPACTACION DE SELLO DE BASE WP42 | 2026-12-18 → 2026-12-22 (+4d) | 2026-12-23 → 2026-12-26 (+3d) |  |  | 39.62d → 36.65d |  |
| 328 | SOLADO WP42 | 2026-12-23 → 2026-12-26 (+3d) | 2026-12-24 → 2026-12-29 (+5d) |  |  | 39.62d → 36.65d |  |
| 329 | INSTALACIÓN DE PERNOS Y SOFT-SPOT WP42 | 2026-12-26 → 2026-12-29 (+3d) | 2026-12-31 → 2027-01-05 (+5d) |  |  | 39.62d → 36.65d |  |
| 330 | INSTALACIÓN DE ACERO DE REFUERZO WP42 | 2026-12-31 → 2027-01-05 (+5d) | 2027-01-19 → 2027-01-21 (+2d) |  |  | 39.62d → 36.65d |  |
| 331 | ENCOFRADO DE ZAPATA Y DE PEDESTAL WP42 | 2027-01-19 → 2027-01-21 (+2d) | 2027-01-21 → 2027-01-25 (+4d) |  |  | 99.62d → 96.65d |  |
| 332 | HITO: ALISTAMIENTO Y MOVILIZACIÓN DE PLANTA DE CONCRETO PARA WP42 | 2027-01-19 → 2027-01-21 (+2d) | 2027-01-19 → 2027-01-21 (+2d) |  |  | 102.62d → 99.65d |  |
| 333 | FUNDIDA WP42 | 2027-01-21 → 2027-01-25 (+4d) | 2027-01-22 → 2027-01-26 (+4d) |  |  | 99.62d → 96.65d |  |
| 334 | CURADO DEL CONCRETO WP42 | 2027-01-22 → 2027-01-26 (+4d) | 2027-01-29 → 2027-02-02 (+4d) |  |  | 99.62d → 96.65d |  |
| 335 | INSTALACIONES ELECTRICAS Y SISTEMA PUESTA TIERRA WP42 | 2027-01-30 → 2027-02-02 (+3d) | 2027-02-02 → 2027-02-05 (+3d) |  |  | 99.62d → 96.65d |  |
| 336 | INSTALACION DE GROUT Y MORTERO AUTOCOMPACTANTE DE ALTA RESISTENCIA WP42 | 2027-02-02 → 2027-02-05 (+3d) | 2027-02-04 → 2027-02-08 (+4d) |  |  | 99.62d → 96.65d |  |
| 337 | TAPADO AREA DE CIMENTACIÓN Y CONFORMACIÓN DE PLATAFORMA WP42 | 2027-02-02 → 2027-02-05 (+3d) | 2027-02-12 → 2027-02-16 (+4d) |  |  | 99.62d → 96.65d |  |
| 338 | ESTABILIZACIÓN DE TALUDES EN PLATAFORMA Y RECONFORMACION FINAL WP42 | 2027-02-04 → 2027-02-08 (+4d) | 2027-02-17 → 2027-02-20 (+3d) |  |  | 99.62d → 96.65d |  |
| 339 | HITO: FINALIZACION DE ACTIVIDADES EN CIMENTACION WP42 | 2027-02-17 → 2027-02-20 (+3d) | 2027-02-17 → 2027-02-20 (+3d) |  |  | 171.62d → 168.65d |  |
| 340 | **CIMENTACION WP41** | 2026-12-02 → 2026-08-29 A (-95d) | 2027-02-25 → 2027-03-01 (+4d) | 77d → 166.35d | 0% → 1% | 0d → 160.65d |  |
| 341 | LOCALIZACION, REPLANTEO Y DESBROCE DE AREA DE ACOPIO DE TORRE Y DE PALAS WP41 | 2026-12-02 → 2026-08-29 A (-95d) | 2026-12-11 → 2026-09-19 (-83d) | 8d → 20.57d | 0% → 4% |  | 324, 13 → 13FS+40d |
| 342 | EXCAVACIÓN DE CIMENTACION WP41 | 2026-12-15 → 2026-12-18 (+3d) | 2026-12-23 → 2026-12-26 (+3d) |  |  | 27.62d → 24.65d |  |
| 343 | BANCO DE DUCTO WP41 | 2026-12-23 → 2026-12-26 (+3d) | 2026-12-26 → 2026-12-30 (+4d) |  |  | 50.62d → 47.65d |  |
| 344 | COMPACTACION DE SELLO DE BASE WP41 | 2026-12-26 → 2026-12-30 (+4d) | 2026-12-31 → 2027-01-05 (+5d) |  |  | 50.62d → 47.65d |  |
| 345 | SOLADO WP41 | 2027-01-02 → 2027-01-06 (+4d) | 2027-01-05 → 2027-01-07 (+2d) |  |  | 49.62d → 46.65d |  |
| 346 | INSTALACIÓN DE PERNOS Y SOFT-SPOT WP41 | 2027-01-05 → 2027-01-07 (+2d) | 2027-01-09 → 2027-01-14 (+5d) |  |  | 49.62d → 46.65d |  |
| 347 | INSTALACIÓN DE ACERO DE REFUERZO WP41 | 2027-01-09 → 2027-01-14 (+5d) | 2027-01-27 → 2027-01-29 (+2d) |  |  | 49.62d → 46.65d |  |
| 348 | ENCOFRADO DE ZAPATA Y DE PEDESTAL WP41 | 2027-01-27 → 2027-01-29 (+2d) | 2027-01-29 → 2027-02-02 (+4d) |  |  | 91.62d → 88.65d |  |
| 349 | HITO: ALISTAMIENTO Y MOVILIZACIÓN DE PLANTA DE CONCRETO PARA WP41 | 2027-01-27 → 2027-01-29 (+2d) | 2027-01-27 → 2027-01-29 (+2d) |  |  | 94.62d → 91.65d |  |
| 350 | FUNDIDA WP41 | 2027-01-30 → 2027-02-02 (+3d) | 2027-01-30 → 2027-02-03 (+4d) |  |  | 91.62d → 88.65d |  |
| 351 | CURADO DEL CONCRETO WP41 | 2027-01-30 → 2027-02-03 (+4d) | 2027-02-08 → 2027-02-10 (+2d) |  |  | 91.62d → 88.65d |  |
| 352 | INSTALACIONES ELECTRICAS Y SISTEMA PUESTA TIERRA WP41 | 2027-02-08 → 2027-02-10 (+2d) | 2027-02-10 → 2027-02-13 (+3d) |  |  | 91.62d → 88.65d |  |
| 353 | INSTALACION DE GROUT Y MORTERO AUTOCOMPACTANTE DE ALTA RESISTENCIA WP41 | 2027-02-11 → 2027-02-13 (+2d) | 2027-02-12 → 2027-02-16 (+4d) |  |  | 91.62d → 88.65d |  |
| 354 | TAPADO AREA DE CIMENTACIÓN Y CONFORMACIÓN DE PLATAFORMA WP41 | 2027-02-11 → 2027-02-13 (+2d) | 2027-02-20 → 2027-02-24 (+4d) |  |  | 91.62d → 88.65d |  |
| 355 | ESTABILIZACIÓN DE TALUDES EN PLATAFORMA Y RECONFORMACION FINAL WP41 | 2027-02-12 → 2027-02-16 (+4d) | 2027-02-25 → 2027-03-01 (+4d) |  |  | 91.62d → 88.65d |  |
| 356 | HITO: FINALIZACION DE ACTIVIDADES EN CIMENTACION WP41 | 2027-02-25 → 2027-03-01 (+4d) | 2027-02-25 → 2027-03-01 (+4d) |  |  | 163.62d → 160.65d |  |
| 357 | **CIMENTACION WP40** | 2026-12-11 → 2026-09-19 (-83d) | 2027-03-04 → 2027-03-08 (+4d) | 76d → 152.78d |  |  |  |
| 358 | LOCALIZACION, REPLANTEO Y DESBROCE DE AREA DE ACOPIO DE TORRE Y DE PALAS WP40 | 2026-12-11 → 2026-09-19 (-83d) | 2026-12-19 → 2026-09-28 (-82d) |  |  |  |  |
| 359 | EXCAVACIÓN DE CIMENTACION WP40 | 2026-12-23 → 2026-12-26 (+3d) | 2026-12-31 → 2027-01-05 (+5d) |  |  | 27.62d → 24.65d |  |
| 360 | BANCO DE DUCTO WP40 | 2026-12-31 → 2027-01-05 (+5d) | 2027-01-05 → 2027-01-07 (+2d) |  |  | 27.62d → 24.65d |  |
| 361 | COMPACTACION DE SELLO DE BASE WP40 | 2027-01-05 → 2027-01-07 (+2d) | 2027-01-08 → 2027-01-13 (+5d) |  |  | 27.62d → 24.65d |  |
| 362 | SOLADO WP40 | 2027-01-09 → 2027-01-14 (+5d) | 2027-01-13 → 2027-01-16 (+3d) |  |  | 26.62d → 23.65d |  |
| 363 | INSTALACIÓN DE PERNOS Y SOFT-SPOT WP40 | 2027-01-13 → 2027-01-16 (+3d) | 2027-01-19 → 2027-01-21 (+2d) |  |  | 26.62d → 23.65d |  |
| 364 | INSTALACIÓN DE ACERO DE REFUERZO WP40 | 2027-01-19 → 2027-01-21 (+2d) | 2027-02-03 → 2027-02-06 (+3d) |  |  | 26.62d → 23.65d |  |
| 365 | ENCOFRADO DE ZAPATA Y DE PEDESTAL WP40 | 2027-02-03 → 2027-02-06 (+3d) | 2027-02-06 → 2027-02-10 (+4d) |  |  | 86.62d → 83.65d |  |

| ID | Task | Start | Finish | Duration | Total float |
| --- | --- | --- | --- | --- | --- |
| 366 | HITO: ALISTAMIENTO Y MOVILIZACIÓN DE PLANTA DE CONCRETO PARA WP40 | 2027-02-03 → 2027-02-06 (+3d) | 2027-02-03 → 2027-02-06 (+3d) |  | 89.62d → 86.65d |
| 367 | FUNDIDA WP40 | 2027-02-06 → 2027-02-10 (+4d) | 2027-02-08 → 2027-02-10 (+2d) |  | 86.62d → 83.65d |
| 368 | CURADO DEL CONCRETO WP40 | 2027-02-08 → 2027-02-10 (+2d) | 2027-02-15 → 2027-02-18 (+3d) |  | 86.62d → 83.65d |
| 369 | INSTALACIONES ELECTRICAS Y SISTEMA PUESTA TIERRA WP40 | 2027-02-15 → 2027-02-18 (+3d) | 2027-02-18 → 2027-02-20 (+2d) |  | 86.62d → 83.65d |
| 370 | INSTALACION DE GROUT Y MORTERO AUTOCOMPACTANTE DE ALTA RESISTENCIA WP40 | 2027-02-18 → 2027-02-20 (+2d) | 2027-02-20 → 2027-02-23 (+3d) |  | 86.62d → 83.65d |
| 371 | TAPADO AREA DE CIMENTACIÓN Y CONFORMACIÓN DE PLATAFORMA WP40 | 2027-02-18 → 2027-02-20 (+2d) | 2027-03-01 → 2027-03-04 (+3d) |  | 86.62d → 83.65d |
| 372 | ESTABILIZACIÓN DE TALUDES EN PLATAFORMA Y RECONFORMACION FINAL WP40 | 2027-02-20 → 2027-02-23 (+3d) | 2027-03-04 → 2027-03-08 (+4d) |  | 86.62d → 83.65d |
| 373 | HITO: FINALIZACION DE ACTIVIDADES EN CIMENTACION WP40 | 2027-03-04 → 2027-03-08 (+4d) | 2027-03-04 → 2027-03-08 (+4d) |  | 156.62d → 153.65d |
| 374 | **CIMENTACION WP39** | 2026-12-19 → 2026-09-28 (-82d) | 2027-03-12 → 2027-03-16 (+4d) | 75d → 151.78d |  |
| 375 | LOCALIZACION, REPLANTEO Y DESBROCE DE AREA DE ACOPIO DE TORRE Y DE PALAS WP39 | 2026-12-19 → 2026-09-28 (-82d) | 2026-12-29 → 2026-10-07 (-83d) |  |  |
| 376 | EXCAVACIÓN DE CIMENTACION WP39 | 2026-12-31 → 2027-01-05 (+5d) | 2027-01-08 → 2027-01-13 (+5d) |  | 28.62d → 25.65d |
| 377 | BANCO DE DUCTO WP39 | 2027-01-08 → 2027-01-13 (+5d) | 2027-01-13 → 2027-01-16 (+3d) |  | 40.62d → 37.65d |
| 378 | COMPACTACION DE SELLO DE BASE WP39 | 2027-01-13 → 2027-01-16 (+3d) | 2027-01-18 → 2027-01-20 (+2d) |  | 40.62d → 37.65d |
| 379 | SOLADO WP39 | 2027-01-19 → 2027-01-21 (+2d) | 2027-01-20 → 2027-01-23 (+3d) |  | 39.62d → 36.65d |
| 380 | INSTALACIÓN DE PERNOS Y SOFT-SPOT WP39 | 2027-01-20 → 2027-01-23 (+3d) | 2027-01-26 → 2027-01-29 (+3d) |  | 39.62d → 36.65d |
| 381 | INSTALACIÓN DE ACERO DE REFUERZO WP39 | 2027-01-26 → 2027-01-29 (+3d) | 2027-02-10 → 2027-02-13 (+3d) |  | 39.62d → 36.65d |
| 382 | ENCOFRADO DE ZAPATA Y DE PEDESTAL WP39 | 2027-02-11 → 2027-02-13 (+2d) | 2027-02-13 → 2027-02-17 (+4d) |  | 89.62d → 86.65d |
| 383 | HITO: ALISTAMIENTO Y MOVILIZACIÓN DE PLANTA DE CONCRETO PARA WP39 | 2027-02-10 → 2027-02-13 (+3d) | 2027-02-10 → 2027-02-13 (+3d) |  | 92.62d → 89.65d |
| 384 | FUNDIDA WP39 | 2027-02-13 → 2027-02-17 (+4d) | 2027-02-15 → 2027-02-18 (+3d) |  | 89.62d → 86.65d |
| 385 | CURADO DEL CONCRETO WP39 | 2027-02-15 → 2027-02-18 (+3d) | 2027-02-22 → 2027-02-25 (+3d) |  | 89.62d → 86.65d |
| 386 | INSTALACIONES ELECTRICAS Y SISTEMA PUESTA TIERRA WP39 | 2027-02-23 → 2027-02-25 (+2d) | 2027-02-25 → 2027-03-01 (+4d) |  | 89.62d → 86.65d |
| 387 | INSTALACION DE GROUT Y MORTERO AUTOCOMPACTANTE DE ALTA RESISTENCIA WP39 | 2027-02-25 → 2027-03-01 (+4d) | 2027-02-27 → 2027-03-03 (+4d) |  | 89.62d → 86.65d |
| 388 | TAPADO AREA DE CIMENTACIÓN Y CONFORMACIÓN DE PLATAFORMA WP39 | 2027-02-25 → 2027-03-01 (+4d) | 2027-03-08 → 2027-03-11 (+3d) |  | 89.62d → 86.65d |
| 389 | ESTABILIZACIÓN DE TALUDES EN PLATAFORMA Y RECONFORMACION FINAL WP39 | 2027-02-27 → 2027-03-03 (+4d) | 2027-03-12 → 2027-03-16 (+4d) |  | 89.62d → 86.65d |
| 390 | HITO: FINALIZACION DE ACTIVIDADES EN CIMENTACION WP39 | 2027-03-12 → 2027-03-16 (+4d) | 2027-03-12 → 2027-03-16 (+4d) |  | 149.62d → 146.65d |
| 391 | **CIMENTACION WP23** |  | 2027-03-20 → 2027-03-27 (+7d) | 207.62d → 210.6d | 141.62d → 138.65d |
| 393 | EXCAVACIÓN DE CIMENTACION WP23 | 2027-01-08 → 2027-01-13 (+5d) | 2027-01-18 → 2027-01-20 (+2d) |  | 28.62d → 25.65d |
| 394 | BANCO DE DUCTO WP23 | 2027-01-18 → 2027-01-20 (+2d) | 2027-01-20 → 2027-01-23 (+3d) |  | 40.62d → 37.65d |
| 395 | COMPACTACION DE SELLO DE BASE WP23 | 2027-01-20 → 2027-01-23 (+3d) | 2027-01-25 → 2027-01-28 (+3d) |  | 51.62d → 48.65d |
| 396 | SOLADO WP23 | 2027-01-27 → 2027-01-29 (+2d) | 2027-01-29 → 2027-02-01 (+3d) |  | 49.62d → 46.65d |
| 397 | INSTALACIÓN DE PERNOS Y SOFT-SPOT WP23 | 2027-01-29 → 2027-02-01 (+3d) | 2027-02-03 → 2027-02-06 (+3d) |  | 49.62d → 46.65d |
| 398 | INSTALACIÓN DE ACERO DE REFUERZO WP23 | 2027-02-03 → 2027-02-06 (+3d) | 2027-02-19 → 2027-02-22 (+3d) |  | 49.62d → 46.65d |
| 399 | ENCOFRADO DE ZAPATA Y DE PEDESTAL WP23 | 2027-02-19 → 2027-02-22 (+3d) | 2027-02-22 → 2027-02-25 (+3d) |  | 81.62d → 78.65d |
| 400 | HITO: ALISTAMIENTO Y MOVILIZACIÓN DE PLANTA DE CONCRETO PARA WP23 | 2027-02-19 → 2027-02-22 (+3d) | 2027-02-19 → 2027-02-22 (+3d) |  | 84.62d → 81.65d |
| 401 | FUNDIDA WP23 | 2027-02-23 → 2027-02-25 (+2d) | 2027-02-23 → 2027-02-26 (+3d) |  | 81.62d → 78.65d |
| 402 | CURADO DEL CONCRETO WP23 | 2027-02-23 → 2027-02-26 (+3d) | 2027-03-03 → 2027-03-05 (+2d) |  | 81.62d → 78.65d |
| 403 | INSTALACIONES ELECTRICAS Y SISTEMA PUESTA TIERRA WP23 | 2027-03-03 → 2027-03-05 (+2d) | 2027-03-05 → 2027-03-09 (+4d) |  | 81.62d → 78.65d |
| 404 | INSTALACION DE GROUT Y MORTERO AUTOCOMPACTANTE DE ALTA RESISTENCIA WP23 | 2027-03-05 → 2027-03-09 (+4d) | 2027-03-08 → 2027-03-11 (+3d) |  | 81.62d → 78.65d |
| 405 | TAPADO AREA DE CIMENTACIÓN Y CONFORMACIÓN DE PLATAFORMA WP23 | 2027-03-05 → 2027-03-09 (+4d) | 2027-03-16 → 2027-03-19 (+3d) |  | 81.62d → 78.65d |
| 406 | ESTABILIZACIÓN DE TALUDES EN PLATAFORMA Y RECONFORMACION FINAL WP23 | 2027-03-08 → 2027-03-11 (+3d) | 2027-03-20 → 2027-03-27 (+7d) |  | 81.62d → 78.65d |
| 407 | HITO: FINALIZACION DE ACTIVIDADES EN CIMENTACION WP23 | 2027-03-20 → 2027-03-27 (+7d) | 2027-03-20 → 2027-03-27 (+7d) |  | 141.62d → 138.65d |
| 408 | **CIMENTACION WP24** |  | 2027-03-31 → 2027-04-03 (+3d) | 212.38d → 215.35d | 134.62d → 131.65d |
| 410 | EXCAVACIÓN DE CIMENTACION WP24 | 2027-01-18 → 2027-01-20 (+2d) | 2027-01-26 → 2027-01-28 (+2d) |  | 28d → 25.65d |
| 411 | BANCO DE DUCTO WP24 | 2027-01-26 → 2027-01-28 (+2d) | 2027-01-28 → 2027-01-30 (+2d) |  | 28d → 25.65d |
| 412 | COMPACTACION DE SELLO DE BASE WP24 | 2027-01-28 → 2027-01-30 (+2d) | 2027-02-02 → 2027-02-04 (+2d) |  | 28d → 25.65d |
| 413 | SOLADO WP24 | 2027-02-03 → 2027-02-06 (+3d) | 2027-02-05 → 2027-02-09 (+4d) |  | 26.62d → 23.65d |
| 414 | INSTALACIÓN DE PERNOS Y SOFT-SPOT WP24 | 2027-02-05 → 2027-02-09 (+4d) | 2027-02-10 → 2027-02-13 (+3d) |  | 26.62d → 23.65d |
| 415 | INSTALACIÓN DE ACERO DE REFUERZO WP24 | 2027-02-11 → 2027-02-13 (+2d) | 2027-02-26 → 2027-03-02 (+4d) |  | 26.62d → 23.65d |
| 416 | ENCOFRADO DE ZAPATA Y DE PEDESTAL WP24 | 2027-02-26 → 2027-03-02 (+4d) | 2027-03-02 → 2027-03-04 (+2d) |  | 76.62d → 73.65d |
| 417 | HITO: ALISTAMIENTO Y MOVILIZACIÓN DE PLANTA DE CONCRETO PARA WP24 | 2027-02-26 → 2027-03-02 (+4d) | 2027-02-26 → 2027-03-02 (+4d) |  | 79.62d → 76.65d |
| 418 | FUNDIDA WP24 | 2027-03-02 → 2027-03-04 (+2d) | 2027-03-03 → 2027-03-05 (+2d) |  | 76.62d → 73.65d |
| 419 | CURADO DEL CONCRETO WP24 | 2027-03-03 → 2027-03-05 (+2d) | 2027-03-10 → 2027-03-13 (+3d) |  | 76.62d → 73.65d |
| 420 | INSTALACIONES ELECTRICAS Y SISTEMA PUESTA TIERRA WP24 | 2027-03-10 → 2027-03-13 (+3d) | 2027-03-13 → 2027-03-16 (+3d) |  | 76.62d → 73.65d |
| 421 | INSTALACION DE GROUT Y MORTERO AUTOCOMPACTANTE DE ALTA RESISTENCIA WP24 | 2027-03-13 → 2027-03-16 (+3d) | 2027-03-16 → 2027-03-18 (+2d) |  | 76.62d → 73.65d |
| 422 | TAPADO AREA DE CIMENTACIÓN Y CONFORMACIÓN DE PLATAFORMA WP24 | 2027-03-13 → 2027-03-16 (+3d) | 2027-03-27 → 2027-03-30 (+3d) |  | 76.62d → 73.65d |
| 423 | ESTABILIZACIÓN DE TALUDES EN PLATAFORMA Y RECONFORMACION FINAL WP24 | 2027-03-16 → 2027-03-18 (+2d) | 2027-03-31 → 2027-04-03 (+3d) |  | 76.62d → 73.65d |
| 424 | HITO: FINALIZACION DE ACTIVIDADES EN CIMENTACION WP24 | 2027-03-31 → 2027-04-03 (+3d) | 2027-03-31 → 2027-04-03 (+3d) |  | 134.62d → 131.65d |
| 425 | **CIMENTACION WP25** |  | 2027-04-08 → 2027-04-10 (+2d) | 217.12d → 220.1d | 127.62d → 124.65d |
| 427 | EXCAVACIÓN DE CIMENTACION WP25 | 2027-01-27 → 2027-01-28 (+1d) | 2027-02-03 → 2027-02-04 (+1d) |  | 27.75d → 26.65d |
| 428 | BANCO DE DUCTO WP25 | 2027-02-03 → 2027-02-04 (+1d) | 2027-02-06 → 2027-02-08 (+2d) |  | 39.75d → 38.65d |
| 429 | COMPACTACION DE SELLO DE BASE WP25 | 2027-02-06 → 2027-02-08 (+2d) | 2027-02-10 → 2027-02-11 (+1d) |  | 39.75d → 38.65d |
| 430 | SOLADO WP25 | 2027-02-11 → 2027-02-13 (+2d) | 2027-02-12 → 2027-02-16 (+4d) |  | 39.62d → 36.65d |
| 431 | INSTALACIÓN DE PERNOS Y SOFT-SPOT WP25 | 2027-02-12 → 2027-02-16 (+4d) | 2027-02-18 → 2027-02-20 (+2d) |  | 39.62d → 36.65d |
| 432 | INSTALACIÓN DE ACERO DE REFUERZO WP25 | 2027-02-18 → 2027-02-20 (+2d) | 2027-03-05 → 2027-03-09 (+4d) |  | 39.62d → 36.65d |
| 433 | ENCOFRADO DE ZAPATA Y DE PEDESTAL WP25 | 2027-03-05 → 2027-03-09 (+4d) | 2027-03-09 → 2027-03-12 (+3d) |  | 79.62d → 76.65d |
| 434 | HITO: ALISTAMIENTO Y MOVILIZACIÓN DE PLANTA DE CONCRETO PARA WP25 | 2027-03-05 → 2027-03-09 (+4d) | 2027-03-05 → 2027-03-09 (+4d) |  | 82.62d → 79.65d |
| 435 | FUNDIDA WP25 | 2027-03-09 → 2027-03-12 (+3d) | 2027-03-10 → 2027-03-13 (+3d) |  | 79.62d → 76.65d |
| 436 | CURADO DEL CONCRETO WP25 | 2027-03-10 → 2027-03-13 (+3d) | 2027-03-17 → 2027-03-20 (+3d) |  | 79.62d → 76.65d |
| 437 | INSTALACIONES ELECTRICAS Y SISTEMA PUESTA TIERRA WP25 | 2027-03-17 → 2027-03-20 (+3d) | 2027-03-20 → 2027-03-27 (+7d) |  | 79.62d → 76.65d |
| 438 | INSTALACION DE GROUT Y MORTERO AUTOCOMPACTANTE DE ALTA RESISTENCIA WP25 | 2027-03-20 → 2027-03-27 (+7d) | 2027-03-24 → 2027-03-30 (+6d) |  | 79.62d → 76.65d |

| ID | Task | Start | Finish | Duration | Total float |
| --- | --- | --- | --- | --- | --- |
| 439 | TAPADO AREA DE CIMENTACIÓN Y CONFORMACIÓN DE PLATAFORMA WP25 | 2027-03-20 → 2027-03-27 (+7d) | 2027-04-03 → 2027-04-07 (+4d) |  | 79.62d → 76.65d |
| 440 | ESTABILIZACIÓN DE TALUDES EN PLATAFORMA Y RECONFORMACION FINAL WP25 | 2027-03-24 → 2027-03-30 (+6d) | 2027-04-08 → 2027-04-10 (+2d) |  | 79.62d → 76.65d |
| 441 | HITO: FINALIZACION DE ACTIVIDADES EN CIMENTACION WP25 | 2027-04-08 → 2027-04-10 (+2d) | 2027-04-08 → 2027-04-10 (+2d) |  | 127.62d → 124.65d |
| 442 | **CIMENTACION WP26** |  | 2027-04-16 → 2027-04-17 (+1d) | 222d → 222.85d | 119.5d → 118.65d |
| 448 | INSTALACIÓN DE PERNOS Y SOFT-SPOT WP26 |  | 2027-02-26 → 2027-02-27 (+1d) |  | 47.5d → 46.65d |
| 449 | INSTALACIÓN DE ACERO DE REFUERZO WP26 | 2027-02-26 → 2027-02-27 (+1d) | 2027-03-15 → 2027-03-16 (+1d) |  | 47.5d → 46.65d |
| 450 | ENCOFRADO DE ZAPATA Y DE PEDESTAL WP26 | 2027-03-15 → 2027-03-16 (+1d) | 2027-03-17 → 2027-03-18 (+1d) |  | 71.5d → 70.65d |
| 451 | HITO: ALISTAMIENTO Y MOVILIZACIÓN DE PLANTA DE CONCRETO PARA WP26 | 2027-03-15 → 2027-03-16 (+1d) | 2027-03-15 → 2027-03-16 (+1d) |  | 74.5d → 73.65d |
| 452 | FUNDIDA WP26 |  | 2027-03-18 → 2027-03-19 (+1d) |  | 71.5d → 70.65d |
| 453 | CURADO DEL CONCRETO WP26 | 2027-03-18 → 2027-03-19 (+1d) |  |  | 71.5d → 70.65d |
| 454 | INSTALACIONES ELECTRICAS Y SISTEMA PUESTA TIERRA WP26 |  | 2027-04-01 → 2027-04-02 (+1d) |  | 71.5d → 70.65d |
| 455 | INSTALACION DE GROUT Y MORTERO AUTOCOMPACTANTE DE ALTA RESISTENCIA WP26 | 2027-04-01 → 2027-04-02 (+1d) | 2027-04-03 → 2027-04-05 (+2d) |  | 71.5d → 70.65d |
| 456 | TAPADO AREA DE CIMENTACIÓN Y CONFORMACIÓN DE PLATAFORMA WP26 | 2027-04-01 → 2027-04-02 (+1d) | 2027-04-12 → 2027-04-13 (+1d) |  | 71.5d → 70.65d |
| 457 | ESTABILIZACIÓN DE TALUDES EN PLATAFORMA Y RECONFORMACION FINAL WP26 | 2027-04-03 → 2027-04-05 (+2d) | 2027-04-16 → 2027-04-17 (+1d) |  | 71.5d → 70.65d |
| 458 | HITO: FINALIZACION DE ACTIVIDADES EN CIMENTACION WP26 | 2027-04-16 → 2027-04-17 (+1d) | 2027-04-16 → 2027-04-17 (+1d) |  | 119.5d → 118.65d |
| 459 | **CIMENTACION WP27** |  | 2027-04-26 → 2027-04-27 (+1d) | 232d → 232.97d | 110.62d → 109.65d |
| 464 | SOLADO WP27 | 2027-03-01 → 2027-03-02 (+1d) | 2027-03-03 → 2027-03-04 (+1d) |  | 24.62d → 23.65d |
| 465 | INSTALACIÓN DE PERNOS Y SOFT-SPOT WP27 | 2027-03-03 → 2027-03-04 (+1d) | 2027-03-08 → 2027-03-09 (+1d) |  | 24.62d → 23.65d |
| 466 | INSTALACIÓN DE ACERO DE REFUERZO WP27 | 2027-03-08 → 2027-03-09 (+1d) | 2027-03-27 → 2027-03-29 (+2d) |  | 24.62d → 23.65d |
| 467 | ENCOFRADO DE ZAPATA Y DE PEDESTAL WP27 | 2027-03-27 → 2027-03-29 (+2d) | 2027-03-30 → 2027-03-31 (+1d) |  | 64.62d → 63.65d |
| 468 | HITO: ALISTAMIENTO Y MOVILIZACIÓN DE PLANTA DE CONCRETO PARA WP27 | 2027-03-27 → 2027-03-29 (+2d) | 2027-03-27 → 2027-03-29 (+2d) |  | 67.62d → 66.65d |
| 469 | FUNDIDA WP27 |  | 2027-03-31 → 2027-04-01 (+1d) |  | 64.62d → 63.65d |
| 470 | CURADO DEL CONCRETO WP27 | 2027-03-31 → 2027-04-01 (+1d) | 2027-04-08 → 2027-04-09 (+1d) |  | 64.62d → 63.65d |
| 471 | INSTALACIONES ELECTRICAS Y SISTEMA PUESTA TIERRA WP27 | 2027-04-08 → 2027-04-09 (+1d) | 2027-04-10 → 2027-04-12 (+2d) |  | 64.62d → 63.65d |
| 472 | INSTALACION DE GROUT Y MORTERO AUTOCOMPACTANTE DE ALTA RESISTENCIA WP27 | 2027-04-10 → 2027-04-12 (+2d) | 2027-04-13 → 2027-04-14 (+1d) |  | 64.62d → 63.65d |
| 473 | TAPADO AREA DE CIMENTACIÓN Y CONFORMACIÓN DE PLATAFORMA WP27 | 2027-04-10 → 2027-04-12 (+2d) | 2027-04-21 → 2027-04-22 (+1d) |  | 64.62d → 63.65d |
| 474 | ESTABILIZACIÓN DE TALUDES EN PLATAFORMA Y RECONFORMACION FINAL WP27 | 2027-04-13 → 2027-04-14 (+1d) | 2027-04-26 → 2027-04-27 (+1d) |  | 64.62d → 63.65d |
| 475 | HITO: FINALIZACION DE ACTIVIDADES EN CIMENTACION WP27 | 2027-04-26 → 2027-04-27 (+1d) | 2027-04-26 → 2027-04-27 (+1d) |  | 110.62d → 109.65d |
| 683 | CONFORMACIÓN DE ZODMES 2,5,7 | 2026-09-08 → 2026-09-11 (+3d) | 2026-12-28 → 2026-12-31 (+3d) |  | 107.75d → 104.78d |
| 684 | CONFORMACIÓN DE ZODMES 9,10,11,12,14 | 2026-10-08 → 2026-10-13 (+5d) | 2027-04-07 → 2027-04-09 (+2d) |  | 128.88d → 125.9d |
